# C:\Documents and Settings\Edmond\My Documents\caAERS-ProjectSchedule-ConstructionPhase

Schedule from MS Project, 2006-12-01 to 2007-10-16, A marks actual dates.

## Calendars

- Standard: Mon-Fri 08:00-12:00, 13:00-17:00; Sat-Sun off. Exceptions (off unless hours are given): 2006-12-25, 2007-01-01.

## Resources

| Resource |
| --- |
| Warren |
| Cal |
| Renee |
| Rhett |
| Vinay |
| Joshua |
| Padmaja |
| Richard |
| Krikor |
| John |
| Ram |
| Sujith |
| David |
| Brenda |
| Natasha |
| Mayo |
| WF |
| AE_SIG |
| VCDE_WS |
| Arch_WS |
| Edmond |
| Functional Team Lead |
| Dave |
| CCB |
| Sean |
| BAH |
| Kulasekaran |
| Lynne W. |
| Brian D |
| Brenda M. |
| Lynne W |
| Brenda M |
| Adopters |
| Mentors |
| DCP |
| CTEP |
| Ann |
| NCI |
| All |
| Visu |
| Srini |
| Biju |
| Jason |

## Schedule

| ID | WBS | Task | Type | Duration | Start | Finish | Predecessors | Complete | Remaining | Baseline start | Baseline finish | Baseline duration | Total slack | Constraint | Resources | Work | Actual work | Text1 |
| --- | --- | --- | --- | --- | --- | --- | --- | --- | --- | --- | --- | --- | --- | --- | --- | --- | --- | --- |
| 1 | 1 | **caAERS Application Development Project** |  | 226d? | 2006-12-01 A | 2007-10-16 |  | 63% | 84.2d? | 2006-12-01 | 2007-09-26 | 212d | 0d |  |  | 41624.2h | 27496.1h |  |
| 2 | 1.1 | **Elaboration Phase** |  | 57d | 2006-12-01 A | 2007-02-21 |  | 94% | 3.42d | 2006-12-01 | 2007-02-01 | 43d | 169d |  |  | 13192.2h | 12090.1h |  |
| 3 | 1.1.1 | **Iteration 1** |  | 31d | 2006-12-01 A | 2007-01-16 |  | 87% | 3.95d | 2006-12-01 | 2007-01-03 | 22d | 195d |  |  | 8120.24h | 7022.06h |  |
| 4 | 1.1.1.1 | **Project Management** |  | 31d | 2006-12-01 A | 2007-01-16 |  | 75% | 7.82d | 2006-12-01 | 2007-01-03 | 22d | 195d |  |  | 2736h | 2512h |  |
| 5 | 1.1.1.1.1 | **Inception and Kickoff Planning** |  | 6d | 2006-12-01 A | 2006-12-08 A |  | 100% |  | 2006-12-01 | 2006-12-08 | 6d |  |  |  | 200h | 200h |  |
| 6 | 1.1.1.1.1.1 | Draft Project Management Plan |  | 3d | 2006-12-01 A | 2006-12-05 A |  | 100% |  | 2006-12-01 | 2006-12-05 | 3d |  |  | Edmond; Ram; Vinay | 72h | 72h |  |
| 7 | 1.1.1.1.1.2 | High-Level Schedule and Assignments |  | 3d | 2006-12-01 A | 2006-12-05 A |  | 100% |  | 2006-12-01 | 2006-12-05 | 3d |  |  | Edmond; Ram; Vinay | 72h | 72h | GANTT |
| 8 | 1.1.1.1.1.3 | Kickoff Meeting | milestone | 1d | 2006-12-06 A | 2006-12-06 A |  | 100% |  | 2006-12-06 | 2006-12-06 | 1d |  | start no earlier than 2006-12-06 | Edmond; Ram; Vinay; Warren; Renee; Cal | 48h | 48h |  |
| 9 | 1.1.1.1.1.4 | Kickoff Meeting Notes (Task 1.5) |  | 1d | 2006-12-08 A | 2006-12-08 A | 8FS+1d | 100% |  | 2006-12-08 | 2006-12-08 | 1d |  |  | Edmond | 8h | 8h | Kickoff Minutes |
| 10 | 1.1.1.1.2 | **Project Management Plan Baseline (Task 1.1)** |  | 25d | 2006-12-11 A | 2007-01-16 |  | 44% | 14d | 2006-12-11 | 2006-12-26 | 11d | 195d |  |  | 408h | 296h |  |
| 11 | 1.1.1.1.2.1 | Add Details for Elaboration Phase to Project Plan |  | 3d | 2006-12-11 A | 2006-12-13 A | 9 | 100% |  | 2006-12-11 | 2006-12-13 | 3d |  |  | Edmond; Ram; Vinay | 72h | 72h |  |
| 12 | 1.1.1.1.2.2 | Resource Load and Level Project Schedule for Elaboration Phase |  | 1d | 2006-12-14 A | 2006-12-14 A | 11 | 100% |  | 2006-12-14 | 2006-12-14 | 1d |  |  | Edmond | 8h | 8h |  |
| 13 | 1.1.1.1.2.3 | Adopters/Collaborators Review |  | 5d | 2006-12-15 A | 2006-12-21 A | 12 | 100% |  | 2006-12-15 | 2006-12-21 | 5d |  |  | Mayo; WF; AE_SIG; VCDE_WS; Arch_WS | 200h | 200h |  |
| 14 | 1.1.1.1.2.4 | Updates |  | 2d | 2006-12-22 A | 2006-12-26 A | 13 | 100% |  | 2006-12-22 | 2006-12-26 | 2d |  |  | Edmond | 16h | 16h |  |
| 15 | 1.1.1.1.2.5 | Submit to BAH | milestone | 0d | 2006-12-26 A | 2006-12-26 A | 14 | 100% |  | 2006-12-26 | 2006-12-26 | 0d |  |  | Edmond |  |  |  |
| 16 | 1.1.1.1.2.6 | Formal Review by BAH |  | 14d | 2006-12-27 | 2007-01-16 | 15 |  |  |  |  |  | 195d |  | BAH | 112h |  |  |
| 17 | 1.1.1.1.3 | **Communications Plan (Task 1.2)** |  | 25d | 2006-12-01 A | 2007-01-08 |  | 44% | 14d | 2006-12-01 | 2006-12-15 | 11d | 201d |  |  | 480h | 368h |  |
| 18 | 1.1.1.1.3.1 | Developers Draft |  | 5d | 2006-12-01 A | 2006-12-07 A |  | 100% |  | 2006-12-01 | 2006-12-07 | 5d |  |  | Edmond; Ram; Warren; Cal | 160h | 160h |  |
| 19 | 1.1.1.1.3.2 | Adopters/Collaborators Review |  | 5d | 2006-12-08 A | 2006-12-14 A | 18 | 100% |  | 2006-12-08 | 2006-12-14 | 5d |  |  | Mayo; WF; AE_SIG; VCDE_WS; Arch_WS | 200h | 200h |  |
| 20 | 1.1.1.1.3.3 | Developers Update |  | 1d | 2006-12-15 A | 2006-12-15 A | 19 | 100% |  | 2006-12-15 | 2006-12-15 | 1d |  |  | Edmond | 8h | 8h | Communications Plan |
| 21 | 1.1.1.1.3.4 | Submit to BAH | milestone | 0d | 2006-12-15 A | 2006-12-15 A | 20 | 100% |  | 2006-12-15 | 2006-12-15 | 0d |  |  | Edmond |  |  |  |
| 22 | 1.1.1.1.3.5 | Formal Review by BAH |  | 14d | 2006-12-18 | 2007-01-08 | 21 |  |  |  |  |  | 201d |  | BAH | 112h |  |  |
| 23 | 1.1.1.1.4 | **Adopters Collaboration Plan** |  | 11d | 2006-12-01 A | 2006-12-15 A |  | 100% |  | 2006-12-01 | 2006-12-15 | 11d |  |  |  | 368h | 368h | Collaboration Plan |
| 24 | 1.1.1.1.4.1 | Developers Draft |  | 5d | 2006-12-01 A | 2006-12-07 A |  | 100% |  | 2006-12-01 | 2006-12-07 | 5d |  |  | Edmond; Ram; Warren; Cal | 160h | 160h |  |
| 25 | 1.1.1.1.4.2 | Adopters/Collaborators Review |  | 5d | 2006-12-08 A | 2006-12-14 A | 24 | 100% |  | 2006-12-08 | 2006-12-14 | 5d |  |  | Mayo; WF; AE_SIG; VCDE_WS; Arch_WS | 200h | 200h |  |
| 26 | 1.1.1.1.4.3 | Developers Update |  | 1d | 2006-12-15 A | 2006-12-15 A | 25 | 100% |  | 2006-12-15 | 2006-12-15 | 1d |  |  | Edmond | 8h | 8h |  |
| 27 | 1.1.1.1.4.4 | Submit to BAH | milestone | 0d | 2006-12-15 A | 2006-12-15 A | 26 | 100% |  | 2006-12-15 | 2006-12-15 | 0d |  |  | Edmond |  |  |  |

| ID | WBS | Task | Type | Duration | Start | Finish | Predecessors | Complete | Baseline start | Baseline finish | Baseline duration | Constraint | Resources | Work | Actual work | Text1 |
| --- | --- | --- | --- | --- | --- | --- | --- | --- | --- | --- | --- | --- | --- | --- | --- | --- |
| 28 | 1.1.1.1.5 | **Risk and Issue Management Plan** |  | 11d | 2006-12-01 A | 2006-12-15 A |  | 100% | 2006-12-01 | 2006-12-15 | 11d |  |  | 248h | 248h | Risk Matrix |
| 29 | 1.1.1.1.5.1 | Developers Draft |  | 5d | 2006-12-01 A | 2006-12-07 A |  | 100% | 2006-12-01 | 2006-12-07 | 5d |  | Edmond | 40h | 40h |  |
| 30 | 1.1.1.1.5.2 | Adopters/Collaborators Review |  | 5d | 2006-12-08 A | 2006-12-14 A | 29 | 100% | 2006-12-08 | 2006-12-14 | 5d |  | Mayo; WF; AE_SIG; VCDE_WS; Arch_WS | 200h | 200h |  |
| 31 | 1.1.1.1.5.3 | Developers Update |  | 1d | 2006-12-15 A | 2006-12-15 A | 30 | 100% | 2006-12-15 | 2006-12-15 | 1d |  | Edmond | 8h | 8h |  |
| 32 | 1.1.1.1.5.4 | Submit to BAH | milestone | 0d | 2006-12-15 A | 2006-12-15 A | 31 | 100% | 2006-12-15 | 2006-12-15 | 0d |  | Edmond |  |  |  |
| 33 | 1.1.1.1.6 | **caAERS Vision and Scope Document (Task 1.8)** |  | 11d | 2006-12-06 A | 2006-12-20 A |  | 100% | 2006-12-06 | 2006-12-20 | 11d |  |  | 400h | 400h | Scope Document |
| 34 | 1.1.1.1.6.1 | Developers Draft |  | 5d | 2006-12-06 A | 2006-12-12 A |  | 100% | 2006-12-06 | 2006-12-12 | 5d | start no earlier than 2006-12-06 | Warren; Cal; Renee; Ram | 160h | 160h |  |
| 35 | 1.1.1.1.6.2 | Adopters/Collaborators Review |  | 5d | 2006-12-13 A | 2006-12-19 A | 34 | 100% | 2006-12-13 | 2006-12-19 | 5d |  | Mayo; WF; AE_SIG; VCDE_WS; Arch_WS | 200h | 200h |  |
| 36 | 1.1.1.1.6.3 | Developers Update |  | 1d | 2006-12-20 A | 2006-12-20 A | 35 | 100% | 2006-12-20 | 2006-12-20 | 1d |  | Warren; Cal; Renee; Ram; Edmond | 40h | 40h |  |
| 37 | 1.1.1.1.6.4 | Submit to BAH | milestone | 0d | 2006-12-20 A | 2006-12-20 A | 36 | 100% | 2006-12-20 | 2006-12-20 | 0d |  | Edmond |  |  |  |
| 38 | 1.1.1.1.7 | **Test and QA Mgmt Plan Document (Task 2.6)** |  | 9d | 2006-12-18 A | 2006-12-29 A |  | 100% | 2006-12-18 | 2006-12-29 | 9d |  |  | 328h | 328h |  |
| 39 | 1.1.1.1.7.1 | Developer Draft |  | 3d | 2006-12-18 A | 2006-12-20 A |  | 100% | 2006-12-18 | 2006-12-20 | 3d | start no earlier than 2006-12-18 | Edmond; Vinay; Joshua; Rhett; Natasha | 120h | 120h |  |
| 40 | 1.1.1.1.7.2 | Adopters/Collobators Review |  | 5d | 2006-12-21 A | 2006-12-28 A | 39 | 100% | 2006-12-21 | 2006-12-28 | 5d |  | Mayo; WF; AE_SIG; VCDE_WS; Arch_WS | 200h | 200h |  |
| 41 | 1.1.1.1.7.3 | Developer Update |  | 1d | 2006-12-29 A | 2006-12-29 A | 40 | 100% | 2006-12-29 | 2006-12-29 | 1d |  | Edmond | 8h | 8h |  |
| 42 | 1.1.1.1.7.4 | Submit to BAH | milestone | 0d | 2006-12-29 A | 2006-12-29 A | 41 | 100% | 2006-12-29 | 2006-12-29 | 0d |  | Edmond |  |  |  |
| 43 | 1.1.1.1.8 | **caAERS F2F (Cross-Cutting WS) Meeting Planning** |  | 13d | 2006-12-01 A | 2006-12-19 A |  | 100% | 2006-12-01 | 2006-12-19 | 13d |  |  | 136h | 136h |  |
| 44 | 1.1.1.1.8.1 | Set Date |  | 1d | 2006-12-01 A | 2006-12-01 A |  | 100% | 2006-12-01 | 2006-12-01 | 1d |  | Edmond | 8h | 8h |  |
| 45 | 1.1.1.1.8.2 | Draft Agenda |  | 1d | 2006-12-15 A | 2006-12-15 A | 7 | 100% | 2006-12-15 | 2006-12-15 | 1d | start no earlier than 2006-12-15 | Ram; Vinay; Warren; Cal; Renee; Edmond | 48h | 48h |  |
| 46 | 1.1.1.1.8.3 | Review by Adopters/Collaborators |  | 2d | 2006-12-18 A | 2006-12-19 A | 45 | 100% | 2006-12-18 | 2006-12-19 | 2d |  | Mayo; WF; AE_SIG; VCDE_WS; Arch_WS | 80h | 80h |  |
| 47 | 1.1.1.1.8.4 | Finalize F2F Meeting Agenda and Details | milestone | 0d | 2006-12-19 A | 2006-12-19 A | 46 | 100% | 2006-12-19 | 2006-12-19 | 0d |  | Edmond |  |  |  |
| 48 | 1.1.1.1.9 | **Weekly Team/Developers Meeting** |  | 11d | 2006-12-11 A | 2006-12-26 A |  | 100% | 2006-12-11 | 2006-12-26 | 11d |  |  | 72h | 72h |  |
| 49 | 1.1.1.1.9.1 | Weekly Team Meeting 1 |  | 1d | 2006-12-11 A | 2006-12-11 A |  | 100% | 2006-12-11 | 2006-12-11 | 1d | start no earlier than 2006-12-11 | Edmond; Vinay; Functional Team Lead | 24h | 24h |  |
| 50 | 1.1.1.1.9.2 | Weekly Team Meeting 2 |  | 1d | 2006-12-18 A | 2006-12-18 A |  | 100% | 2006-12-18 | 2006-12-18 | 1d | start no earlier than 2006-12-18 | Edmond; Vinay; Functional Team Lead | 24h | 24h |  |
| 51 | 1.1.1.1.9.3 | Weekly Team Meeting 3 |  | 1d | 2006-12-26 A | 2006-12-26 A |  | 100% | 2006-12-26 | 2006-12-26 | 1d | start no earlier than 2006-12-25 | Edmond; Vinay; Functional Team Lead | 24h | 24h |  |

| ID | WBS | Task | Type | Duration | Start | Finish | Predecessors | Complete | Baseline start | Baseline finish | Baseline duration | Constraint | Resources | Work | Actual work |
| --- | --- | --- | --- | --- | --- | --- | --- | --- | --- | --- | --- | --- | --- | --- | --- |
| 52 | 1.1.1.1.10 | **Status and Risk Reporting** |  | 10d | 2006-12-15 A | 2006-12-29 A |  | 100% | 2006-12-15 | 2006-12-29 | 10d |  |  | 32h | 32h |
| 53 | 1.1.1.1.10.1 | Bi-weekly Risk Update in caMP (Task 1.4) | milestone | 0d | 2006-12-15 A | 2006-12-15 A |  | 100% | 2006-12-15 | 2006-12-15 | 0d | start no earlier than 2006-12-15 | Edmond |  |  |
| 54 | 1.1.1.1.10.2 | Bi-weekly Risk Matrix Update Meeting |  | 1d | 2006-12-22 A | 2006-12-22 A |  | 100% | 2006-12-22 | 2006-12-22 | 1d | start no earlier than 2006-12-22 | Edmond; Vinay | 16h | 16h |
| 55 | 1.1.1.1.10.3 | Bi-weekly Risk Update in caMP (Task 1.4) | milestone | 0d | 2006-12-29 A | 2006-12-29 A |  | 100% | 2006-12-29 | 2006-12-29 | 0d | start no earlier than 2006-12-29 | Edmond |  |  |
| 56 | 1.1.1.1.10.4 | Bi-weekly Status Update Meeting with BAH/NCI |  | 1d | 2006-12-29 A | 2006-12-29 A |  | 100% | 2006-12-29 | 2006-12-29 | 1d | start no earlier than 2006-12-29 | Edmond; Vinay | 16h | 16h |
| 57 | 1.1.1.1.10.5 | Monthly Status Report (Task 1.3) | milestone | 0d | 2006-12-29 A | 2006-12-29 A |  | 100% | 2006-12-29 | 2006-12-29 | 0d | start no earlier than 2006-12-29 | Edmond |  |  |
| 58 | 1.1.1.1.10.6 | Monthly Risk Matrix Update (Task 1.3) | milestone | 0d | 2006-12-29 A | 2006-12-29 A |  | 100% | 2006-12-29 | 2006-12-29 | 0d | must finish on 2006-12-29 |  |  |  |
| 59 | 1.1.1.1.11 | **Collaboration Management Activities** |  | 10d | 2006-12-14 A | 2006-12-28 A |  | 100% | 2006-12-14 | 2006-12-28 | 10d |  |  | 64h | 64h |
| 60 | 1.1.1.1.11.1 | Bi-Weekly AE SIG Meeting |  | 1d | 2006-12-14 A | 2006-12-14 A |  | 100% | 2006-12-14 | 2006-12-14 | 1d | start no earlier than 2006-12-14 | Edmond; Warren; Cal; Renee | 32h | 32h |
| 61 | 1.1.1.1.11.2 | Bi-Weekly AE SIG Meeting |  | 1d | 2006-12-28 A | 2006-12-28 A |  | 100% | 2006-12-28 | 2006-12-28 | 1d | start no earlier than 2006-12-28 | Edmond; Warren; Cal; Renee | 32h | 32h |
| 62 | 1.1.1.2 | **Set up Development Environment** |  | 7d | 2006-12-01 A | 2006-12-11 A |  | 100% | 2006-12-01 | 2006-12-11 | 7d |  |  | 144h | 144h |
| 63 | 1.1.1.2.1 | Set up SCM (Subversion) |  | 2d | 2006-12-01 A | 2006-12-04 A |  | 100% | 2006-12-01 | 2006-12-04 | 2d |  | Rhett; Vinay | 32h | 32h |
| 64 | 1.1.1.2.2 | Create Build Scripts (using Ant) |  | 3d | 2006-12-05 A | 2006-12-07 A | 63 | 100% | 2006-12-05 | 2006-12-07 | 3d |  | Rhett | 24h | 24h |
| 65 | 1.1.1.2.3 | Decide on Tech Stack |  | 2d | 2006-12-01 A | 2006-12-04 A |  | 100% | 2006-12-01 | 2006-12-04 | 2d |  | Rhett; Vinay; Joshua | 48h | 48h |
| 66 | 1.1.1.2.4 | Prepare Development Server |  | 5d | 2006-12-05 A | 2006-12-11 A | 65 | 100% | 2006-12-05 | 2006-12-11 | 5d |  | Vinay | 40h | 40h |
| 67 | 1.1.1.3 | **Requirements** |  | 20d | 2006-12-01 A | 2006-12-29 A |  | 100% | 2006-12-01 | 2006-12-29 | 20d |  |  | 1392h | 1392h |
| 68 | 1.1.1.3.1 | Review Existing R1 Prototype and Requirements |  | 5d | 2006-12-01 A | 2006-12-07 A |  | 100% | 2006-12-01 | 2006-12-07 | 5d |  | Vinay; Joshua; Rhett; Krikor; Padmaja; Sujith; Renee; David; Brenda; Natasha | 400h | 400h |
| 69 | 1.1.1.3.2 | Select Use Cases |  | 1d | 2006-12-08 A | 2006-12-08 A | 68 | 100% | 2006-12-08 | 2006-12-08 | 1d |  | Ram; Vinay | 16h | 16h |
| 70 | 1.1.1.3.3 | Assign Use Cases |  | 1d | 2006-12-11 A | 2006-12-11 A | 69 | 100% | 2006-12-11 | 2006-12-11 | 1d |  | Ram; Vinay | 16h | 16h |
| 71 | 1.1.1.3.4 | **Review and Update Use Case Documents (Task 2.1)** |  | 8d | 2006-12-12 A | 2006-12-21 A | 70 | 100% | 2006-12-12 | 2006-12-21 | 8d |  |  | 632h | 632h |
| 72 | 1.1.1.3.4.1 | **Create Study/Protocol** |  | 8d | 2006-12-12 A | 2006-12-21 A |  | 100% | 2006-12-12 | 2006-12-21 | 8d |  |  | 248h | 248h |
| 73 | 1.1.1.3.4.1.1 | Developer draft |  | 5d | 2006-12-12 A | 2006-12-18 A |  | 100% | 2006-12-12 | 2006-12-18 | 5d |  | Padmaja; Sujith; Renee; Dave | 160h | 160h |
| 74 | 1.1.1.3.4.1.2 | Adopters/Collaborators Review |  | 2d | 2006-12-19 A | 2006-12-20 A | 73 | 100% | 2006-12-19 | 2006-12-20 | 2d |  | Mayo; WF; AE_SIG; VCDE_WS; Arch_WS | 80h | 80h |
| 75 | 1.1.1.3.4.1.3 | Developers Update |  | 1d | 2006-12-21 A | 2006-12-21 A | 74 | 100% | 2006-12-21 | 2006-12-21 | 1d |  | John | 8h | 8h |
| 76 | 1.1.1.3.4.1.4 | Submit to BAH (Task 2.1) | milestone | 0d | 2006-12-21 A | 2006-12-21 A | 75 | 100% | 2006-12-21 | 2006-12-21 | 0d |  | Edmond |  |  |

| ID | WBS | Task | Type | Duration | Start | Finish | Predecessors | Complete | Remaining | Baseline start | Baseline finish | Baseline duration | Total slack | Resources | Work | Actual work |
| --- | --- | --- | --- | --- | --- | --- | --- | --- | --- | --- | --- | --- | --- | --- | --- | --- |
| 77 | 1.1.1.3.4.2 | **Create Participant** |  | 8d | 2006-12-12 A | 2006-12-21 A |  | 100% |  | 2006-12-12 | 2006-12-21 | 8d |  |  | 128h | 128h |
| 78 | 1.1.1.3.4.2.1 | Developer draft |  | 5d | 2006-12-12 A | 2006-12-18 A |  | 100% |  | 2006-12-12 | 2006-12-18 | 5d |  | Krikor | 40h | 40h |
| 79 | 1.1.1.3.4.2.2 | Adopters/Collaborators Review |  | 2d | 2006-12-19 A | 2006-12-20 A | 78 | 100% |  | 2006-12-19 | 2006-12-20 | 2d |  | Mayo; WF; AE_SIG; VCDE_WS; Arch_WS | 80h | 80h |
| 80 | 1.1.1.3.4.2.3 | Developers Update |  | 1d | 2006-12-21 A | 2006-12-21 A | 79 | 100% |  | 2006-12-21 | 2006-12-21 | 1d |  | John | 8h | 8h |
| 81 | 1.1.1.3.4.2.4 | Submit to BAH (Task 2.1) | milestone | 0d | 2006-12-21 A | 2006-12-21 A | 80 | 100% |  | 2006-12-21 | 2006-12-21 | 0d |  | Edmond |  |  |
| 82 | 1.1.1.3.4.3 | **Create AE** |  | 8d | 2006-12-12 A | 2006-12-21 A |  | 100% |  | 2006-12-12 | 2006-12-21 | 8d |  |  | 128h | 128h |
| 83 | 1.1.1.3.4.3.1 | Developer draft |  | 5d | 2006-12-12 A | 2006-12-18 A |  | 100% |  | 2006-12-12 | 2006-12-18 | 5d |  | Rhett | 40h | 40h |
| 84 | 1.1.1.3.4.3.2 | Adopters/Collaborators Review |  | 2d | 2006-12-19 A | 2006-12-20 A | 83 | 100% |  | 2006-12-19 | 2006-12-20 | 2d |  | Mayo; WF; AE_SIG; VCDE_WS; Arch_WS | 80h | 80h |
| 85 | 1.1.1.3.4.3.3 | Developers Update |  | 1d | 2006-12-21 A | 2006-12-21 A | 84 | 100% |  | 2006-12-21 | 2006-12-21 | 1d |  | John | 8h | 8h |
| 86 | 1.1.1.3.4.3.4 | Submit to BAH (Task 2.1) | milestone | 0d | 2006-12-21 A | 2006-12-21 A | 85 | 100% |  | 2006-12-21 | 2006-12-21 | 0d |  | Edmond |  |  |
| 87 | 1.1.1.3.4.4 | **Login** |  | 7d | 2006-12-12 A | 2006-12-20 A |  | 100% |  | 2006-12-12 | 2006-12-20 | 7d |  |  | 128h | 128h |
| 88 | 1.1.1.3.4.4.1 | Developer draft |  | 5d | 2006-12-12 A | 2006-12-18 A |  | 100% |  | 2006-12-12 | 2006-12-18 | 5d |  | Padmaja; Sujith | 80h | 80h |
| 89 | 1.1.1.3.4.4.2 | Adopters/Collaborators Review |  | 1d | 2006-12-19 A | 2006-12-19 A | 88 | 100% |  | 2006-12-19 | 2006-12-19 | 1d |  | Mayo; WF; AE_SIG; VCDE_WS; Arch_WS | 40h | 40h |
| 90 | 1.1.1.3.4.4.3 | Developers Update |  | 1d | 2006-12-20 A | 2006-12-20 A | 89 | 100% |  | 2006-12-20 | 2006-12-20 | 1d |  | John | 8h | 8h |
| 91 | 1.1.1.3.4.4.4 | Submit to BAH (Task 2.1) | milestone | 0d | 2006-12-20 A | 2006-12-20 A | 90 | 100% |  | 2006-12-20 | 2006-12-20 | 0d |  | Edmond |  |  |
| 92 | 1.1.1.3.5 | **SRS document (Task 2.2)** |  | 11d | 2006-12-14 A | 2006-12-29 A | 71SS+2d | 100% |  | 2006-12-14 | 2006-12-29 | 11d |  |  | 328h | 328h |
| 93 | 1.1.1.3.5.1 | Developer draft |  | 5d | 2006-12-14 A | 2006-12-20 A |  | 100% |  | 2006-12-14 | 2006-12-20 | 5d |  | John; Vinay; Rhett | 120h | 120h |
| 94 | 1.1.1.3.5.2 | Adopter review |  | 5d | 2006-12-21 A | 2006-12-28 A | 93 | 100% |  | 2006-12-21 | 2006-12-28 | 5d |  | Mayo; WF; AE_SIG; VCDE_WS; Arch_WS | 200h | 200h |
| 95 | 1.1.1.3.5.3 | Developer update |  | 1d | 2006-12-29 A | 2006-12-29 A | 94 | 100% |  | 2006-12-29 | 2006-12-29 | 1d |  | John | 8h | 8h |
| 96 | 1.1.1.3.5.4 | Deliver SRS document to BAH (Task 2.2) | milestone | 0d | 2006-12-29 A | 2006-12-29 A | 95 | 100% |  | 2006-12-29 | 2006-12-29 | 0d |  | Edmond |  |  |
| 97 | 1.1.1.4 | **Analysis and Design** |  | 10d | 2006-12-18 A | 2007-01-02 | 70SS+5d | 95% | 0.47d | 2006-12-18 | 2007-01-02 | 10d | 205d |  | 1488h | 1452h |
| 98 | 1.1.1.4.1 | **Design Documents (Task 2.4)** |  | 8d | 2006-12-18 A | 2006-12-28 A |  | 100% |  | 2006-12-18 | 2006-12-28 | 8d |  |  | 936h | 936h |
| 99 | 1.1.1.4.1.1 | **Create Study/Protocol Design Documents** |  | 8d | 2006-12-18 A | 2006-12-28 A |  | 100% |  | 2006-12-18 | 2006-12-28 | 8d |  |  | 256h | 256h |
| 100 | 1.1.1.4.1.1.1 | Develop appropriate UML Artifacts |  | 5d | 2006-12-18 A | 2006-12-22 A |  | 100% |  | 2006-12-18 | 2006-12-22 | 5d |  | Padmaja; Sujith | 80h | 80h |
| 101 | 1.1.1.4.1.1.2 | Developer draft |  | 5d | 2006-12-18 A | 2006-12-22 A |  | 100% |  | 2006-12-18 | 2006-12-22 | 5d |  | Padmaja; Sujith | 80h | 80h |
| 102 | 1.1.1.4.1.1.3 | Adopters/Collaborators Review |  | 2d | 2006-12-26 A | 2006-12-27 A | 101 | 100% |  | 2006-12-26 | 2006-12-27 | 2d |  | Mayo; WF; AE_SIG; VCDE_WS; Arch_WS | 80h | 80h |
| 103 | 1.1.1.4.1.1.4 | Developers Update |  | 1d | 2006-12-28 A | 2006-12-28 A | 102 | 100% |  | 2006-12-28 | 2006-12-28 | 1d |  | Padmaja; Sujith | 16h | 16h |
| 104 | 1.1.1.4.1.1.5 | Submit to BAH (Task 2.3 and 2.4) | milestone | 0d | 2006-12-28 A | 2006-12-28 A | 103 | 100% |  | 2006-12-28 | 2006-12-28 | 0d |  | Edmond |  |  |

| ID | WBS | Task | Type | Duration | Start | Finish | Predecessors | Complete | Baseline start | Baseline finish | Baseline duration | Resources | Work | Actual work |
| --- | --- | --- | --- | --- | --- | --- | --- | --- | --- | --- | --- | --- | --- | --- |
| 105 | 1.1.1.4.1.2 | **Create Participant Design Documents** |  | 8d | 2006-12-18 A | 2006-12-28 A |  | 100% | 2006-12-18 | 2006-12-28 | 8d |  | 168h | 168h |
| 106 | 1.1.1.4.1.2.1 | Develop appropriate UML Artifacts |  | 5d | 2006-12-18 A | 2006-12-22 A |  | 100% | 2006-12-18 | 2006-12-22 | 5d | Krikor | 40h | 40h |
| 107 | 1.1.1.4.1.2.2 | Developer draft |  | 5d | 2006-12-18 A | 2006-12-22 A |  | 100% | 2006-12-18 | 2006-12-22 | 5d | Krikor | 40h | 40h |
| 108 | 1.1.1.4.1.2.3 | Adopters/Collaborators Review |  | 2d | 2006-12-26 A | 2006-12-27 A | 107 | 100% | 2006-12-26 | 2006-12-27 | 2d | Mayo; WF; AE_SIG; VCDE_WS; Arch_WS | 80h | 80h |
| 109 | 1.1.1.4.1.2.4 | Developers Update |  | 1d | 2006-12-28 A | 2006-12-28 A | 108 | 100% | 2006-12-28 | 2006-12-28 | 1d | Krikor | 8h | 8h |
| 110 | 1.1.1.4.1.2.5 | Submit to BAH (Task 2.3 and 2.4) | milestone | 0d | 2006-12-28 A | 2006-12-28 A | 109 | 100% | 2006-12-28 | 2006-12-28 | 0d | Edmond |  |  |
| 111 | 1.1.1.4.1.3 | **Create AE Design Documents** |  | 8d | 2006-12-18 A | 2006-12-28 A |  | 100% | 2006-12-18 | 2006-12-28 | 8d |  | 168h | 168h |
| 112 | 1.1.1.4.1.3.1 | Develop appropriate UML Artifacts |  | 5d | 2006-12-18 A | 2006-12-22 A |  | 100% | 2006-12-18 | 2006-12-22 | 5d | Rhett | 40h | 40h |
| 113 | 1.1.1.4.1.3.2 | Developer draft |  | 5d | 2006-12-18 A | 2006-12-22 A |  | 100% | 2006-12-18 | 2006-12-22 | 5d | Rhett | 40h | 40h |
| 114 | 1.1.1.4.1.3.3 | Adopters/Collaborators Review |  | 2d | 2006-12-26 A | 2006-12-27 A | 113 | 100% | 2006-12-26 | 2006-12-27 | 2d | Mayo; WF; AE_SIG; VCDE_WS; Arch_WS | 80h | 80h |
| 115 | 1.1.1.4.1.3.4 | Developers Update |  | 1d | 2006-12-28 A | 2006-12-28 A | 114 | 100% | 2006-12-28 | 2006-12-28 | 1d | Rhett | 8h | 8h |
| 116 | 1.1.1.4.1.3.5 | Submit to BAH (Task 2.3 and 2.4) | milestone | 0d | 2006-12-28 A | 2006-12-28 A | 115 | 100% | 2006-12-28 | 2006-12-28 | 0d | Edmond |  |  |
| 117 | 1.1.1.4.1.4 | **Login Design Documents** |  | 8d | 2006-12-18 A | 2006-12-28 A |  | 100% | 2006-12-18 | 2006-12-28 | 8d |  | 216h | 216h |
| 118 | 1.1.1.4.1.4.1 | Develop appropriate UML Artifacts |  | 5d | 2006-12-18 A | 2006-12-22 A |  | 100% | 2006-12-18 | 2006-12-22 | 5d | Rhett | 40h | 40h |
| 119 | 1.1.1.4.1.4.2 | Developer draft |  | 5d | 2006-12-18 A | 2006-12-22 A |  | 100% | 2006-12-18 | 2006-12-22 | 5d | Padmaja; Sujith | 80h | 80h |
| 120 | 1.1.1.4.1.4.3 | Adopters/Collaborators Review |  | 2d | 2006-12-26 A | 2006-12-27 A | 119 | 100% | 2006-12-26 | 2006-12-27 | 2d | Mayo; WF; AE_SIG; VCDE_WS; Arch_WS | 80h | 80h |
| 121 | 1.1.1.4.1.4.4 | Developers Update |  | 1d | 2006-12-28 A | 2006-12-28 A | 120 | 100% | 2006-12-28 | 2006-12-28 | 1d | Padmaja; Sujith | 16h | 16h |
| 122 | 1.1.1.4.1.4.5 | Submit to BAH (Task 2.3 and 2.4) | milestone | 0d | 2006-12-28 A | 2006-12-28 A | 121 | 100% | 2006-12-28 | 2006-12-28 | 0d | Edmond |  |  |
| 123 | 1.1.1.4.1.5 | **UI/Mockups Design Documents** |  | 8d | 2006-12-18 A | 2006-12-28 A |  | 100% | 2006-12-18 | 2006-12-28 | 8d |  | 128h | 128h |
| 124 | 1.1.1.4.1.5.1 | Developer Draft |  | 5d | 2006-12-18 A | 2006-12-22 A |  | 100% | 2006-12-18 | 2006-12-22 | 5d | Richard | 40h | 40h |
| 125 | 1.1.1.4.1.5.2 | Adopters/Collaborators Review |  | 2d | 2006-12-26 A | 2006-12-27 A | 124 | 100% | 2006-12-26 | 2006-12-27 | 2d | Mayo; WF; AE_SIG; VCDE_WS; Arch_WS | 80h | 80h |
| 126 | 1.1.1.4.1.5.3 | Developers Update |  | 1d | 2006-12-28 A | 2006-12-28 A | 125 | 100% | 2006-12-28 | 2006-12-28 | 1d | Richard | 8h | 8h |
| 127 | 1.1.1.4.1.5.4 | Submit to BAH (Task 2.4) | milestone | 0d | 2006-12-28 A | 2006-12-28 A | 126 | 100% | 2006-12-28 | 2006-12-28 | 0d | Edmond |  |  |
| 128 | 1.1.1.4.2 | **ESB** |  | 7d | 2006-12-18 A | 2006-12-27 A |  | 100% | 2006-12-18 | 2006-12-27 | 7d |  | 112h | 112h |
| 129 | 1.1.1.4.2.1 | Evalutate technologies by prototyping |  | 7d | 2006-12-18 A | 2006-12-27 A |  | 100% | 2006-12-18 | 2006-12-27 | 7d | Vinay; Joshua | 112h | 112h |

| ID | WBS | Task | Duration | Start | Finish | Predecessors | Complete | Remaining | Baseline start | Baseline finish | Baseline duration | Total slack | Free slack | Resources | Work | Actual work |
| --- | --- | --- | --- | --- | --- | --- | --- | --- | --- | --- | --- | --- | --- | --- | --- | --- |
| 130 | 1.1.1.4.3 | **Grid service** | 7d | 2006-12-18 A | 2006-12-27 A |  | 100% |  | 2006-12-18 | 2006-12-27 | 7d |  |  |  | 112h | 112h |
| 131 | 1.1.1.4.3.1 | Evaluate caGrid 1.0 service infrastructure | 7d | 2006-12-18 A | 2006-12-27 A |  | 100% |  | 2006-12-18 | 2006-12-27 | 7d |  |  | Vinay; Joshua | 112h | 112h |
| 132 | 1.1.1.4.4 | **Database** | 3d | 2006-12-18 A | 2006-12-20 A |  | 100% |  | 2006-12-18 | 2006-12-20 | 3d |  |  |  | 96h | 96h |
| 133 | 1.1.1.4.4.1 | First draft of database structure | 3d | 2006-12-18 A | 2006-12-20 A |  | 100% |  | 2006-12-18 | 2006-12-20 | 3d |  |  | Rhett; Padmaja; Sujith; Krikor | 96h | 96h |
| 134 | 1.1.1.4.5 | **Domain model** | 9d | 2006-12-18 A | 2006-12-29 |  | 50% | 4.5d | 2006-12-18 | 2006-12-29 | 9d | 206d |  |  | 72h | 36h |
| 135 | 1.1.1.4.5.1 | Create model harmonized with BRIDG | 5d | 2006-12-18 A | 2006-12-22 |  | 50% | 2.5d | 2006-12-18 | 2006-12-22 | 5d | 208d | 0d | John | 40h | 20h |
| 136 | 1.1.1.4.5.2 | Create first draft of model | 4d | 2006-12-26 A | 2006-12-29 | 135 | 50% | 2d | 2006-12-26 | 2006-12-29 | 4d | 206d |  | John | 32h | 16h |
| 137 | 1.1.1.4.6 | **Security** | 10d | 2006-12-18 A | 2007-01-02 A |  | 100% |  | 2006-12-18 | 2007-01-02 | 10d |  |  |  | 160h | 160h |
| 138 | 1.1.1.4.6.1 | Evaluate caGrid 1.0 security infrastructure | 10d | 2006-12-18 A | 2007-01-02 A | 70 | 100% |  | 2006-12-18 | 2007-01-02 | 10d |  |  | Vinay; Joshua | 160h | 160h |
| 139 | 1.1.1.5 | **Implementation** | 5d | 2006-12-19 A | 2006-12-26 A | 97SS+1d | 100% |  | 2006-12-19 | 2006-12-26 | 5d |  |  |  | 1280h | 1280h |
| 140 | 1.1.1.5.1 | **Enterprise Service Bus** | 5d | 2006-12-19 A | 2006-12-26 A |  | 100% |  | 2006-12-19 | 2006-12-26 | 5d |  |  |  | 80h | 80h |
| 141 | 1.1.1.5.1.1 | Setup initial project | 5d | 2006-12-19 A | 2006-12-26 A |  | 100% |  | 2006-12-19 | 2006-12-26 | 5d |  |  | Vinay; Joshua | 80h | 80h |
| 142 | 1.1.1.5.2 | **Grid service** | 5d | 2006-12-19 A | 2006-12-26 A |  | 100% |  | 2006-12-19 | 2006-12-26 | 5d |  |  |  | 80h | 80h |
| 143 | 1.1.1.5.2.1 | Create grid service skeleton | 5d | 2006-12-19 A | 2006-12-26 A |  | 100% |  | 2006-12-19 | 2006-12-26 | 5d |  |  | Vinay; Joshua | 80h | 80h |
| 144 | 1.1.1.5.3 | **Create Study/Protocol** | 5d | 2006-12-19 A | 2006-12-26 A |  | 100% |  | 2006-12-19 | 2006-12-26 | 5d |  |  |  | 640h | 640h |
| 145 | 1.1.1.5.3.1 | Implement O/R mapping | 5d | 2006-12-19 A | 2006-12-26 A |  | 100% |  | 2006-12-19 | 2006-12-26 | 5d |  |  | Padmaja; Sujith | 80h | 80h |
| 146 | 1.1.1.5.3.2 | Develop StudyDAO | 5d | 2006-12-19 A | 2006-12-26 A |  | 100% |  | 2006-12-19 | 2006-12-26 | 5d |  |  | Padmaja; Sujith | 80h | 80h |
| 147 | 1.1.1.5.3.3 | Develop StudyService | 5d | 2006-12-19 A | 2006-12-26 A |  | 100% |  | 2006-12-19 | 2006-12-26 | 5d |  |  | Padmaja; Sujith | 80h | 80h |
| 148 | 1.1.1.5.3.4 | Develop controller and command objects | 5d | 2006-12-19 A | 2006-12-26 A |  | 100% |  | 2006-12-19 | 2006-12-26 | 5d |  |  | Padmaja; Sujith | 80h | 80h |
| 149 | 1.1.1.5.3.5 | Develop UI | 5d | 2006-12-19 A | 2006-12-26 A |  | 100% |  | 2006-12-19 | 2006-12-26 | 5d |  |  | Padmaja; Sujith | 80h | 80h |
| 150 | 1.1.1.5.3.6 | Develop JUnit test cases | 5d | 2006-12-19 A | 2006-12-26 A |  | 100% |  | 2006-12-19 | 2006-12-26 | 5d |  |  | Padmaja; Sujith | 80h | 80h |
| 151 | 1.1.1.5.3.7 | Develop | 5d | 2006-12-19 A | 2006-12-26 A |  | 100% |  | 2006-12-19 | 2006-12-26 | 5d |  |  | Padmaja; Sujith | 80h | 80h |
| 152 | 1.1.1.5.3.8 | Login | 5d | 2006-12-19 A | 2006-12-26 A |  | 100% |  | 2006-12-19 | 2006-12-26 | 5d |  |  | Padmaja; Sujith | 80h | 80h |
| 153 | 1.1.1.5.4 | **Create Participant** | 5d | 2006-12-19 A | 2006-12-26 A |  | 100% |  | 2006-12-19 | 2006-12-26 | 5d |  |  |  | 240h | 240h |
| 154 | 1.1.1.5.4.1 | Implement O/R mapping | 5d | 2006-12-19 A | 2006-12-26 A |  | 100% |  | 2006-12-19 | 2006-12-26 | 5d |  |  | Krikor | 40h | 40h |
| 155 | 1.1.1.5.4.2 | Develop ParticipantDAO | 5d | 2006-12-19 A | 2006-12-26 A |  | 100% |  | 2006-12-19 | 2006-12-26 | 5d |  |  | Krikor | 40h | 40h |
| 156 | 1.1.1.5.4.3 | Develop ParticipantService | 5d | 2006-12-19 A | 2006-12-26 A |  | 100% |  | 2006-12-19 | 2006-12-26 | 5d |  |  | Krikor | 40h | 40h |
| 157 | 1.1.1.5.4.4 | Develop controller and command objects | 5d | 2006-12-19 A | 2006-12-26 A |  | 100% |  | 2006-12-19 | 2006-12-26 | 5d |  |  | Krikor | 40h | 40h |
| 158 | 1.1.1.5.4.5 | Develop UI | 5d | 2006-12-19 A | 2006-12-26 A |  | 100% |  | 2006-12-19 | 2006-12-26 | 5d |  |  | Krikor | 40h | 40h |
| 159 | 1.1.1.5.4.6 | Develop JUnit test cases | 5d | 2006-12-19 A | 2006-12-26 A |  | 100% |  | 2006-12-19 | 2006-12-26 | 5d |  |  | Krikor | 40h | 40h |

| ID | WBS | Task | Type | Duration | Start | Finish | Predecessors | Complete | Remaining | Baseline start | Baseline finish | Baseline duration | Total slack | Free slack | Constraint | Resources | Work | Actual work |
| --- | --- | --- | --- | --- | --- | --- | --- | --- | --- | --- | --- | --- | --- | --- | --- | --- | --- | --- |
| 160 | 1.1.1.5.5 | **Create AE** |  | 5d | 2006-12-19 A | 2006-12-26 A |  | 100% |  | 2006-12-19 | 2006-12-26 | 5d |  |  |  |  | 240h | 240h |
| 161 | 1.1.1.5.5.1 | Implement O/R mapping |  | 5d | 2006-12-19 A | 2006-12-26 A |  | 100% |  | 2006-12-19 | 2006-12-26 | 5d |  |  |  | Rhett | 40h | 40h |
| 162 | 1.1.1.5.5.2 | Develop AdverseEventDAO |  | 5d | 2006-12-19 A | 2006-12-26 A |  | 100% |  | 2006-12-19 | 2006-12-26 | 5d |  |  |  | Rhett | 40h | 40h |
| 163 | 1.1.1.5.5.3 | Develop AdverseEventService |  | 5d | 2006-12-19 A | 2006-12-26 A |  | 100% |  | 2006-12-19 | 2006-12-26 | 5d |  |  |  | Rhett | 40h | 40h |
| 164 | 1.1.1.5.5.4 | Develop controller and command objects |  | 5d | 2006-12-19 A | 2006-12-26 A |  | 100% |  | 2006-12-19 | 2006-12-26 | 5d |  |  |  | Rhett | 40h | 40h |
| 165 | 1.1.1.5.5.5 | Develop UI |  | 5d | 2006-12-19 A | 2006-12-26 A |  | 100% |  | 2006-12-19 | 2006-12-26 | 5d |  |  |  | Rhett | 40h | 40h |
| 166 | 1.1.1.5.5.6 | Develop JUnit test cases |  | 5d | 2006-12-19 A | 2006-12-26 A |  | 100% |  | 2006-12-19 | 2006-12-26 | 5d |  |  |  | Rhett | 40h | 40h |
| 167 | 1.1.1.6 | **Testing** |  | 8d | 2006-12-19 A | 2006-12-29 |  | 22% | 6.25d | 2006-12-19 | 2006-12-29 | 8d | 206d |  |  |  | 1080.24h | 242.06h |
| 168 | 1.1.1.6.1 | **Create Functional Tests** |  | 6d | 2006-12-19 A | 2006-12-27 | 71SS+5d | 25% | 4.5d | 2006-12-19 | 2006-12-27 | 6d | 208d |  |  |  | 968.24h | 242.06h |
| 169 | 1.1.1.6.1.1 | Create Study |  | 5d | 2006-12-19 A | 2006-12-26 |  | 25% | 3.75d | 2006-12-19 | 2006-12-26 | 5d | 209d |  |  | Renee; David; Brenda; Natasha; Mayo; WF | 240.24h | 60.06h |
| 170 | 1.1.1.6.1.2 | Create Participant |  | 5d | 2006-12-19 A | 2006-12-26 |  | 25% | 3.75d | 2006-12-19 | 2006-12-26 | 5d | 209d |  |  | Renee; David; Brenda; Natasha; Mayo; WF | 240h | 60h |
| 171 | 1.1.1.6.1.3 | Login |  | 5d | 2006-12-19 A | 2006-12-26 |  | 25% | 3.75d | 2006-12-19 | 2006-12-26 | 5d | 209d |  |  | Renee; David; Brenda; Natasha; Mayo; WF | 240h | 60h |
| 172 | 1.1.1.6.1.4 | Create AE |  | 5d | 2006-12-19 A | 2006-12-26 |  | 25% | 3.75d | 2006-12-19 | 2006-12-26 | 5d | 208.25d | 0d |  | Renee; David; Brenda; Natasha; Mayo; WF | 240h | 60h |
| 173 | 1.1.1.6.1.5 | RTM |  | 1d | 2006-12-27 A | 2006-12-27 | 172, 93 | 25% | 0.75d | 2006-12-27 | 2006-12-27 | 1d | 208d |  |  | John | 8h | 2h |
| 174 | 1.1.1.6.2 | **Final Tests of Iteration** |  | 3d | 2006-12-27 | 2006-12-29 |  |  |  | 2006-12-27 | 2006-12-29 | 3d | 205.95d |  |  |  | 112h |  |
| 175 | 1.1.1.6.2.1 | Deploy Prototype (Task 2.5) |  | 1d | 2006-12-27 | 2006-12-27 | 139 |  |  | 2006-12-27 | 2006-12-27 | 1d | 203.09d | 0d |  | Joshua; Rhett | 16h |  |
| 176 | 1.1.1.6.2.2 | Validation and Acceptance Testing |  | 2d | 2006-12-28 | 2006-12-29 | 175 |  |  | 2006-12-28 | 2006-12-29 | 2d | 203.09d | 0d |  | Renee; David; Brenda; Natasha; Mayo; WF | 96h |  |
| 177 | 1.1.1.6.2.3 | Submit Test Results Report (Task 2.7) | milestone | 0d | 2006-12-29 | 2006-12-29 | 176 |  |  | 2006-12-29 | 2006-12-29 | 0d | 203.09d | 0d |  |  |  |  |
| 178 | 1.1.2 | **Iteration 2** |  | 46d | 2006-12-18 A | 2007-02-21 | 177 | 99% | 0.05d | 2007-01-02 | 2007-02-01 | 23d | 169d |  |  |  | 5072h | 5068h |
| 179 | 1.1.2.1 | Start Iteration 2 | milestone | 0d | 2007-01-02 | 2007-01-02 |  |  |  |  |  |  | 205.73d | 0d | start no earlier than 2007-01-02 |  |  |  |
| 180 | 1.1.2.2 | **Project Management** |  | 43d | 2006-12-18 A | 2007-02-16 | 179SS | 99% | 0.27d | 2007-01-02 | 2007-02-01 | 23d | 172d |  |  |  | 1088h | 1084h |
| 181 | 1.1.2.2.1 | Update Project Plan |  | 5d | 2007-01-02 A | 2007-01-08 A |  | 100% |  | 2007-01-02 | 2007-01-08 | 5d |  |  |  | Edmond | 40h | 40h |
| 182 | 1.1.2.2.2 | **Detailed Construction and Transition Plan** |  | 20d | 2007-01-22 A | 2007-02-16 A |  | 100% |  | 2007-01-22 | 2007-02-01 | 9d |  |  |  |  | 480h | 480h |
| 183 | 1.1.2.2.2.1 | Prepare Detailed Plan for Construction and Transition Phases |  | 5d | 2007-01-22 A | 2007-01-26 A |  | 100% |  | 2007-01-22 | 2007-01-26 | 5d |  |  | start no earlier than 2007-01-22 | Edmond; Ram; Vinay; Warren; Cal | 200h | 200h |
| 184 | 1.1.2.2.2.2 | Deliver Plan to BAH (Task 2.9) | milestone | 0d | 2007-01-26 A | 2007-01-26 A | 183 | 100% |  | 2007-02-01 | 2007-02-01 | 0d |  |  |  | Edmond |  |  |
| 185 | 1.1.2.2.2.3 | Adopter Review |  | 10d | 2007-01-29 A | 2007-02-09 A | 184 | 100% |  |  |  |  |  |  |  | Mayo; WF | 160h | 160h |
| 186 | 1.1.2.2.2.4 | Formal Review by BAH |  | 15d | 2007-01-29 A | 2007-02-16 A | 184 | 100% |  |  |  |  |  |  |  | BAH | 120h | 120h |

| ID | WBS | Task | Type | Duration | Start | Finish | Predecessors | Complete | Remaining | Baseline start | Baseline finish | Baseline duration | Total slack | Constraint | Resources | Work | Actual work |
| --- | --- | --- | --- | --- | --- | --- | --- | --- | --- | --- | --- | --- | --- | --- | --- | --- | --- |
| 187 | 1.1.2.2.3 | **Change Control Board Plan and Charter (Task 2.10)** |  | 32.75d | 2006-12-18 A | 2007-02-02 A |  | 100% |  | 2006-12-18 | 2007-01-03 | 11d |  |  |  | 400h | 400h |
| 188 | 1.1.2.2.3.1 | Prepare CCB Charter |  | 10d | 2006-12-18 A | 2007-01-12 A |  | 100% |  | 2006-12-18 | 2006-12-22 | 5d |  | start no earlier than 2006-12-18 | Edmond | 80h | 80h |
| 189 | 1.1.2.2.3.2 | Submit to BAH | milestone | 0d | 2007-01-12 A | 2007-01-12 A | 188 | 100% |  | 2007-01-03 | 2007-01-03 | 0d |  |  | Edmond |  |  |
| 190 | 1.1.2.2.3.3 | Adopters/Collobators Review |  | 5d | 2007-01-12 A | 2007-01-19 A | 189 | 100% |  | 2006-12-26 | 2007-01-02 | 5d |  |  | Mayo; WF; AE_SIG; VCDE_WS; Arch_WS | 200h | 200h |
| 191 | 1.1.2.2.3.4 | Formal Review by BAH |  | 15d | 2007-01-12 A | 2007-02-02 A | 189 | 100% |  |  |  |  |  |  | BAH | 120h | 120h |
| 192 | 1.1.2.2.4 | **Weekly Team/Developers Meeting** |  | 16d | 2007-01-08 A | 2007-01-29 A |  | 100% |  | 2007-01-08 | 2007-01-29 | 16d |  |  |  | 96h | 96h |
| 193 | 1.1.2.2.4.1 | Weekly Team Meeting 1 |  | 1d | 2007-01-08 A | 2007-01-08 A |  | 100% |  | 2007-01-08 | 2007-01-08 | 1d |  | start no earlier than 2007-01-08 | Edmond; Vinay; Functional Team Lead | 24h | 24h |
| 194 | 1.1.2.2.4.2 | Weekly Team Meeting 2 |  | 1d | 2007-01-15 A | 2007-01-15 A |  | 100% |  | 2007-01-15 | 2007-01-15 | 1d |  | start no earlier than 2007-01-15 | Edmond; Vinay; Functional Team Lead | 24h | 24h |
| 195 | 1.1.2.2.4.3 | Weekly Team Meeting 3 |  | 1d | 2007-01-22 A | 2007-01-22 A |  | 100% |  | 2007-01-22 | 2007-01-22 | 1d |  | start no earlier than 2007-01-22 | Edmond; Vinay; Functional Team Lead | 24h | 24h |
| 196 | 1.1.2.2.4.4 | Weekly Team Meeting 4 |  | 1d | 2007-01-29 A | 2007-01-29 A |  | 100% |  | 2007-01-29 | 2007-01-29 | 1d |  | start no earlier than 2007-01-29 | Edmond; Vinay; Functional Team Lead | 24h | 24h |
| 197 | 1.1.2.2.5 | **Status and Risk Reporting** |  | 14d | 2007-01-12 A | 2007-01-31 |  | 93% | 1d | 2007-01-12 | 2007-01-31 | 14d | 184d |  |  | 72h | 68h |
| 198 | 1.1.2.2.5.1 | Bi-weekly Risk Update in caMP (Task 1.4) |  | 1d | 2007-01-12 A | 2007-01-12 A |  | 100% |  | 2007-01-12 | 2007-01-12 | 1d |  | start no earlier than 2007-01-12 | Edmond | 8h | 8h |
| 199 | 1.1.2.2.5.2 | Bi-weekly Risk Matrix Update Meeting |  | 1d | 2007-01-12 A | 2007-01-12 A |  | 100% |  | 2007-01-12 | 2007-01-12 | 1d |  | start no earlier than 2007-01-12 | Edmond | 8h | 8h |
| 200 | 1.1.2.2.5.3 | Bi-weekly Risk Update in caMP (Task 1.4) |  | 1d | 2007-01-26 A | 2007-01-26 A |  | 100% |  | 2007-01-26 | 2007-01-26 | 1d |  | start no earlier than 2007-01-26 | Edmond | 8h | 8h |
| 201 | 1.1.2.2.5.4 | Bi-weekly Status Update Meeting with BAH/NCI |  | 1d | 2007-01-26 A | 2007-01-26 A |  | 100% |  | 2007-01-26 | 2007-01-26 | 1d |  | start no earlier than 2007-01-26 | Edmond; Ram; Vinay | 24h | 24h |
| 202 | 1.1.2.2.5.5 | Monthly Status Report (Task 1.3) |  | 1d | 2007-01-31 A | 2007-01-31 A |  | 100% |  | 2007-01-31 | 2007-01-31 | 1d |  | start no earlier than 2007-01-31 | Edmond | 8h | 8h |
| 203 | 1.1.2.2.5.6 | Monthly Risk Matrix Update (Task 1.3) |  | 1d | 2007-01-31 A | 2007-01-31 A |  | 100% |  | 2007-01-31 | 2007-01-31 | 1d |  | start no earlier than 2007-01-31 | Edmond | 8h | 8h |
| 204 | 1.1.2.2.5.7 | Adopters Collaboration Report (Task 1.7) |  | 1d | 2007-01-31 A | 2007-01-31 |  | 50% | 0.5d | 2007-01-31 | 2007-01-31 | 1d | 184d | start no earlier than 2007-01-31 | Edmond | 8h | 4h |
| 205 | 1.1.2.2.6 | **Collaboration Management Activities** |  | 11d | 2007-01-11 A | 2007-01-25 A |  | 100% |  | 2007-01-11 | 2007-01-25 | 11d |  |  |  |  |  |
| 206 | 1.1.2.2.6.1 | Bi-Weekly AE SIG Meeting |  | 1d | 2007-01-11 A | 2007-01-11 A |  | 100% |  | 2007-01-11 | 2007-01-11 | 1d |  | start no earlier than 2007-01-11 |  |  |  |
| 207 | 1.1.2.2.6.2 | Adopters Mtg |  | 1d | 2007-01-18 A | 2007-01-18 A |  | 100% |  |  |  |  |  | start no earlier than 2007-01-18 |  |  |  |
| 208 | 1.1.2.2.6.3 | Bi-Weekly AE SIG Meeting |  | 1d | 2007-01-25 A | 2007-01-25 A |  | 100% |  | 2007-01-25 | 2007-01-25 | 1d |  | start no earlier than 2007-01-25 |  |  |  |
| 209 | 1.1.2.3 | **Requirements** |  | 32d | 2007-01-02 A | 2007-02-14 A |  | 100% |  | 2007-01-02 | 2007-01-23 | 16d |  |  |  | 1088h | 1088h |
| 210 | 1.1.2.3.1 | Face-to-Face Meeting |  | 2d | 2007-01-04 A | 2007-01-05 A |  | 100% |  | 2007-01-04 | 2007-01-05 | 2d |  | must start on 2007-01-04 | Ram; Vinay; Warren; Cal; Renee; David; John; Rhett; Joshua | 144h | 144h |
| 211 | 1.1.2.3.2 | F2F Meeting Notes (Task 1.5) |  | 2d | 2007-01-08 A | 2007-01-09 A | 210 | 100% |  | 2007-01-08 | 2007-01-09 | 2d |  |  | Edmond | 16h | 16h |
| 212 | 1.1.2.3.3 | Use Case Selection |  | 2d | 2007-01-02 A | 2007-01-03 A |  | 100% |  | 2007-01-02 | 2007-01-03 | 2d |  |  | Ram; Vinay; Warren; Cal | 64h | 64h |
| 213 | 1.1.2.3.4 | Use Case Assignments for Iteration 2 |  | 1d | 2007-01-04 A | 2007-01-04 A | 212 | 100% |  | 2007-01-04 | 2007-01-04 | 1d |  |  | Vinay | 8h | 8h |

| ID | WBS | Task | Type | Duration | Start | Finish | Predecessors | Complete | Baseline start | Baseline finish | Baseline duration | Resources | Work | Actual work |
| --- | --- | --- | --- | --- | --- | --- | --- | --- | --- | --- | --- | --- | --- | --- |
| 214 | 1.1.2.3.5 | **Use Case Specification and Realization (Task 2.1)** |  | 17d | 2007-01-02 A | 2007-01-24 A |  | 100% | 2007-01-05 | 2007-01-12 | 6d |  | 600h | 600h |
| 215 | 1.1.2.3.5.1 | **Protocol Abstraction** |  | 14d | 2007-01-02 A | 2007-01-19 A |  | 100% |  |  |  |  | 192h | 192h |
| 216 | 1.1.2.3.5.1.1 | Developer draft |  | 5d | 2007-01-02 A | 2007-01-08 A |  | 100% |  |  |  | Sean; Krikor | 80h | 80h |
| 217 | 1.1.2.3.5.1.2 | Adopters/Collobators Review |  | 5d | 2007-01-09 A | 2007-01-15 A | 216 | 100% |  |  |  | Mayo; WF | 80h | 80h |
| 218 | 1.1.2.3.5.1.3 | Developer Update |  | 4d | 2007-01-16 A | 2007-01-19 A | 217 | 100% |  |  |  | Sean | 32h | 32h |
| 219 | 1.1.2.3.5.2 | **AE Data Collection** |  | 14d | 2007-01-02 A | 2007-01-19 A |  | 100% |  |  |  |  | 192h | 192h |
| 220 | 1.1.2.3.5.2.1 | Developer draft |  | 5d | 2007-01-02 A | 2007-01-08 A |  | 100% |  |  |  | Sean; Rhett | 80h | 80h |
| 221 | 1.1.2.3.5.2.2 | Adopters/Collobators Review |  | 5d | 2007-01-09 A | 2007-01-15 A | 220 | 100% |  |  |  | Mayo; WF | 80h | 80h |
| 222 | 1.1.2.3.5.2.3 | Developer Update |  | 4d | 2007-01-16 A | 2007-01-19 A | 221 | 100% |  |  |  | Sean | 32h | 32h |
| 223 | 1.1.2.3.5.3 | **Triggers/Notification** |  | 14d | 2007-01-02 A | 2007-01-19 A |  | 100% |  |  |  |  | 192h | 192h |
| 224 | 1.1.2.3.5.3.1 | Developer draft |  | 5d | 2007-01-02 A | 2007-01-08 A |  | 100% |  |  |  | Sean; Rhett | 80h | 80h |
| 225 | 1.1.2.3.5.3.2 | Adopters/Collobators Review |  | 5d | 2007-01-09 A | 2007-01-15 A | 224 | 100% |  |  |  | Mayo; WF | 80h | 80h |
| 226 | 1.1.2.3.5.3.3 | Developer Update |  | 4d | 2007-01-16 A | 2007-01-19 A | 225 | 100% |  |  |  | Sean | 32h | 32h |
| 227 | 1.1.2.3.5.4 | Update Use Case Document |  | 3d | 2007-01-22 A | 2007-01-24 A | 218, 222, 226 | 100% |  |  |  | Sean | 24h | 24h |
| 228 | 1.1.2.3.5.5 | Submit Updated Use Case Document to BAH (Task 2.1) | milestone | 0d | 2007-01-24 A | 2007-01-24 A | 227 | 100% |  |  |  |  |  |  |
| 229 | 1.1.2.3.6 | **SRS document (Task 2.2)** |  | 32d | 2007-01-02 A | 2007-02-14 A |  | 100% | 2007-01-09 | 2007-01-23 | 11d |  | 256h | 256h |
| 230 | 1.1.2.3.6.1 | Developer draft |  | 5d | 2007-01-02 A | 2007-01-08 A |  | 100% | 2007-01-09 | 2007-01-15 | 5d | Sean | 40h | 40h |
| 231 | 1.1.2.3.6.2 | Adopter review |  | 5d | 2007-01-09 A | 2007-01-15 A | 230 | 100% | 2007-01-16 | 2007-01-22 | 5d | Sean | 40h | 40h |
| 232 | 1.1.2.3.6.3 | Developer update |  | 7d | 2007-01-16 A | 2007-01-24 A | 231 | 100% | 2007-01-23 | 2007-01-23 | 1d | Sean | 56h | 56h |
| 233 | 1.1.2.3.6.4 | Deliver SRS document to BAH (Task 2.2) | milestone | 0d | 2007-01-24 A | 2007-01-24 A | 232 | 100% | 2007-01-23 | 2007-01-23 | 0d | Sean |  |  |
| 234 | 1.1.2.3.6.5 | Formal Review by BAH |  | 15d | 2007-01-25 A | 2007-02-14 A | 233 | 100% |  |  |  | BAH | 120h | 120h |
| 235 | 1.1.2.4 | **Analysis and Design** |  | 37d | 2007-01-02 A | 2007-02-21 A |  | 100% | 2007-01-12 | 2007-01-26 | 11d |  | 968h | 968h |
| 236 | 1.1.2.4.1 | **Design Documents** |  | 28d | 2007-01-09 A | 2007-02-15 A | 214SS+5d | 100% | 2007-01-12 | 2007-01-23 | 8d |  | 432h | 432h |
| 237 | 1.1.2.4.1.1 | **Protocol Abstraction** |  | 13d | 2007-01-09 A | 2007-01-25 A |  | 100% |  |  |  |  | 104h | 104h |
| 238 | 1.1.2.4.1.1.1 | Develop appropriate UML Artifacts |  | 5d | 2007-01-09 A | 2007-01-15 A |  | 100% |  |  |  | Krikor | 40h | 40h |
| 239 | 1.1.2.4.1.1.2 | Create Design Document |  | 5d | 2007-01-16 A | 2007-01-22 A | 238 | 100% |  |  |  | Krikor | 40h | 40h |
| 240 | 1.1.2.4.1.1.3 | Adopters/Collaborators Review |  | 2d | 2007-01-23 A | 2007-01-24 A | 239 | 100% |  |  |  | Krikor | 16h | 16h |
| 241 | 1.1.2.4.1.1.4 | Developers Update |  | 1d | 2007-01-25 A | 2007-01-25 A | 240 | 100% |  |  |  | Krikor | 8h | 8h |

| ID | WBS | Task | Type | Duration | Start | Finish | Predecessors | Complete | Baseline start | Baseline finish | Baseline duration | Resources | Work | Actual work |
| --- | --- | --- | --- | --- | --- | --- | --- | --- | --- | --- | --- | --- | --- | --- |
| 242 | 1.1.2.4.1.2 | **AE Data Collection** |  | 13d | 2007-01-09 A | 2007-01-25 A |  | 100% |  |  |  |  | 104h | 104h |
| 243 | 1.1.2.4.1.2.1 | Develop appropriate UML Artifacts |  | 5d | 2007-01-09 A | 2007-01-15 A |  | 100% |  |  |  | Rhett | 40h | 40h |
| 244 | 1.1.2.4.1.2.2 | Create Design Document |  | 5d | 2007-01-16 A | 2007-01-22 A | 243 | 100% |  |  |  | Rhett | 40h | 40h |
| 245 | 1.1.2.4.1.2.3 | Adopters/Collaborators Review |  | 2d | 2007-01-23 A | 2007-01-24 A | 244 | 100% |  |  |  | Rhett | 16h | 16h |
| 246 | 1.1.2.4.1.2.4 | Developers Update |  | 1d | 2007-01-25 A | 2007-01-25 A | 245 | 100% |  |  |  | Rhett | 8h | 8h |
| 247 | 1.1.2.4.1.3 | **Triggers/Notification** |  | 13d | 2007-01-09 A | 2007-01-25 A |  | 100% |  |  |  |  | 104h | 104h |
| 248 | 1.1.2.4.1.3.1 | Develop appropriate UML Artifacts |  | 5d | 2007-01-09 A | 2007-01-15 A |  | 100% |  |  |  | Sujith | 40h | 40h |
| 249 | 1.1.2.4.1.3.2 | Create Design Document |  | 5d | 2007-01-16 A | 2007-01-22 A | 248 | 100% |  |  |  | Sujith | 40h | 40h |
| 250 | 1.1.2.4.1.3.3 | Adopters/Collaborators Review |  | 2d | 2007-01-23 A | 2007-01-24 A | 249 | 100% |  |  |  | Sujith | 16h | 16h |
| 251 | 1.1.2.4.1.3.4 | Developers Update |  | 1d | 2007-01-25 A | 2007-01-25 A | 250 | 100% |  |  |  | Sujith | 8h | 8h |
| 252 | 1.1.2.4.1.4 | Deliver Design document to BAH (Task 2.2) | milestone | 0d | 2007-01-25 A | 2007-01-25 A | 241, 246, 251 | 100% | 2007-01-23 | 2007-01-23 | 0d | Edmond |  |  |
| 253 | 1.1.2.4.1.5 | Deliver UML to BAH (Task 2.3) | milestone | 0d | 2007-01-25 A | 2007-01-25 A | 241, 246, 251 | 100% |  |  |  | Edmond |  |  |
| 254 | 1.1.2.4.1.6 | Formal Review by BAH |  | 15d | 2007-01-26 A | 2007-02-15 A | 253 | 100% |  |  |  | BAH | 120h | 120h |
| 255 | 1.1.2.4.2 | **Domain Model** |  | 3d | 2007-01-02 A | 2007-01-04 A |  | 100% |  |  |  |  | 24h | 24h |
| 256 | 1.1.2.4.2.1 | Update Model/BRIDG Harmonization |  | 3d | 2007-01-02 A | 2007-01-04 A |  | 100% |  |  |  | Ram | 24h | 24h |
| 257 | 1.1.2.4.3 | **Technical/Architecture Guide** |  | 32d | 2007-01-09 A | 2007-02-21 A |  | 100% | 2007-01-12 | 2007-01-26 | 11d |  | 512h | 512h |
| 258 | 1.1.2.4.3.1 | Prepare draft of Tech/Arch Guide |  | 9d | 2007-01-09 A | 2007-01-19 A | 214SS+5d | 100% | 2007-01-12 | 2007-01-18 | 5d | Vinay; Joshua | 144h | 144h |
| 259 | 1.1.2.4.3.2 | Adopter review |  | 5d | 2007-01-22 A | 2007-01-26 A | 258 | 100% | 2007-01-19 | 2007-01-25 | 5d | Mayo; WF; AE_SIG; VCDE_WS; Arch_WS | 200h | 200h |
| 260 | 1.1.2.4.3.3 | Developer update |  | 3d | 2007-01-29 A | 2007-01-31 A | 259 | 100% | 2007-01-26 | 2007-01-26 | 1d | Vinay; Joshua | 48h | 48h |
| 261 | 1.1.2.4.3.4 | Deliver to BAH (Task 2.8) | milestone | 0d | 2007-01-31 A | 2007-01-31 A | 260 | 100% | 2007-01-26 | 2007-01-26 | 0d | Edmond |  |  |
| 262 | 1.1.2.4.3.5 | Formal Review by BAH |  | 15d | 2007-02-01 A | 2007-02-21 A | 261 | 100% |  |  |  | BAH | 120h | 120h |
| 263 | 1.1.2.5 | **Implementation** |  | 19d | 2007-01-03 A | 2007-01-29 A | 214SS+1d | 100% | 2007-01-08 | 2007-01-24 | 13d |  | 1392h | 1392h |
| 264 | 1.1.2.5.1 | **Web interface** |  | 9d | 2007-01-03 A | 2007-01-15 A |  | 100% | 2007-01-08 | 2007-01-19 | 10d |  | 72h | 72h |
| 265 | 1.1.2.5.1.1 | Second web interface iteration |  | 9d | 2007-01-03 A | 2007-01-15 A |  | 100% | 2007-01-08 | 2007-01-19 | 10d | Richard | 72h | 72h |

| ID | WBS | Task | Type | Duration | Start | Finish | Predecessors | Complete | Baseline start | Baseline finish | Baseline duration | Constraint | Resources | Work | Actual work |
| --- | --- | --- | --- | --- | --- | --- | --- | --- | --- | --- | --- | --- | --- | --- | --- |
| 266 | 1.1.2.5.2 | **Enterprise Service Bus** |  | 10d | 2007-01-03 A | 2007-01-16 A |  | 100% | 2007-01-08 | 2007-01-19 | 10d |  |  | 160h | 160h |
| 267 | 1.1.2.5.2.1 | Second ESB Iteration |  | 10d | 2007-01-03 A | 2007-01-16 A |  | 100% | 2007-01-08 | 2007-01-19 | 10d |  | Vinay; Joshua | 160h | 160h |
| 268 | 1.1.2.5.3 | **Grid service** |  | 13d | 2007-01-03 A | 2007-01-19 A |  | 100% | 2007-01-08 | 2007-01-24 | 13d |  |  | 208h | 208h |
| 269 | 1.1.2.5.3.1 | Implement Grid Service |  | 13d | 2007-01-03 A | 2007-01-19 A |  | 100% | 2007-01-08 | 2007-01-24 | 13d |  | Vinay; Joshua | 208h | 208h |
| 270 | 1.1.2.5.4 | **Implement Use Cases** |  | 15d | 2007-01-09 A | 2007-01-29 A |  | 100% | 2007-01-08 | 2007-01-23 | 12d |  |  | 952h | 952h |
| 271 | 1.1.2.5.4.1 | **Protocol Abstraction** |  | 12d | 2007-01-09 A | 2007-01-24 A | 237SS | 100% |  |  |  |  |  | 416h | 416h |
| 272 | 1.1.2.5.4.1.1 | UI - Incorporate HTML and CSS |  | 5d | 2007-01-16 A | 2007-01-22 A | 265 | 100% |  |  |  |  | Krikor | 40h | 40h |
| 273 | 1.1.2.5.4.1.2 | Implement O/R mapping |  | 10d | 2007-01-09 A | 2007-01-22 A |  | 100% | 2007-01-08 | 2007-01-19 | 10d |  | Krikor | 80h | 80h |
| 274 | 1.1.2.5.4.1.3 | Develop DAO |  | 10d | 2007-01-11 A | 2007-01-24 A | 273SS+2d | 100% | 2007-01-10 | 2007-01-23 | 10d |  | Krikor | 80h | 80h |
| 275 | 1.1.2.5.4.1.4 | Develop Service |  | 10d | 2007-01-11 A | 2007-01-24 A | 273SS+2d | 100% | 2007-01-10 | 2007-01-23 | 10d |  | Krikor | 80h | 80h |
| 276 | 1.1.2.5.4.1.5 | Develop controller and command objects |  | 10d | 2007-01-11 A | 2007-01-24 A | 273SS+2d | 100% | 2007-01-10 | 2007-01-23 | 10d |  | Krikor | 80h | 80h |
| 277 | 1.1.2.5.4.1.6 | Develop JUnit test cases |  | 7d | 2007-01-11 A | 2007-01-19 A | 273SS+2d | 100% | 2007-01-10 | 2007-01-18 | 7d |  | Krikor | 56h | 56h |
| 278 | 1.1.2.5.4.2 | **AE Data Collection** |  | 11.25d | 2007-01-09 A | 2007-01-24 A | 242SS | 100% |  |  |  |  |  | 416h | 416h |
| 279 | 1.1.2.5.4.2.1 | UI - Incorporate HTML and CSS |  | 5d | 2007-01-16 A | 2007-01-22 A | 265 | 100% |  |  |  |  | Rhett | 40h | 40h |
| 280 | 1.1.2.5.4.2.2 | Implement O/R mapping |  | 10d | 2007-01-09 A | 2007-01-22 A |  | 100% |  |  |  |  | Rhett | 80h | 80h |
| 281 | 1.1.2.5.4.2.3 | Develop DAO |  | 10d | 2007-01-09 A | 2007-01-24 A | 280SS+2d | 100% |  |  |  |  | Rhett | 80h | 80h |
| 282 | 1.1.2.5.4.2.4 | Develop Service |  | 10d | 2007-01-09 A | 2007-01-24 A | 280SS+2d | 100% |  |  |  |  | Rhett | 80h | 80h |
| 283 | 1.1.2.5.4.2.5 | Develop controller and command objects |  | 10d | 2007-01-09 A | 2007-01-24 A | 280SS+2d | 100% |  |  |  |  | Rhett | 80h | 80h |
| 284 | 1.1.2.5.4.2.6 | Develop JUnit test cases |  | 7d | 2007-01-09 A | 2007-01-19 A | 280SS+2d | 100% |  |  |  |  | Rhett | 56h | 56h |
| 285 | 1.1.2.5.4.3 | **Triggers/Notification** |  | 15d | 2007-01-09 A | 2007-01-29 A | 247SS | 100% |  |  |  |  |  | 120h | 120h |
| 286 | 1.1.2.5.4.3.1 | JBOSS Rules Setup/Development |  | 15d | 2007-01-09 A | 2007-01-29 A |  | 100% |  |  |  |  | Sujith | 120h | 120h |
| 287 | 1.1.2.6 | **Testing** |  | 26d | 2007-01-17 A | 2007-02-21 A |  | 100% | 2007-01-12 | 2007-01-26 | 11d |  |  | 336h | 336h |
| 288 | 1.1.2.6.1 | **Test Plan** |  | 18d | 2007-01-17 A | 2007-02-09 A |  | 100% |  |  |  |  |  | 152h | 152h |
| 289 | 1.1.2.6.1.1 | Update Test Plan Document (Task 2.6) |  | 3d | 2007-01-17 A | 2007-01-19 A |  | 100% | 2007-01-08 | 2007-01-12 | 5d | start no earlier than 2007-01-17 | Vinay; Ram | 32h | 32h |
| 290 | 1.1.2.6.1.2 | Submit to BAH | milestone | 0d | 2007-01-19 A | 2007-01-19 A | 289 | 100% |  |  |  |  | Edmond |  |  |
| 291 | 1.1.2.6.1.3 | Formal Review by BAH |  | 15d | 2007-01-22 A | 2007-02-09 A | 290 | 100% |  |  |  |  | BAH | 120h | 120h |

| ID | WBS | Task | Type | Duration | Start | Finish | Predecessors | Complete | Remaining | Baseline start | Baseline finish | Baseline duration | Total slack | Constraint | Resources | Work | Actual work | Text3 |
| --- | --- | --- | --- | --- | --- | --- | --- | --- | --- | --- | --- | --- | --- | --- | --- | --- | --- | --- |
| 292 | 1.1.2.6.2 | **Final Tests of Iteration** |  | 17d | 2007-01-30 A | 2007-02-21 A |  | 100% |  | 2007-01-24 | 2007-01-26 | 2d |  |  |  | 184h | 184h |  |
| 293 | 1.1.2.6.2.1 | Testing |  | 2d | 2007-01-30 A | 2007-01-31 A | 263 | 100% |  | 2007-01-25 | 2007-01-26 | 2d |  |  | Renee; David; Brenda; Natasha | 64h | 64h |  |
| 294 | 1.1.2.6.2.2 | Submit Test Results Report (Task 2.7) | milestone | 0d | 2007-01-31 A | 2007-01-31 A | 293 | 100% |  | 2007-01-26 | 2007-01-26 | 0d |  |  |  |  |  |  |
| 295 | 1.1.2.6.2.3 | Formal Review of Test results Report |  | 15d | 2007-02-01 A | 2007-02-21 A | 294 | 100% |  |  |  |  |  |  | BAH | 120h | 120h |  |
| 296 | 1.1.2.7 | **Deployment** |  | 26d | 2006-12-29 A | 2007-02-06 A |  | 100% |  |  |  |  |  |  |  | 200h | 200h |  |
| 297 | 1.1.2.7.1 | Submit prototype code (Task 2.5) | milestone | 0d | 2006-12-29 A | 2006-12-29 A |  | 100% |  |  |  |  |  |  | Ram |  |  |  |
| 298 | 1.1.2.7.2 | Formal Review of Code by BAH |  | 15d | 2007-01-02 A | 2007-01-22 A | 297 | 100% |  |  |  |  |  |  | BAH | 120h | 120h |  |
| 299 | 1.1.2.7.3 | Draft Installation Guide |  | 3d | 2007-01-02 A | 2007-01-04 A |  | 100% |  |  |  |  |  |  | Krikor; Vinay | 48h | 48h |  |
| 300 | 1.1.2.7.4 | Deploy Prototype for Iteration 2 at Mayo and WF |  | 1d | 2007-01-30 A | 2007-01-30 A | 263 | 100% |  | 2007-01-24 | 2007-01-24 | 0d |  |  | Vinay; Mayo; WF | 24h | 24h |  |
| 301 | 1.1.2.7.5 | Deploy Prototype / Make URL Public |  | 1d | 2007-02-06 A | 2007-02-06 A | 263FS+5d | 100% |  |  |  |  |  |  | Vinay | 8h | 8h |  |
| 302 | 1.1.3 | caBIG Annual Meeting |  | 3d | 2007-02-05 A | 2007-02-07 A |  | 100% |  |  |  |  |  | must start on 2007-02-05 |  |  |  |  |
| 303 | 1.2 | **Construction Phase** |  | 161d? | 2007-02-01 A | 2007-09-13 |  | 55% | 72.69d? | 2007-02-01 | 2007-09-12 | 160d | 23d |  |  | 28432h | 15406h |  |
| 304 | 1.2.1 | **Construction Phase Iteration 1** |  | 36d | 2007-02-01 A | 2007-03-22 | 302 | 99% | 0.33d | 2007-02-01 | 2007-03-02 | 22d | 148d |  |  | 3176h | 3172h | Maven, Security, UI, StudyAgents, Study Edits, Rules Engine |
| 305 | 1.2.1.1 | Begin Iteration 1 | milestone | 0d | 2007-02-14 A | 2007-02-14 A | 302 | 100% |  | 2007-02-01 | 2007-02-01 | 0d |  | start no earlier than 2007-02-14 |  |  |  |  |
| 306 | 1.2.1.2 | **Iteration Planning (Iter-1)** |  | 1d | 2007-02-14 A | 2007-02-14 A | 305 | 100% |  |  |  |  |  |  |  | 48h | 48h |  |
| 307 | 1.2.1.2.1 | Review and finalize Ucases and Work List for Iteration |  | 1d | 2007-02-14 A | 2007-02-14 A |  | 100% |  |  |  |  |  |  | Edmond; Ram; Vinay | 24h | 24h |  |
| 308 | 1.2.1.2.2 | Review and finalize assignments for Iteration |  | 1d | 2007-02-14 A | 2007-02-14 A |  | 100% |  |  |  |  |  |  | Edmond; Ram; Vinay | 24h | 24h |  |
| 309 | 1.2.1.3 | **Project Management (Iter-1)** |  | 29d | 2007-02-01 A | 2007-03-13 |  | 98% | 0.72d |  |  |  | 155d |  |  | 128h | 124h |  |
| 310 | 1.2.1.3.1 | Update Project Plan |  | 3d | 2007-02-15 A | 2007-02-19 A | 308 | 100% |  |  |  |  |  |  | Edmond | 24h | 24h |  |
| 311 | 1.2.1.3.2 | **Weekly Team/Developers Meeting** |  | 16d | 2007-02-12 A | 2007-03-05 A |  | 100% |  |  |  |  |  |  |  | 32h | 32h |  |
| 312 | 1.2.1.3.2.1 | Weekly Team Meeting 1 |  | 1d | 2007-02-12 A | 2007-02-12 A |  | 100% |  |  |  |  |  | must start on 2007-02-12 | Edmond | 8h | 8h |  |
| 313 | 1.2.1.3.2.2 | Weekly Team Meeting 2 |  | 1d | 2007-02-19 A | 2007-02-19 A |  | 100% |  |  |  |  |  | must start on 2007-02-19 | Edmond | 8h | 8h |  |
| 314 | 1.2.1.3.2.3 | Weekly Team Meeting 3 |  | 1d | 2007-02-26 A | 2007-02-26 A |  | 100% |  |  |  |  |  | must start on 2007-02-26 | Edmond | 8h | 8h |  |
| 315 | 1.2.1.3.2.4 | Weekly Team Meeting 4 |  | 1d | 2007-03-05 A | 2007-03-05 A |  | 100% |  |  |  |  |  | must start on 2007-03-05 | Edmond | 8h | 8h |  |

Notes:
- 304: Text1: 1.1, 1.2, 1.3, 1.4, 2.10, 3.1, 3.2, 3.3, 3.4, 3.5, 3.6, 3.8, 3.10, 3.13, 3.14

| ID | WBS | Task | Type | Duration | Start | Finish | Predecessors | Complete | Remaining | Total slack | Constraint | Resources | Work | Actual work |
| --- | --- | --- | --- | --- | --- | --- | --- | --- | --- | --- | --- | --- | --- | --- |
| 316 | 1.2.1.3.3 | **Status and Risk Reporting** |  | 23d | 2007-02-09 A | 2007-03-13 |  | 94% | 1.28d | 155d |  |  | 72h | 68h |
| 317 | 1.2.1.3.3.1 | Bi-weekly Risk Update in caMP (Task 1.4) |  | 1d | 2007-02-09 A | 2007-02-09 A |  | 100% |  |  | must start on 2007-02-09 | Edmond | 8h | 8h |
| 318 | 1.2.1.3.3.2 | Bi-weekly Risk Matrix Update Meeting |  | 1d | 2007-02-09 A | 2007-02-09 A |  | 100% |  |  | must start on 2007-02-09 | Edmond | 8h | 8h |
| 319 | 1.2.1.3.3.3 | Bi-weekly Risk Update in caMP (Task 1.4) |  | 1d | 2007-02-23 A | 2007-02-23 A |  | 100% |  |  | start no earlier than 2007-02-23 | Edmond | 8h | 8h |
| 320 | 1.2.1.3.3.4 | Bi-weekly Risk Matrix Update Meeting |  | 1d | 2007-02-23 A | 2007-02-23 A |  | 100% |  |  | must start on 2007-02-23 | Edmond | 8h | 8h |
| 321 | 1.2.1.3.3.5 | Bi-weekly Status Update Meeting with BAH/NCI |  | 1d | 2007-02-16 A | 2007-02-16 A |  | 100% |  |  | must start on 2007-02-16 | Edmond | 8h | 8h |
| 322 | 1.2.1.3.3.6 | Bi-weekly Status Update Meeting with BAH/NCI |  | 1d | 2007-03-02 A | 2007-03-02 A |  | 100% |  |  | must start on 2007-03-02 | Edmond | 8h | 8h |
| 323 | 1.2.1.3.3.7 | Monthly Status Report (Task 1.3) |  | 1d | 2007-03-09 A | 2007-03-09 A |  | 100% |  |  | must finish on 2007-03-09 | Edmond | 8h | 8h |
| 324 | 1.2.1.3.3.8 | Monthly Risk Matrix Update (Task 1.3) |  | 1d | 2007-03-12 A | 2007-03-12 A | 323 | 100% |  |  |  | Edmond | 8h | 8h |
| 325 | 1.2.1.3.3.9 | Adopters Collaboration Report (Task 1.7) |  | 1d | 2007-03-13 A | 2007-03-13 | 324 | 50% | 0.5d | 155d |  | Edmond | 8h | 4h |
| 326 | 1.2.1.3.4 | **Collaboration Management Activities** |  | 16d | 2007-02-01 A | 2007-02-22 A |  | 100% |  |  |  |  |  |  |
| 327 | 1.2.1.3.4.1 | Adopters Mtg |  | 1d | 2007-02-01 A | 2007-02-01 A |  | 100% |  |  | must start on 2007-02-01 |  |  |  |
| 328 | 1.2.1.3.4.2 | Bi-Weekly AE SIG Meeting |  | 1d | 2007-02-08 A | 2007-02-08 A |  | 100% |  |  | must start on 2007-02-08 |  |  |  |
| 329 | 1.2.1.3.4.3 | Adopters Mtg |  | 1d | 2007-02-15 A | 2007-02-15 A |  | 100% |  |  | must start on 2007-02-15 |  |  |  |
| 330 | 1.2.1.3.4.4 | Bi-Weekly AE SIG Meeting |  | 1d | 2007-02-22 A | 2007-02-22 A |  | 100% |  |  | must start on 2007-02-22 |  |  |  |
| 331 | 1.2.1.4 | **Environment (Iter-1)** |  | 3d | 2007-02-08 A | 2007-02-12 A |  | 100% |  |  |  |  |  |  |
| 332 | 1.2.1.4.1 | Update Environment |  | 3d | 2007-02-08 A | 2007-02-12 A |  | 100% |  |  |  |  |  |  |
| 333 | 1.2.1.5 | **SCM (Iter-1)** |  | 5d | 2007-02-08 A | 2007-02-14 A |  | 100% |  |  |  |  |  |  |
| 334 | 1.2.1.5.1 | Manage Repository |  | 5d | 2007-02-08 A | 2007-02-14 A |  | 100% |  |  |  |  |  |  |
| 335 | 1.2.1.6 | **Requirements (Iter-1)** |  | 27d | 2007-02-14 A | 2007-03-22 A |  | 100% |  |  |  |  | 808h | 808h |
| 336 | 1.2.1.6.1 | **Updated Use Case Specification and Realization** |  | 27d | 2007-02-14 A | 2007-03-22 A |  | 100% |  |  |  |  | 256h | 256h |
| 337 | 1.2.1.6.1.1 | Developer draft |  | 5d | 2007-02-14 A | 2007-02-20 A | 305 | 100% |  |  |  | Sean | 40h | 40h |
| 338 | 1.2.1.6.1.2 | Adopters/Collobators Review |  | 5d | 2007-02-21 A | 2007-02-27 A | 337 | 100% |  |  |  | Mayo; WF | 80h | 80h |
| 339 | 1.2.1.6.1.3 | Update Use Case Document |  | 2d | 2007-02-28 A | 2007-03-01 A | 338 | 100% |  |  |  | Sean | 16h | 16h |
| 340 | 1.2.1.6.1.4 | Submit Updated Use Case Document to BAH (Task 3.1) | milestone | 0d | 2007-03-01 A | 2007-03-01 A | 339 | 100% |  |  |  | Edmond |  |  |
| 341 | 1.2.1.6.1.5 | Formal Review of Updated Use Case Document |  | 15d | 2007-03-02 A | 2007-03-22 A | 340 | 100% |  |  |  | BAH | 120h | 120h |

| ID | WBS | Task | Type | Duration | Start | Finish | Predecessors | Complete | Remaining | Total slack | Resources | Work | Actual work |
| --- | --- | --- | --- | --- | --- | --- | --- | --- | --- | --- | --- | --- | --- |
| 342 | 1.2.1.6.2 | **Updated SRS Document** |  | 27d | 2007-02-14 A | 2007-03-22 A |  | 100% |  |  |  | 256h | 256h |
| 343 | 1.2.1.6.2.1 | Developer draft |  | 5d | 2007-02-14 A | 2007-02-20 A | 305 | 100% |  |  | Sean | 40h | 40h |
| 344 | 1.2.1.6.2.2 | Adopters/Collobators Review |  | 5d | 2007-02-21 A | 2007-02-27 A | 343 | 100% |  |  | Mayo; WF | 80h | 80h |
| 345 | 1.2.1.6.2.3 | Update SRS |  | 2d | 2007-02-28 A | 2007-03-01 A | 344 | 100% |  |  | Sean | 16h | 16h |
| 346 | 1.2.1.6.2.4 | Submit Updated SRS Document to BAH (Task 3.2) | milestone | 0d | 2007-03-01 A | 2007-03-01 A | 345 | 100% |  |  | Mayo; WF |  |  |
| 347 | 1.2.1.6.2.5 | Formal Review of Updated SRS |  | 15d | 2007-03-02 A | 2007-03-22 A | 346 | 100% |  |  | BAH | 120h | 120h |
| 348 | 1.2.1.6.3 | **Updated UML Static Class Diagram Model** |  | 27d | 2007-02-14 A | 2007-03-22 A |  | 100% |  |  |  | 296h | 296h |
| 349 | 1.2.1.6.3.1 | Developer draft |  | 5d | 2007-02-14 A | 2007-02-20 A | 305 | 100% |  |  | Ram; Sean | 80h | 80h |
| 350 | 1.2.1.6.3.2 | Adopters/Collobators Review |  | 5d | 2007-02-21 A | 2007-02-27 A | 349 | 100% |  |  | Mayo; WF | 80h | 80h |
| 351 | 1.2.1.6.3.3 | Update UML |  | 2d | 2007-02-28 A | 2007-03-01 A | 350 | 100% |  |  | Sean | 16h | 16h |
| 352 | 1.2.1.6.3.4 | Submit UML to BAH (Task 3.3) | milestone | 0d | 2007-03-01 A | 2007-03-01 A | 351 | 100% |  |  | Edmond |  |  |
| 353 | 1.2.1.6.3.5 | Formal Review of UML |  | 15d | 2007-03-02 A | 2007-03-22 A | 352 | 100% |  |  | BAH | 120h | 120h |
| 354 | 1.2.1.7 | **Analysis and Design (Iter-1)** |  | 30d | 2007-02-08 A | 2007-03-21 |  | 97% | 1.04d | 149d |  | 904h | 904h |
| 355 | 1.2.1.7.1 | **Design Documents** |  | 26d | 2007-02-08 A | 2007-03-15 |  | 95% | 1.41d | 153d |  | 408h | 408h |
| 356 | 1.2.1.7.1.1 | **Protocol Abstraction (Diseases/Agents)** |  | 12d | 2007-02-14 A | 2007-03-01 A |  | 100% |  |  |  | 136h | 136h |
| 357 | 1.2.1.7.1.1.1 | Develop appropriate UML Artifacts |  | 2d | 2007-02-14 A | 2007-02-15 A | 305 | 100% |  |  | Krikor | 16h | 16h |
| 358 | 1.2.1.7.1.1.2 | Create Design Document |  | 3d | 2007-02-16 A | 2007-02-20 A | 357 | 100% |  |  | Krikor | 24h | 24h |
| 359 | 1.2.1.7.1.1.3 | Adopters/Collaborators Review |  | 5d | 2007-02-21 A | 2007-02-27 A | 358 | 100% |  |  | Mayo; WF | 80h | 80h |
| 360 | 1.2.1.7.1.1.4 | Developers Update |  | 2d | 2007-02-28 A | 2007-03-01 A | 359 | 100% |  |  | Krikor | 16h | 16h |
| 361 | 1.2.1.7.1.2 | **Protocol Abstration (Search/Edit Study)** |  | 12d | 2007-02-08 A | 2007-02-23 A |  | 100% |  |  |  | 136h | 136h |
| 362 | 1.2.1.7.1.2.1 | Develop appropriate UML Artifacts |  | 2d | 2007-02-08 A | 2007-02-09 A |  | 100% |  |  | Kulasekaran | 16h | 16h |
| 363 | 1.2.1.7.1.2.2 | Create Design Document |  | 3d | 2007-02-12 A | 2007-02-14 A | 362 | 100% |  |  | Kulasekaran | 24h | 24h |
| 364 | 1.2.1.7.1.2.3 | Adopters/Collaborators Review |  | 5d | 2007-02-15 A | 2007-02-21 A | 363 | 100% |  |  | Mayo; WF | 80h | 80h |
| 365 | 1.2.1.7.1.2.4 | Developers Update |  | 2d | 2007-02-22 A | 2007-02-23 A | 364 | 100% |  |  | Kulasekaran | 16h | 16h |

| ID | WBS | Task | Type | Duration | Start | Finish | Predecessors | Complete | Remaining | Baseline start | Baseline finish | Baseline duration | Total slack | Resources | Work | Actual work |
| --- | --- | --- | --- | --- | --- | --- | --- | --- | --- | --- | --- | --- | --- | --- | --- | --- |
| 366 | 1.2.1.7.1.3 | **Triggers/Notification (cont'd)** |  | 12d | 2007-02-08 A | 2007-02-23 A |  | 100% |  |  |  |  |  |  | 136h | 136h |
| 367 | 1.2.1.7.1.3.1 | Develop appropriate UML Artifacts |  | 2d | 2007-02-08 A | 2007-02-09 A |  | 100% |  |  |  |  |  | Sujith | 16h | 16h |
| 368 | 1.2.1.7.1.3.2 | Create Design Document |  | 3d | 2007-02-12 A | 2007-02-14 A | 367 | 100% |  |  |  |  |  | Sujith | 24h | 24h |
| 369 | 1.2.1.7.1.3.3 | Adopters/Collaborators Review |  | 5d | 2007-02-15 A | 2007-02-21 A | 368 | 100% |  |  |  |  |  | Mayo; WF | 80h | 80h |
| 370 | 1.2.1.7.1.3.4 | Developers Update |  | 2d | 2007-02-22 A | 2007-02-23 A | 369 | 100% |  |  |  |  |  | Sujith | 16h | 16h |
| 371 | 1.2.1.7.1.4 | Deliver Design document to BAH (Task 3.4) | milestone | 0d | 2007-03-01 A | 2007-03-01 A | 360, 365, 370 | 100% |  |  |  |  |  |  |  |  |
| 372 | 1.2.1.7.1.5 | Deliver UML to BAH (Task 3.3) | milestone | 0d | 2007-03-01 A | 2007-03-01 A | 360, 365, 370 | 100% |  |  |  |  |  |  |  |  |
| 373 | 1.2.1.7.1.6 | Formal Review by BAH |  | 10d | 2007-03-02 A | 2007-03-15 | 372 | 75% | 2.5d |  |  |  | 153d |  |  |  |
| 374 | 1.2.1.7.2 | **Domain Model** |  | 5d | 2007-02-14 A | 2007-02-20 A |  | 100% |  |  |  |  |  |  | 40h | 40h |
| 375 | 1.2.1.7.2.1 | Update Model/BRIDG Harmonization |  | 5d | 2007-02-14 A | 2007-02-20 A | 305 | 100% |  |  |  |  |  | Ram | 40h | 40h |
| 376 | 1.2.1.7.3 | **Technical/Architecture Guide** |  | 21d | 2007-02-21 A | 2007-03-21 A |  | 100% |  | 2007-01-12 | 2007-01-26 | 11d |  |  | 456h | 456h |
| 377 | 1.2.1.7.3.1 | Update Tech/Arch Guide |  | 6d | 2007-02-21 A | 2007-02-28 A | 305FS+5d | 100% |  | 2007-01-12 | 2007-01-18 | 5d |  | Vinay; Joshua | 96h | 96h |
| 378 | 1.2.1.7.3.2 | Deliver to BAH (Task 2.8) | milestone | 0d | 2007-02-28 A | 2007-02-28 A | 377 | 100% |  | 2007-01-26 | 2007-01-26 | 0d |  | Edmond |  |  |
| 379 | 1.2.1.7.3.3 | Formal Review |  | 15d | 2007-03-01 A | 2007-03-21 A | 378 | 100% |  |  |  |  |  | BAH; Mayo; WF | 360h | 360h |
| 380 | 1.2.1.8 | **Implementation (Iter-1)** |  | 11d | 2007-02-14 A | 2007-02-28 A |  | 100% |  |  |  |  |  |  | 792h | 792h |
| 381 | 1.2.1.8.1 | **Infrastructure** |  | 10d | 2007-02-14 A | 2007-02-27 A |  | 100% |  |  |  |  |  |  | 280h | 280h |
| 382 | 1.2.1.8.1.1 | **Build Framework** |  | 5d | 2007-02-14 A | 2007-02-20 A |  | 100% |  |  |  |  |  |  | 40h | 40h |
| 383 | 1.2.1.8.1.1.1 | Maven Setup |  | 5d | 2007-02-14 A | 2007-02-20 A | 305 | 100% |  |  |  |  |  | Rhett | 40h | 40h |
| 384 | 1.2.1.8.1.2 | **Web interface** |  | 10d | 2007-02-14 A | 2007-02-27 A |  | 100% |  |  |  |  |  |  | 160h | 160h |
| 385 | 1.2.1.8.1.2.1 | UI Refactoring |  | 10d | 2007-02-14 A | 2007-02-27 A | 305 | 100% |  |  |  |  |  | Richard; Rhett | 160h | 160h |
| 386 | 1.2.1.8.1.3 | **Security** |  | 10d | 2007-02-14 A | 2007-02-27 A |  | 100% |  |  |  |  |  |  | 80h | 80h |
| 387 | 1.2.1.8.1.3.1 | Acegi - CSM |  | 10d | 2007-02-14 A | 2007-02-27 A | 305 | 100% |  |  |  |  |  | Joshua | 80h | 80h |
| 388 | 1.2.1.8.2 | **Implement Use Cases** |  | 11d | 2007-02-14 A | 2007-02-28 A |  | 100% |  |  |  |  |  |  | 512h | 512h |
| 389 | 1.2.1.8.2.1 | **Protocol Abstraction (Agents)** |  | 11d | 2007-02-14 A | 2007-02-28 A |  | 100% |  |  |  |  |  |  | 216h | 216h |
| 390 | 1.2.1.8.2.1.1 | Implement O/R mapping |  | 5d | 2007-02-14 A | 2007-02-20 A | 305 | 100% |  |  |  |  |  | Krikor | 40h | 40h |
| 391 | 1.2.1.8.2.1.2 | Develop DAO |  | 7d | 2007-02-16 A | 2007-02-26 A | 390SS+2d | 100% |  |  |  |  |  | Krikor | 56h | 56h |
| 392 | 1.2.1.8.2.1.3 | Develop Service |  | 7d | 2007-02-20 A | 2007-02-28 A | 391SS+2d | 100% |  |  |  |  |  | Krikor | 56h | 56h |
| 393 | 1.2.1.8.2.1.4 | Develop controller and command objects |  | 5d | 2007-02-22 A | 2007-02-28 A | 392SS+2d | 100% |  |  |  |  |  | Krikor | 40h | 40h |
| 394 | 1.2.1.8.2.1.5 | Develop JUnit test cases |  | 3d | 2007-02-26 A | 2007-02-28 A | 393SS+2d | 100% |  |  |  |  |  | Krikor | 24h | 24h |

| ID | WBS | Task | Type | Duration | Start | Finish | Predecessors | Complete | Baseline start | Baseline finish | Baseline duration | Constraint | Resources | Work | Actual work |
| --- | --- | --- | --- | --- | --- | --- | --- | --- | --- | --- | --- | --- | --- | --- | --- |
| 395 | 1.2.1.8.2.2 | **Protocol Abstraction (Search/Edit Study)** |  | 11d | 2007-02-14 A | 2007-02-28 A |  | 100% |  |  |  |  |  | 216h | 216h |
| 396 | 1.2.1.8.2.2.1 | Implement O/R mapping |  | 5d | 2007-02-14 A | 2007-02-20 A | 305 | 100% |  |  |  |  | Kulasekaran | 40h | 40h |
| 397 | 1.2.1.8.2.2.2 | Develop DAO |  | 7d | 2007-02-16 A | 2007-02-26 A | 396SS+2d | 100% |  |  |  |  | Kulasekaran | 56h | 56h |
| 398 | 1.2.1.8.2.2.3 | Develop Service |  | 7d | 2007-02-20 A | 2007-02-28 A | 397SS+2d | 100% |  |  |  |  | Kulasekaran | 56h | 56h |
| 399 | 1.2.1.8.2.2.4 | Develop controller and command objects |  | 5d | 2007-02-22 A | 2007-02-28 A | 398SS+2d | 100% |  |  |  |  | Kulasekaran | 40h | 40h |
| 400 | 1.2.1.8.2.2.5 | Develop JUnit test cases |  | 3d | 2007-02-26 A | 2007-02-28 A | 399SS+2d | 100% |  |  |  |  | Kulasekaran | 24h | 24h |
| 401 | 1.2.1.8.2.3 | **Triggers/Notification (cont'd)** |  | 10d | 2007-02-14 A | 2007-02-27 A |  | 100% |  |  |  |  |  | 80h | 80h |
| 402 | 1.2.1.8.2.3.1 | Rules Engine Development |  | 10d | 2007-02-14 A | 2007-02-27 A | 305 | 100% |  |  |  |  | Sujith | 80h | 80h |
| 403 | 1.2.1.9 | **Testing (Iter-1)** |  | 26d | 2007-02-14 A | 2007-03-21 A |  | 100% |  |  |  |  |  | 352h | 352h |
| 404 | 1.2.1.9.1 | **Test Plan** |  | 20d | 2007-02-14 A | 2007-03-13 A |  | 100% |  |  |  |  |  | 160h | 160h |
| 405 | 1.2.1.9.1.1 | Update Test Plan Document (Task 3.6) |  | 10d | 2007-02-14 A | 2007-02-27 A | 305 | 100% |  |  |  |  | Ram | 80h | 80h |
| 406 | 1.2.1.9.1.2 | Submit to BAH | milestone | 0d | 2007-02-27 A | 2007-02-27 A | 405 | 100% |  |  |  |  | Edmond |  |  |
| 407 | 1.2.1.9.1.3 | Formal Review by BAH |  | 10d | 2007-02-28 A | 2007-03-13 A | 406 | 100% |  |  |  |  | BAH | 80h | 80h |
| 408 | 1.2.1.9.2 | **Run Tests** |  | 18d | 2007-02-26 A | 2007-03-21 A |  | 100% |  |  |  |  |  | 192h | 192h |
| 409 | 1.2.1.9.2.1 | Testing |  | 3d | 2007-02-26 A | 2007-02-28 A |  | 100% |  |  |  | must start on 2007-02-26 | Renee; David; Natasha | 72h | 72h |
| 410 | 1.2.1.9.2.2 | Submit Test Results Report (Task 3.7) | milestone | 0d | 2007-02-28 A | 2007-02-28 A | 409 | 100% |  |  |  |  | Edmond |  |  |
| 411 | 1.2.1.9.2.3 | Formal Review of Test results Report |  | 15d | 2007-03-01 A | 2007-03-21 A | 410 | 100% |  |  |  |  | BAH | 120h | 120h |
| 412 | 1.2.1.10 | **Deployment (Iter-1)** |  | 10d | 2007-02-28 A | 2007-03-14 A |  | 100% |  |  |  |  |  | 144h | 144h |
| 413 | 1.2.1.10.1 | Submit prototype code (Task 3.5) | milestone | 0d | 2007-02-28 A | 2007-02-28 A | 409 | 100% |  |  |  |  | Ram |  |  |
| 414 | 1.2.1.10.2 | Formal Review of Code by BAH |  | 10d | 2007-03-01 A | 2007-03-14 A | 413 | 100% |  |  |  |  | BAH | 80h | 80h |
| 415 | 1.2.1.10.3 | Update Installation Guide |  | 2d | 2007-03-01 A | 2007-03-02 A | 380 | 100% |  |  |  |  | Krikor; Vinay | 32h | 32h |
| 416 | 1.2.1.10.4 | Deploy Prototype for Iteration 1 at Mayo and WF |  | 1d | 2007-03-05 A | 2007-03-05 A | 409, 415 | 100% |  |  |  |  | Vinay; Mayo; WF | 24h | 24h |
| 417 | 1.2.1.10.5 | Make URL Public |  | 1d | 2007-03-01 A | 2007-03-01 A | 409 | 100% |  |  |  |  | Vinay | 8h | 8h |
| 418 | 1.2.1.11 | Finish Iteration 1 | milestone | 0d | 2007-02-28 A | 2007-02-28 A | 413 | 100% | 2007-02-28 | 2007-02-28 | 0d |  |  |  |  |

| ID | WBS | Task | Type | Duration | Start | Finish | Predecessors | Complete | Remaining | Baseline start | Baseline finish | Baseline duration | Total slack | Constraint | Resources | Work | Actual work |
| --- | --- | --- | --- | --- | --- | --- | --- | --- | --- | --- | --- | --- | --- | --- | --- | --- | --- |
| 419 | 1.2.2 | **Construction Phase Iteration 2** |  | 37d | 2007-03-01 A | 2007-04-20 | 418 | 99% | 0.33d | 2007-03-02 | 2007-04-04 | 23d | 127d |  |  | 5248h | 5212h |
| 420 | 1.2.2.1 | Begin Iteration 2 | milestone | 0d | 2007-03-01 A | 2007-03-01 A | 418 | 100% |  | 2007-03-02 | 2007-03-02 | 0d |  | start no earlier than 2007-03-01 |  |  |  |
| 421 | 1.2.2.2 | **Iteration Planning (Iter-2)** |  | 2d | 2007-03-01 A | 2007-03-02 A |  | 100% |  |  |  |  |  |  |  | 48h | 48h |
| 422 | 1.2.2.2.1 | Review and finalize Ucases and Work List for Iteration |  | 1d | 2007-03-01 A | 2007-03-01 A | 420 | 100% |  |  |  |  |  |  | Edmond; Ram; Vinay | 24h | 24h |
| 423 | 1.2.2.2.2 | Review and finalize assignments for Iteration |  | 1d | 2007-03-02 A | 2007-03-02 A | 422 | 100% |  |  |  |  |  |  | Edmond; Ram; Vinay | 24h | 24h |
| 424 | 1.2.2.3 | **Project Management (Iter-2)** |  | 22d | 2007-03-01 A | 2007-03-31 A |  | 100% |  |  |  |  |  |  |  | 160h | 160h |
| 425 | 1.2.2.3.1 | Update Project Plan |  | 3d | 2007-03-05 A | 2007-03-07 A | 423 | 100% |  |  |  |  |  |  | Edmond | 24h | 24h |
| 426 | 1.2.2.3.2 | **CaAERS CCB (Task 2.10)** |  | 1d | 2007-03-12 A | 2007-03-12 A |  | 100% |  |  |  |  |  |  |  | 8h | 8h |
| 427 | 1.2.2.3.2.1 | CCB Meeting |  | 1d | 2007-03-12 A | 2007-03-12 A |  | 100% |  |  |  |  |  | start no earlier than 2007-03-12 | Edmond | 8h | 8h |
| 428 | 1.2.2.3.3 | **Weekly Team/Developers Meeting** |  | 16d | 2007-03-05 A | 2007-03-26 A |  | 100% |  |  |  |  |  |  |  | 32h | 32h |
| 429 | 1.2.2.3.3.1 | Weekly Team Meeting 1 |  | 1d | 2007-03-05 A | 2007-03-05 A |  | 100% |  |  |  |  |  | must start on 2007-03-05 | Edmond | 8h | 8h |
| 430 | 1.2.2.3.3.2 | Weekly Team Meeting 2 |  | 1d | 2007-03-12 A | 2007-03-12 A |  | 100% |  |  |  |  |  | must start on 2007-03-12 | Edmond | 8h | 8h |
| 431 | 1.2.2.3.3.3 | Weekly Team Meeting 3 |  | 1d | 2007-03-19 A | 2007-03-19 A |  | 100% |  |  |  |  |  | must start on 2007-03-19 | Edmond | 8h | 8h |
| 432 | 1.2.2.3.3.4 | Weekly Team Meeting 4 |  | 1d | 2007-03-26 A | 2007-03-26 A |  | 100% |  |  |  |  |  | must start on 2007-03-26 | Edmond | 8h | 8h |
| 433 | 1.2.2.3.4 | **Status and Risk Reporting** |  | 21d | 2007-03-02 A | 2007-03-31 A |  | 100% |  |  |  |  |  |  |  | 64h | 64h |
| 434 | 1.2.2.3.4.1 | Bi-weekly Risk Update in caMP (Task 1.4) |  | 1d | 2007-03-02 A | 2007-03-02 A |  | 100% |  |  |  |  |  | must start on 2007-03-02 | Edmond | 8h | 8h |
| 435 | 1.2.2.3.4.2 | Bi-weekly Risk Matrix Update Meeting |  | 1d | 2007-03-02 A | 2007-03-02 A |  | 100% |  |  |  |  |  | must start on 2007-03-02 | Edmond | 8h | 8h |
| 436 | 1.2.2.3.4.3 | Bi-weekly Risk Update in caMP (Task 1.4) |  | 1d | 2007-03-16 A | 2007-03-16 A |  | 100% |  |  |  |  |  | start no earlier than 2007-03-16 | Edmond | 8h | 8h |
| 437 | 1.2.2.3.4.4 | Bi-weekly Risk Matrix Update Meeting |  | 1d | 2007-03-16 A | 2007-03-16 A |  | 100% |  |  |  |  |  | must start on 2007-03-16 | Edmond | 8h | 8h |
| 438 | 1.2.2.3.4.5 | Bi-weekly Status Update Meeting with BAH/NCI |  | 1d | 2007-03-09 A | 2007-03-09 A |  | 100% |  |  |  |  |  | must start on 2007-03-09 | Edmond | 8h | 8h |
| 439 | 1.2.2.3.4.6 | Bi-weekly Status Update Meeting with BAH/NCI |  | 1d | 2007-03-23 A | 2007-03-23 A |  | 100% |  |  |  |  |  | must start on 2007-03-23 | Edmond | 8h | 8h |
| 440 | 1.2.2.3.4.7 | Monthly Status Report (Task 1.3) |  | 1d | 2007-03-30 A | 2007-03-31 A |  | 100% |  |  |  |  |  | must finish on 2007-03-31 | Edmond | 8h | 8h |
| 441 | 1.2.2.3.4.8 | Monthly Risk Matrix Update (Task 1.3) |  | 1d | 2007-03-30 A | 2007-03-30 A | 440SS | 100% |  |  |  |  |  |  | Edmond | 8h | 8h |
| 442 | 1.2.2.3.5 | **Collaboration Management Activities** |  | 16d | 2007-03-01 A | 2007-03-22 A |  | 100% |  |  |  |  |  |  |  | 32h | 32h |
| 443 | 1.2.2.3.5.1 | Adopters Mtg |  | 1d | 2007-03-01 A | 2007-03-01 A |  | 100% |  |  |  |  |  | must start on 2007-03-01 | Edmond | 8h | 8h |
| 444 | 1.2.2.3.5.2 | Bi-Weekly AE SIG Meeting |  | 1d | 2007-03-08 A | 2007-03-08 A |  | 100% |  |  |  |  |  | must start on 2007-03-08 | Edmond | 8h | 8h |
| 445 | 1.2.2.3.5.3 | Adopters Mtg |  | 1d | 2007-03-15 A | 2007-03-15 A |  | 100% |  |  |  |  |  | must start on 2007-03-15 | Edmond | 8h | 8h |
| 446 | 1.2.2.3.5.4 | Bi-Weekly AE SIG Meeting |  | 1d | 2007-03-22 A | 2007-03-22 A |  | 100% |  |  |  |  |  | must start on 2007-03-22 | Edmond | 8h | 8h |

Notes:
- 419: Text1: 1.1, 1.2, 1.3, 1.4, 2.10, 3.1, 3.2, 3.3, 3.4, 3.5, 3.6, 3.8, 3.10, 3.13, 3.14 / Text3: RoleBasedSecurity,StudyDiseases,Investigators,Personnel,Import,MultipleAEs,AEDataCapture,TriggersUI
- 427: Text1: 2.10
- 434: Text1: 1.4
- 436: Text1: 1.4
- 440: Text1: 1.3
- 441: Text1: 1.3

| ID | WBS | Task | Type | Duration | Start | Finish | Predecessors | Complete | Remaining | Total slack | Free slack | Resources | Work | Actual work | Text1 |
| --- | --- | --- | --- | --- | --- | --- | --- | --- | --- | --- | --- | --- | --- | --- | --- |
| 447 | 1.2.2.4 | **Environment (Iter-2)** |  | 3d | 2007-03-01 A | 2007-03-05 A |  | 100% |  |  |  |  | 24h | 24h |  |
| 448 | 1.2.2.4.1 | Update Environment |  | 3d | 2007-03-01 A | 2007-03-05 A | 418 | 100% |  |  |  | Vinay | 24h | 24h |  |
| 449 | 1.2.2.5 | **SCM (Iter-2)** |  | 5d | 2007-03-01 A | 2007-03-07 A |  | 100% |  |  |  |  | 40h | 40h |  |
| 450 | 1.2.2.5.1 | Manage Repository |  | 5d | 2007-03-01 A | 2007-03-07 A | 418 | 100% |  |  |  | Rhett | 40h | 40h |  |
| 451 | 1.2.2.6 | **Requirements (Iter-2)** |  | 30d | 2007-03-01 A | 2007-04-11 |  | 97% | 1.03d | 134d |  |  | 824h | 788h |  |
| 452 | 1.2.2.6.1 | **Requirement Gathering/Elucidation Meetings** |  | 5d | 2007-03-01 A | 2007-03-07 A |  | 100% |  |  |  |  |  |  |  |
| 453 | 1.2.2.6.1.1 | CTEP |  | 5d | 2007-03-01 A | 2007-03-07 A |  | 100% |  |  |  |  |  |  |  |
| 454 | 1.2.2.6.1.2 | DCP |  | 5d | 2007-03-01 A | 2007-03-07 A |  | 100% |  |  |  |  |  |  |  |
| 455 | 1.2.2.6.1.3 | MedDRA |  | 1d | 2007-03-01 A | 2007-03-01 A |  | 100% |  |  |  |  |  |  |  |
| 456 | 1.2.2.6.1.4 | Diseases |  | 1d | 2007-03-01 A | 2007-03-01 A |  | 100% |  |  |  |  |  |  |  |
| 457 | 1.2.2.6.2 | **Updated Use Case Specification and Realization** |  | 28d | 2007-03-01 A | 2007-04-09 A |  | 100% |  |  |  |  | 264h | 264h |  |
| 458 | 1.2.2.6.2.1 | Developer draft |  | 5d | 2007-03-01 A | 2007-03-07 A | 418 | 100% |  |  |  | Sean | 40h | 40h |  |
| 459 | 1.2.2.6.2.2 | Adopters/Collobators Review |  | 5d | 2007-03-08 A | 2007-03-14 A | 458 | 100% |  |  |  | Mayo; WF | 80h | 80h |  |
| 460 | 1.2.2.6.2.3 | Update Use Case Document |  | 3d | 2007-03-15 A | 2007-03-19 A | 459 | 100% |  |  |  | Sean | 24h | 24h |  |
| 461 | 1.2.2.6.2.4 | Submit Updated Use Case Document to BAH (Task 3.1) | milestone | 0d | 2007-03-19 A | 2007-03-19 A | 460 | 100% |  |  |  | Edmond |  |  | 3.1 |
| 462 | 1.2.2.6.2.5 | Formal Review of Updated Use Case Document |  | 15d | 2007-03-20 A | 2007-04-09 A | 461 | 100% |  |  |  | BAH | 120h | 120h |  |
| 463 | 1.2.2.6.3 | **Updated SRS Document** |  | 28d | 2007-03-05 A | 2007-04-11 |  | 88% | 3.25d | 134d |  |  | 264h | 228h |  |
| 464 | 1.2.2.6.3.1 | Developer draft |  | 5d | 2007-03-05 A | 2007-03-09 | 423 | 75% | 1.25d | 155d | 0d | Sean | 40h | 30h |  |
| 465 | 1.2.2.6.3.2 | Adopters/Collobators Review |  | 5d | 2007-03-12 A | 2007-03-16 | 464 | 75% | 1.25d | 151.25d | 0d | Mayo; WF | 80h | 60h |  |
| 466 | 1.2.2.6.3.3 | Update SRS |  | 3d | 2007-03-19 A | 2007-03-21 | 465 | 75% | 0.75d | 149d |  | Sean | 24h | 18h |  |
| 467 | 1.2.2.6.3.4 | Submit Updated SRS Document to BAH (Task 3.2) | milestone | 0d | 2007-03-21 A | 2007-03-21 A | 466 | 100% |  |  |  | Mayo; WF |  |  | 3.2 |
| 468 | 1.2.2.6.3.5 | Formal Review of Updated SRS |  | 15d | 2007-03-22 A | 2007-04-11 A | 467 | 100% |  |  |  | BAH | 120h | 120h |  |
| 469 | 1.2.2.6.4 | **Updated UML Static Class Diagram Model** |  | 27d | 2007-03-05 A | 2007-04-10 A |  | 100% |  |  |  |  | 296h | 296h |  |
| 470 | 1.2.2.6.4.1 | Developer draft |  | 5d | 2007-03-05 A | 2007-03-09 A | 423 | 100% |  |  |  | Ram; Sean | 80h | 80h |  |
| 471 | 1.2.2.6.4.2 | Adopters/Collobators Review |  | 5d | 2007-03-12 A | 2007-03-16 A | 470 | 100% |  |  |  | Mayo; WF | 80h | 80h |  |
| 472 | 1.2.2.6.4.3 | Update UML |  | 2d | 2007-03-19 A | 2007-03-20 A | 471 | 100% |  |  |  | Sean | 16h | 16h |  |
| 473 | 1.2.2.6.4.4 | Submit UML to BAH (Task 3.3) | milestone | 0d | 2007-03-20 A | 2007-03-20 A | 472 | 100% |  |  |  | Edmond |  |  | 3.3 |
| 474 | 1.2.2.6.4.5 | Formal Review of UML |  | 15d | 2007-03-21 A | 2007-04-10 A | 473 | 100% |  |  |  | BAH | 120h | 120h |  |

| ID | WBS | Task | Type | Duration | Start | Finish | Predecessors | Complete | Resources | Work | Actual work | Text1 |
| --- | --- | --- | --- | --- | --- | --- | --- | --- | --- | --- | --- | --- |
| 475 | 1.2.2.7 | **Analysis and Design (Iter-2)** |  | 29d | 2007-03-01 A | 2007-04-10 A |  | 100% |  | 1200h | 1200h |  |
| 476 | 1.2.2.7.1 | **Design Documents** |  | 29d | 2007-03-01 A | 2007-04-10 A |  | 100% |  | 1048h | 1048h |  |
| 477 | 1.2.2.7.1.1 | **Protocol Abstraction (Diseases)** |  | 9d | 2007-03-05 A | 2007-03-15 A |  | 100% |  | 96h | 96h |  |
| 478 | 1.2.2.7.1.1.1 | Develop appropriate UML Artifacts |  | 2d | 2007-03-05 A | 2007-03-06 A | 423 | 100% | Krikor | 16h | 16h |  |
| 479 | 1.2.2.7.1.1.2 | Create Design Document |  | 2d | 2007-03-07 A | 2007-03-08 A | 478 | 100% | Krikor | 16h | 16h |  |
| 480 | 1.2.2.7.1.1.3 | Adopters/Collaborators Review |  | 3d | 2007-03-09 A | 2007-03-13 A | 479 | 100% | Mayo; WF | 48h | 48h |  |
| 481 | 1.2.2.7.1.1.4 | Developers Update |  | 2d | 2007-03-14 A | 2007-03-15 A | 480 | 100% | Krikor | 16h | 16h |  |
| 482 | 1.2.2.7.1.2 | **Data Exchange with Local CTMS (Import)** |  | 11d | 2007-03-16 A | 2007-03-30 A |  | 100% |  | 128h | 128h |  |
| 483 | 1.2.2.7.1.2.1 | Develop appropriate UML Artifacts |  | 2d | 2007-03-16 A | 2007-03-19 A | 481 | 100% | Krikor | 16h | 16h |  |
| 484 | 1.2.2.7.1.2.2 | Create Design Document |  | 2d | 2007-03-20 A | 2007-03-21 A | 483 | 100% | Krikor | 16h | 16h |  |
| 485 | 1.2.2.7.1.2.3 | Adopters/Collaborators Review |  | 5d | 2007-03-22 A | 2007-03-28 A | 484 | 100% | Mayo; WF | 80h | 80h |  |
| 486 | 1.2.2.7.1.2.4 | Developers Update |  | 2d | 2007-03-29 A | 2007-03-30 A | 485 | 100% | Krikor | 16h | 16h |  |
| 487 | 1.2.2.7.1.3 | **AE Data Collection (AE Attribution Related Functionality)** |  | 17d | 2007-03-05 A | 2007-03-27 A |  | 100% |  | 176h | 176h |  |
| 488 | 1.2.2.7.1.3.1 | Develop appropriate UML Artifacts |  | 5d | 2007-03-05 A | 2007-03-09 A | 423 | 100% | Rhett | 40h | 40h |  |
| 489 | 1.2.2.7.1.3.2 | Create Design Document |  | 5d | 2007-03-12 A | 2007-03-16 A | 488 | 100% | Rhett | 40h | 40h |  |
| 490 | 1.2.2.7.1.3.3 | Adopters/Collaborators Review |  | 5d | 2007-03-19 A | 2007-03-23 A | 489 | 100% | Mayo; WF | 80h | 80h |  |
| 491 | 1.2.2.7.1.3.4 | Developers Update |  | 2d | 2007-03-26 A | 2007-03-27 A | 490 | 100% | Rhett | 16h | 16h |  |
| 492 | 1.2.2.7.1.4 | **Protocol Abstraction (Study Investigators, Study Personnel)** |  | 14d | 2007-03-05 A | 2007-03-22 A |  | 100% |  | 152h | 152h |  |
| 493 | 1.2.2.7.1.4.1 | Develop appropriate UML Artifacts |  | 3d | 2007-03-05 A | 2007-03-07 A | 423 | 100% | Kulasekaran | 24h | 24h |  |
| 494 | 1.2.2.7.1.4.2 | Create Design Document |  | 3d | 2007-03-08 A | 2007-03-12 A | 493 | 100% | Kulasekaran | 24h | 24h |  |
| 495 | 1.2.2.7.1.4.3 | Adopters/Collaborators Review |  | 5d | 2007-03-13 A | 2007-03-19 A | 494 | 100% | Mayo; WF | 80h | 80h |  |
| 496 | 1.2.2.7.1.4.4 | Developers Update |  | 3d | 2007-03-20 A | 2007-03-22 A | 495 | 100% | Kulasekaran | 24h | 24h |  |
| 497 | 1.2.2.7.1.5 | **Protocol Level AE Notification Trigger** |  | 17d | 2007-03-01 A | 2007-03-23 A |  | 100% |  | 176h | 176h |  |
| 498 | 1.2.2.7.1.5.1 | Develop appropriate UML Artifacts |  | 5d | 2007-03-01 A | 2007-03-07 A |  | 100% | Sujith | 40h | 40h |  |
| 499 | 1.2.2.7.1.5.2 | Create Design Document |  | 5d | 2007-03-08 A | 2007-03-14 A | 498 | 100% | Sujith | 40h | 40h |  |
| 500 | 1.2.2.7.1.5.3 | Adopters/Collaborators Review |  | 5d | 2007-03-15 A | 2007-03-21 A | 499 | 100% | Mayo; WF | 80h | 80h |  |
| 501 | 1.2.2.7.1.5.4 | Developers Update |  | 2d | 2007-03-22 A | 2007-03-23 A | 500 | 100% | Sujith | 16h | 16h |  |
| 502 | 1.2.2.7.1.6 | Deliver Design document to BAH (Task 3.4) | milestone | 0d | 2007-03-27 A | 2007-03-27 A | 481, 491, 501, 496 | 100% | Edmond |  |  | 3.4 |
| 503 | 1.2.2.7.1.7 | Deliver UML to BAH (Task 3.3) | milestone | 0d | 2007-03-27 A | 2007-03-27 A | 481, 491, 501, 496 | 100% | Edmond |  |  | 3.3 |
| 504 | 1.2.2.7.1.8 | Formal Review by BAH |  | 10d | 2007-03-28 A | 2007-04-10 A | 503 | 100% | BAH; NCI; Mayo; WF | 320h | 320h |  |

| ID | WBS | Task | Duration | Start | Finish | Predecessors | Complete | Remaining | Total slack | Free slack | Constraint | Resources | Work | Actual work | Text2 |
| --- | --- | --- | --- | --- | --- | --- | --- | --- | --- | --- | --- | --- | --- | --- | --- |
| 505 | 1.2.2.7.2 | **Modeling** | 10d | 2007-03-05 A | 2007-03-16 A |  | 100% |  |  |  |  |  | 80h | 80h | BRIDG |
| 506 | 1.2.2.7.2.1 | Update Implementation Model | 5d | 2007-03-05 A | 2007-03-09 A | 423 | 100% |  |  |  |  | Ram | 40h | 40h |  |
| 507 | 1.2.2.7.2.2 | Domain Analysis Model/BRIDG Harmonization | 5d | 2007-03-12 A | 2007-03-16 A | 506 | 100% |  |  |  |  | Sean | 40h | 40h |  |
| 508 | 1.2.2.7.3 | **Semantic Interoperability** | 6d | 2007-03-16 A | 2007-03-23 A |  | 100% |  |  |  |  |  | 72h | 72h | VCDE |
| 509 | 1.2.2.7.3.1 | Begin process of matching to existing CDEs | 5d | 2007-03-16 A | 2007-03-22 A | 506 | 100% |  |  |  | start no earlier than 2007-03-16 | Sean | 40h | 40h |  |
| 510 | 1.2.2.7.3.2 | Meeting with VCDE | 1d | 2007-03-23 A | 2007-03-23 A | 509 | 100% |  |  |  | start no earlier than 2007-03-23 | Sean; Lynne W.; Brian D; Brenda M. | 32h | 32h |  |
| 511 | 1.2.2.8 | **Implementation (Iter-2)** | 22d | 2007-03-01 A | 2007-03-30 |  | 99% | 0.14d | 142d | 0d |  |  | 1704h | 1704h |  |
| 512 | 1.2.2.8.1 | **Web interface** | 10d | 2007-03-05 A | 2007-03-16 A |  | 100% |  |  |  |  |  | 80h | 80h |  |
| 513 | 1.2.2.8.1.1 | UI Refinement | 10d | 2007-03-05 A | 2007-03-16 A | 423 | 100% |  |  |  |  | Richard | 80h | 80h |  |
| 514 | 1.2.2.8.2 | **Bug Fixes** | 6d | 2007-03-01 A | 2007-03-08 |  | 79% | 1.25d | 158d |  |  |  |  |  |  |
| 515 | 1.2.2.8.2.1 | Review and assignment of Bugs from prior iteration | 1d | 2007-03-01 A | 2007-03-01 A |  | 100% |  |  |  |  |  |  |  |  |
| 516 | 1.2.2.8.2.2 | Bug Fixes | 5d | 2007-03-02 A | 2007-03-08 | 515 | 75% | 1.25d | 158d |  |  |  |  |  |  |
| 517 | 1.2.2.8.3 | **Implement Use Cases** | 22d | 2007-03-01 A | 2007-03-30 A |  | 100% |  |  |  |  |  | 1624h | 1624h |  |
| 518 | 1.2.2.8.3.1 | **Protocol Abstraction (Diseases)** | 11d | 2007-03-01 A | 2007-03-15 A |  | 100% |  |  |  |  |  | 120h | 120h |  |
| 519 | 1.2.2.8.3.1.1 | Implement O/R mapping | 3d | 2007-03-01 A | 2007-03-05 A |  | 100% |  |  |  |  | Krikor | 24h | 24h |  |
| 520 | 1.2.2.8.3.1.2 | Develop DAO | 3d | 2007-03-05 A | 2007-03-07 A | 519SS+2d | 100% |  |  |  |  | Krikor | 24h | 24h |  |
| 521 | 1.2.2.8.3.1.3 | Develop Service | 3d | 2007-03-07 A | 2007-03-09 A | 520SS+2d | 100% |  |  |  |  | Krikor | 24h | 24h |  |
| 522 | 1.2.2.8.3.1.4 | Develop controller and command objects | 3d | 2007-03-09 A | 2007-03-13 A | 521SS+2d | 100% |  |  |  |  | Krikor | 24h | 24h |  |
| 523 | 1.2.2.8.3.1.5 | Develop JUnit test cases | 3d | 2007-03-13 A | 2007-03-15 A | 522SS+2d | 100% |  |  |  |  | Krikor | 24h | 24h |  |
| 524 | 1.2.2.8.3.2 | **Data Exchange with Local CTMS (Import)** | 11d | 2007-03-16 A | 2007-03-30 A |  | 100% |  |  |  |  |  | 176h | 176h |  |
| 525 | 1.2.2.8.3.2.1 | Implement O/R mapping | 5d | 2007-03-16 A | 2007-03-22 A | 523 | 100% |  |  |  |  | Krikor | 40h | 40h |  |
| 526 | 1.2.2.8.3.2.2 | Develop DAO | 5d | 2007-03-20 A | 2007-03-26 A | 525SS+2d | 100% |  |  |  |  | Krikor | 40h | 40h |  |
| 527 | 1.2.2.8.3.2.3 | Develop Service | 5d | 2007-03-22 A | 2007-03-28 A | 526SS+2d | 100% |  |  |  |  | Krikor | 40h | 40h |  |
| 528 | 1.2.2.8.3.2.4 | Develop controller and command objects | 4d | 2007-03-26 A | 2007-03-29 A | 527SS+2d | 100% |  |  |  |  | Krikor | 32h | 32h |  |
| 529 | 1.2.2.8.3.2.5 | Develop JUnit test cases | 3d | 2007-03-28 A | 2007-03-30 A | 528SS+2d | 100% |  |  |  |  | Krikor | 24h | 24h |  |

| ID | WBS | Task | Type | Duration | Start | Finish | Predecessors | Complete | Resources | Work | Actual work | Text1 |
| --- | --- | --- | --- | --- | --- | --- | --- | --- | --- | --- | --- | --- |
| 530 | 1.2.2.8.3.3 | **AE Data Collection (cont'd)** |  | 16d | 2007-03-05 A | 2007-03-26 A |  | 100% |  | 336h | 336h |  |
| 531 | 1.2.2.8.3.3.1 | Implement O/R mapping |  | 5d | 2007-03-05 A | 2007-03-09 A | 423 | 100% | Rhett | 40h | 40h |  |
| 532 | 1.2.2.8.3.3.2 | Develop DAO |  | 10d | 2007-03-07 A | 2007-03-20 A | 531SS+2d | 100% | Rhett | 80h | 80h |  |
| 533 | 1.2.2.8.3.3.3 | Develop Service |  | 10d | 2007-03-09 A | 2007-03-22 A | 532SS+2d | 100% | Rhett | 80h | 80h |  |
| 534 | 1.2.2.8.3.3.4 | Develop controller and command objects |  | 10d | 2007-03-13 A | 2007-03-26 A | 533SS+2d | 100% | Rhett | 80h | 80h |  |
| 535 | 1.2.2.8.3.3.5 | Develop JUnit test cases |  | 7d | 2007-03-15 A | 2007-03-23 A | 534SS+2d | 100% | Rhett | 56h | 56h |  |
| 536 | 1.2.2.8.3.4 | **Protocol Abstraction (Study Investigators/Personnel)** |  | 16d | 2007-03-05 A | 2007-03-26 A |  | 100% |  | 336h | 336h |  |
| 537 | 1.2.2.8.3.4.1 | Implement O/R mapping |  | 5d | 2007-03-05 A | 2007-03-09 A | 423 | 100% | Kulasekaran | 40h | 40h |  |
| 538 | 1.2.2.8.3.4.2 | Develop DAO |  | 10d | 2007-03-07 A | 2007-03-20 A | 537SS+2d | 100% | Kulasekaran | 80h | 80h |  |
| 539 | 1.2.2.8.3.4.3 | Develop Service |  | 10d | 2007-03-09 A | 2007-03-22 A | 538SS+2d | 100% | Kulasekaran | 80h | 80h |  |
| 540 | 1.2.2.8.3.4.4 | Develop controller and command objects |  | 10d | 2007-03-13 A | 2007-03-26 A | 539SS+2d | 100% | Kulasekaran | 80h | 80h |  |
| 541 | 1.2.2.8.3.4.5 | Develop JUnit test cases |  | 7d | 2007-03-15 A | 2007-03-23 A | 540SS+2d | 100% | Kulasekaran | 56h | 56h |  |
| 542 | 1.2.2.8.3.5 | **Protocol Level Triggers/Notification and Reports (cont'd)** |  | 16d | 2007-03-05 A | 2007-03-26 A |  | 100% |  | 336h | 336h |  |
| 543 | 1.2.2.8.3.5.1 | Implement O/R mapping |  | 5d | 2007-03-05 A | 2007-03-09 A | 423 | 100% | Sujith | 40h | 40h |  |
| 544 | 1.2.2.8.3.5.2 | Develop DAO |  | 10d | 2007-03-07 A | 2007-03-20 A | 543SS+2d | 100% | Sujith | 80h | 80h |  |
| 545 | 1.2.2.8.3.5.3 | Develop Service |  | 10d | 2007-03-09 A | 2007-03-22 A | 544SS+2d | 100% | Sujith | 80h | 80h |  |
| 546 | 1.2.2.8.3.5.4 | Develop controller and command objects |  | 10d | 2007-03-13 A | 2007-03-26 A | 545SS+2d | 100% | Sujith | 80h | 80h |  |
| 547 | 1.2.2.8.3.5.5 | Develop JUnit test cases |  | 7d | 2007-03-15 A | 2007-03-23 A | 546SS+2d | 100% | Sujith | 56h | 56h |  |
| 548 | 1.2.2.8.3.6 | **Role Based Authorization** |  | 20d | 2007-03-05 A | 2007-03-30 A |  | 100% |  | 320h | 320h |  |
| 549 | 1.2.2.8.3.6.1 | Finish Acegi-CSM Tasks |  | 10d | 2007-03-05 A | 2007-03-16 A | 423 | 100% | Joshua; Vinay | 160h | 160h |  |
| 550 | 1.2.2.8.3.6.2 | Implement Study Participant Login/Authorization |  | 5d | 2007-03-19 A | 2007-03-23 A | 549 | 100% | Joshua; Vinay | 80h | 80h |  |
| 551 | 1.2.2.8.3.6.3 | Implement Study Coordinator Login/Authorization |  | 5d | 2007-03-26 A | 2007-03-30 A | 550 | 100% | Joshua; Vinay | 80h | 80h |  |
| 552 | 1.2.2.9 | **Testing (Iter-2)** |  | 37d | 2007-03-01 A | 2007-04-20 A |  | 100% |  | 360h | 360h |  |
| 553 | 1.2.2.9.1 | **Test Plan** |  | 20d | 2007-03-01 A | 2007-03-28 A |  | 100% |  | 160h | 160h |  |
| 554 | 1.2.2.9.1.1 | Update Test Plan Document (Task 3.6) |  | 10d | 2007-03-01 A | 2007-03-14 A | 418 | 100% | Ram | 80h | 80h |  |
| 555 | 1.2.2.9.1.2 | Submit to BAH | milestone | 0d | 2007-03-14 A | 2007-03-14 A | 554 | 100% | Edmond |  |  | 3.6 |
| 556 | 1.2.2.9.1.3 | Formal Review by BAH |  | 10d | 2007-03-15 A | 2007-03-28 A | 555 | 100% | BAH | 80h | 80h |  |

| ID | WBS | Task | Type | Duration | Start | Finish | Predecessors | Complete | Remaining | Baseline start | Baseline finish | Baseline duration | Total slack | Constraint | Resources | Work | Actual work |
| --- | --- | --- | --- | --- | --- | --- | --- | --- | --- | --- | --- | --- | --- | --- | --- | --- | --- |
| 557 | 1.2.2.9.2 | **Run Tests** |  | 15d | 2007-04-02 A | 2007-04-20 A |  | 100% |  |  |  |  |  |  |  | 200h | 200h |
| 558 | 1.2.2.9.2.1 | Testing |  | 5d | 2007-04-02 A | 2007-04-06 A | 511 | 100% |  |  |  |  |  |  | Renee; David; Natasha | 120h | 120h |
| 559 | 1.2.2.9.2.2 | Submit Test Results Report (Task 3.8) | milestone | 0d | 2007-04-06 A | 2007-04-06 A | 558 | 100% |  |  |  |  |  |  | Edmond |  |  |
| 560 | 1.2.2.9.2.3 | Formal Review of Test results Report |  | 10d | 2007-04-09 A | 2007-04-20 A | 559 | 100% |  |  |  |  |  |  | BAH | 80h | 80h |
| 561 | 1.2.2.10 | **Documentation (Iter-2)** |  | 17d | 2007-03-22 A | 2007-04-13 A |  | 100% |  |  |  |  |  |  |  | 776h | 776h |
| 562 | 1.2.2.10.1 | **Installation Guide** |  | 13d | 2007-03-22 A | 2007-04-09 A |  | 100% |  |  |  |  |  |  |  | 288h | 288h |
| 563 | 1.2.2.10.1.1 | Update Installation Guide |  | 3d | 2007-03-22 A | 2007-03-26 A | 579FS-7d | 100% |  |  |  |  |  |  | Rhett; Edmond | 48h | 48h |
| 564 | 1.2.2.10.1.2 | Submit to BAH/Adopters | milestone | 0d | 2007-03-26 A | 2007-03-26 A | 563 | 100% |  |  |  |  |  |  | BAH |  |  |
| 565 | 1.2.2.10.1.3 | Review of Installation Guide |  | 10d | 2007-03-27 A | 2007-04-09 A | 564 | 100% |  |  |  |  |  |  | BAH; Adopters; Mentors | 240h | 240h |
| 566 | 1.2.2.10.2 | **Administrators Guide** |  | 15d | 2007-03-26 A | 2007-04-13 A |  | 100% |  |  |  |  |  |  |  | 240h | 240h |
| 567 | 1.2.2.10.2.1 | Update Administrators Guide |  | 5d | 2007-03-26 A | 2007-03-30 A | 579FS-7d, 511FS-5d | 100% |  |  |  |  |  |  |  |  |  |
| 568 | 1.2.2.10.2.2 | Submit to BAH | milestone | 0d | 2007-03-30 A | 2007-03-30 A | 567 | 100% |  |  |  |  |  |  | BAH |  |  |
| 569 | 1.2.2.10.2.3 | Review of Admin Guide |  | 10d | 2007-04-02 A | 2007-04-13 A | 568 | 100% |  |  |  |  |  |  | BAH; Adopters; Mentors | 240h | 240h |
| 570 | 1.2.2.10.3 | **Release Notes** |  | 11d | 2007-03-26 A | 2007-04-09 A |  | 100% |  |  |  |  |  |  |  | 248h | 248h |
| 571 | 1.2.2.10.3.1 | Update Release Notes |  | 1d | 2007-03-26 A | 2007-03-26 A | 579FS-7d, 511FS-5d | 100% |  |  |  |  |  |  | Edmond | 8h | 8h |
| 572 | 1.2.2.10.3.2 | Submit to BAH | milestone | 0d | 2007-03-26 A | 2007-03-26 A | 571 | 100% |  |  |  |  |  |  | BAH |  |  |
| 573 | 1.2.2.10.3.3 | Review of Release Notes |  | 10d | 2007-03-27 A | 2007-04-09 A | 572 | 100% |  |  |  |  |  |  | BAH; Adopters; Mentors | 240h | 240h |
| 574 | 1.2.2.11 | **Deployment (Iter-2)** |  | 10d | 2007-04-06 A | 2007-04-20 A |  | 100% |  |  |  |  |  |  |  | 112h | 112h |
| 575 | 1.2.2.11.1 | Submit prototype code (Task 3.5) | milestone | 0d | 2007-04-06 A | 2007-04-06 A | 558 | 100% |  |  |  |  |  |  | Ram |  |  |
| 576 | 1.2.2.11.2 | Formal Review of Code by BAH |  | 10d | 2007-04-09 A | 2007-04-20 A | 575 | 100% |  |  |  |  |  |  | BAH | 80h | 80h |
| 577 | 1.2.2.11.3 | Deploy Prototype for Iteration 1 at Mayo and WF |  | 1d | 2007-04-09 A | 2007-04-09 A | 558 | 100% |  |  |  |  |  |  | Vinay; Mayo; WF | 24h | 24h |
| 578 | 1.2.2.11.4 | Make URL Public |  | 1d | 2007-04-09 A | 2007-04-09 A | 558 | 100% |  |  |  |  |  |  | Vinay | 8h | 8h |
| 579 | 1.2.2.12 | Finish Iteration 2 | milestone | 0d | 2007-03-31 A | 2007-03-31 A | 577 | 100% |  | 2007-03-29 | 2007-04-04 | 5d |  | must finish on 2007-03-31 |  |  |  |
| 580 | 1.2.3 | **Construction Phase Iteration 3** |  | 39d | 2007-04-01 A | 2007-05-24 | 579 | 98% | 0.78d | 2007-04-04 | 2007-05-07 | 23d | 103d |  |  | 4448h | 4376h |
| 581 | 1.2.3.1 | Begin Iteration 3 | milestone | 0d | 2007-04-01 | 2007-04-01 |  |  |  | 2007-03-02 | 2007-03-02 | 0d | 0d | must start on 2007-04-01 |  |  |  |

Notes:
- 559: Text1: 3.8
- 575: Text1: 3.5
- 580: Text1: 1.1, 1.2, 1.3, 1.4, 2.10, 3.1, 3.2, 3.3, 3.4, 3.5, 3.6, 3.8, 3.10, 3.13, 3.14 / Text3: AE Data Collection/Reporting,Triggers/Notifications,Study and Participant Data Import, bulk routine AE import

| ID | WBS | Task | Duration | Start | Finish | Predecessors | Complete | Constraint | Resources | Work | Actual work | Text1 |
| --- | --- | --- | --- | --- | --- | --- | --- | --- | --- | --- | --- | --- |
| 582 | 1.2.3.2 | **Iteration Planning (Iter-3)** | 2d | 2007-04-02 A | 2007-04-03 A |  | 100% |  |  | 48h | 48h |  |
| 583 | 1.2.3.2.1 | Review and finalize Ucases and Work List for Iteration | 1d | 2007-04-02 A | 2007-04-02 A | 581 | 100% |  | Edmond; Ram; Vinay | 24h | 24h |  |
| 584 | 1.2.3.2.2 | Review and finalize assignments for Iteration | 1d | 2007-04-03 A | 2007-04-03 A | 583 | 100% |  | Edmond; Ram; Vinay | 24h | 24h |  |
| 585 | 1.2.3.3 | **Project Management (Iter-3)** | 21d | 2007-04-02 A | 2007-04-30 A |  | 100% |  |  | 160h | 160h |  |
| 586 | 1.2.3.3.1 | Update Project Plan | 3d | 2007-04-04 A | 2007-04-06 A | 584 | 100% |  | Edmond | 24h | 24h |  |
| 587 | 1.2.3.3.2 | **CaAERS CCB (Task 2.10)** | 1d | 2007-04-02 A | 2007-04-02 A |  | 100% |  |  | 8h | 8h | 2.10 |
| 588 | 1.2.3.3.2.1 | CCB Meetings | 1d | 2007-04-02 A | 2007-04-02 A |  | 100% | finish no earlier than 2007-04-02 | Edmond | 8h | 8h |  |
| 589 | 1.2.3.3.3 | **Weekly Team/Developers Meeting** | 16d | 2007-04-02 A | 2007-04-23 A |  | 100% |  |  | 32h | 32h |  |
| 590 | 1.2.3.3.3.1 | Weekly Team Meeting 1 | 1d | 2007-04-02 A | 2007-04-02 A |  | 100% | start no earlier than 2007-04-02 | Edmond | 8h | 8h |  |
| 591 | 1.2.3.3.3.2 | Weekly Team Meeting 2 | 1d | 2007-04-09 A | 2007-04-09 A |  | 100% | start no earlier than 2007-04-09 | Edmond | 8h | 8h |  |
| 592 | 1.2.3.3.3.3 | Weekly Team Meeting 3 | 1d | 2007-04-16 A | 2007-04-16 A |  | 100% | start no earlier than 2007-04-16 | Edmond | 8h | 8h |  |
| 593 | 1.2.3.3.3.4 | Weekly Team Meeting 4 | 1d | 2007-04-23 A | 2007-04-23 A |  | 100% | start no earlier than 2007-04-23 | Edmond | 8h | 8h |  |
| 594 | 1.2.3.3.4 | **Status and Risk Reporting** | 17d | 2007-04-06 A | 2007-04-30 A |  | 100% |  |  | 64h | 64h | 1.3, 1.4 |
| 595 | 1.2.3.3.4.1 | Bi-weekly Risk Update in caMP (Task 1.4) | 1d | 2007-04-06 A | 2007-04-06 A |  | 100% | start no earlier than 2007-04-06 | Edmond | 8h | 8h |  |
| 596 | 1.2.3.3.4.2 | Bi-weekly Risk Matrix Update Meeting | 1d | 2007-04-06 A | 2007-04-06 A |  | 100% | start no earlier than 2007-04-06 | Edmond | 8h | 8h |  |
| 597 | 1.2.3.3.4.3 | Bi-weekly Risk Update in caMP (Task 1.4) | 1d | 2007-04-20 A | 2007-04-20 A |  | 100% | start no earlier than 2007-04-20 | Edmond | 8h | 8h |  |
| 598 | 1.2.3.3.4.4 | Bi-weekly Risk Matrix Update Meeting | 1d | 2007-04-20 A | 2007-04-20 A |  | 100% | start no earlier than 2007-04-20 | Edmond | 8h | 8h |  |
| 599 | 1.2.3.3.4.5 | Bi-weekly Status Update Meeting with BAH/NCI | 1d | 2007-04-13 A | 2007-04-13 A |  | 100% | start no earlier than 2007-04-13 | Edmond | 8h | 8h |  |
| 600 | 1.2.3.3.4.6 | Bi-weekly Status Update Meeting with BAH/NCI | 1d | 2007-04-27 A | 2007-04-27 A |  | 100% | start no earlier than 2007-04-27 | Edmond | 8h | 8h |  |
| 601 | 1.2.3.3.4.7 | Monthly Status Report (Task 1.3) | 1d | 2007-04-30 A | 2007-04-30 A |  | 100% | must finish on 2007-04-30 | Edmond | 8h | 8h |  |
| 602 | 1.2.3.3.4.8 | Monthly Risk Matrix Update (Task 1.3) | 1d | 2007-04-30 A | 2007-04-30 A | 601SS | 100% |  | Edmond | 8h | 8h |  |
| 603 | 1.2.3.3.5 | **Collaboration Management Activities** | 16d | 2007-04-05 A | 2007-04-26 A |  | 100% |  |  | 32h | 32h |  |
| 604 | 1.2.3.3.5.1 | Adopters Mtg | 1d | 2007-04-05 A | 2007-04-05 A |  | 100% | must start on 2007-04-05 | Edmond | 8h | 8h |  |
| 605 | 1.2.3.3.5.2 | Bi-Weekly AE SIG Meeting | 1d | 2007-04-12 A | 2007-04-12 A |  | 100% | start no earlier than 2007-04-12 | Edmond | 8h | 8h |  |
| 606 | 1.2.3.3.5.3 | Adopters Mtg | 1d | 2007-04-19 A | 2007-04-19 A |  | 100% | start no earlier than 2007-04-19 | Edmond | 8h | 8h |  |
| 607 | 1.2.3.3.5.4 | Bi-Weekly AE SIG Meeting | 1d | 2007-04-26 A | 2007-04-26 A |  | 100% | start no earlier than 2007-04-26 | Edmond | 8h | 8h |  |

| ID | WBS | Task | Type | Duration | Start | Finish | Predecessors | Complete | Resources | Work | Actual work |
| --- | --- | --- | --- | --- | --- | --- | --- | --- | --- | --- | --- |
| 608 | 1.2.3.4 | **Environment (Iter-3)** |  | 3d | 2007-04-02 A | 2007-04-04 A |  | 100% |  | 24h | 24h |
| 609 | 1.2.3.4.1 | Update Environment |  | 3d | 2007-04-02 A | 2007-04-04 A |  | 100% | Vinay | 24h | 24h |
| 610 | 1.2.3.5 | **SCM (Iter-3)** |  | 5d | 2007-04-02 A | 2007-04-06 A |  | 100% |  | 40h | 40h |
| 611 | 1.2.3.5.1 | Manage Repository |  | 5d | 2007-04-02 A | 2007-04-06 A |  | 100% | Rhett | 40h | 40h |
| 612 | 1.2.3.6 | **Requirements (Iter-3)** |  | 30d | 2007-04-02 A | 2007-05-11 A |  | 100% |  | 1112h | 1112h |
| 613 | 1.2.3.6.1 | **Requirements Gathering and Elucidation** |  | 3d | 2007-04-02 A | 2007-04-04 A |  | 100% |  | 232h | 232h |
| 614 | 1.2.3.6.1.1 | DCP Reqts (Continued) |  | 2d | 2007-04-02 A | 2007-04-03 A |  | 100% | Sean; DCP | 32h | 32h |
| 615 | 1.2.3.6.1.2 | MedDRA |  | 2d | 2007-04-02 A | 2007-04-03 A |  | 100% | Sean | 16h | 16h |
| 616 | 1.2.3.6.1.3 | Begin Talks with AdEERS Tech. POC |  | 3d | 2007-04-02 A | 2007-04-04 A |  | 100% | Ram; Sean; Edmond | 72h | 72h |
| 617 | 1.2.3.6.1.4 | Triggers/Notification |  | 2d | 2007-04-02 A | 2007-04-03 A |  | 100% | Sean; Ann; DCP | 48h | 48h |
| 618 | 1.2.3.6.1.5 | Bulk Routine AE Loading |  | 1d | 2007-04-02 A | 2007-04-02 A |  | 100% | Sean; Adopters | 16h | 16h |
| 619 | 1.2.3.6.1.6 | Report Requirements |  | 2d | 2007-04-02 A | 2007-04-03 A |  | 100% | Sean; Ann; DCP | 48h | 48h |
| 620 | 1.2.3.6.2 | **Updated Use Case Specification and Realization** |  | 30d | 2007-04-02 A | 2007-05-11 A |  | 100% |  | 280h | 280h |
| 621 | 1.2.3.6.2.1 | Developer draft |  | 5d | 2007-04-02 A | 2007-04-06 A |  | 100% | Sean | 40h | 40h |
| 622 | 1.2.3.6.2.2 | Adopters/Collobators Review |  | 5d | 2007-04-09 A | 2007-04-13 A | 621 | 100% | Mayo; WF | 80h | 80h |
| 623 | 1.2.3.6.2.3 | Update Use Case Document |  | 5d | 2007-04-16 A | 2007-04-20 A | 622 | 100% | Sean | 40h | 40h |
| 624 | 1.2.3.6.2.4 | Submit Updated Use Case Document to BAH (Task 3.1) | milestone | 0d | 2007-04-20 A | 2007-04-20 A | 623 | 100% | Edmond |  |  |
| 625 | 1.2.3.6.2.5 | Formal Review of Updated Use Case Document |  | 15d | 2007-04-23 A | 2007-05-11 A | 624 | 100% | BAH | 120h | 120h |
| 626 | 1.2.3.6.3 | **Updated SRS Document** |  | 30d | 2007-04-02 A | 2007-05-11 A |  | 100% |  | 280h | 280h |
| 627 | 1.2.3.6.3.1 | Developer draft |  | 5d | 2007-04-02 A | 2007-04-06 A |  | 100% | Sean | 40h | 40h |
| 628 | 1.2.3.6.3.2 | Adopters/Collobators Review |  | 5d | 2007-04-09 A | 2007-04-13 A | 627 | 100% | Mayo; WF | 80h | 80h |
| 629 | 1.2.3.6.3.3 | Update SRS |  | 5d | 2007-04-16 A | 2007-04-20 A | 628 | 100% | Sean | 40h | 40h |
| 630 | 1.2.3.6.3.4 | Submit Updated SRS Document to BAH (Task 3.2) | milestone | 0d | 2007-04-20 A | 2007-04-20 A | 629 | 100% | Mayo; WF |  |  |
| 631 | 1.2.3.6.3.5 | Formal Review of Updated SRS |  | 15d | 2007-04-23 A | 2007-05-11 A | 630 | 100% | BAH | 120h | 120h |

| ID | WBS | Task | Type | Duration | Start | Finish | Predecessors | Complete | Resources | Work | Actual work |
| --- | --- | --- | --- | --- | --- | --- | --- | --- | --- | --- | --- |
| 632 | 1.2.3.6.4 | **Updated UML Static Class Diagram Model** |  | 30d | 2007-04-02 A | 2007-05-11 A |  | 100% |  | 320h | 320h |
| 633 | 1.2.3.6.4.1 | Developer draft |  | 5d | 2007-04-02 A | 2007-04-06 A |  | 100% | Ram; Sean | 80h | 80h |
| 634 | 1.2.3.6.4.2 | Adopters/Collobators Review |  | 5d | 2007-04-09 A | 2007-04-13 A | 633 | 100% | Mayo; WF | 80h | 80h |
| 635 | 1.2.3.6.4.3 | Update UML |  | 5d | 2007-04-16 A | 2007-04-20 A | 634 | 100% | Sean | 40h | 40h |
| 636 | 1.2.3.6.4.4 | Submit UML to BAH (Task 3.3) | milestone | 0d | 2007-04-20 A | 2007-04-20 A | 635 | 100% | Edmond |  |  |
| 637 | 1.2.3.6.4.5 | Formal Review of UML |  | 15d | 2007-04-23 A | 2007-05-11 A | 636 | 100% | BAH | 120h | 120h |
| 638 | 1.2.3.7 | **Analysis and Design (Iter-3)** |  | 29d | 2007-04-02 A | 2007-05-10 A |  | 100% |  | 568h | 568h |
| 639 | 1.2.3.7.1 | **Design Documents** |  | 29d | 2007-04-02 A | 2007-05-10 A |  | 100% |  | 400h | 400h |
| 640 | 1.2.3.7.1.1 | **AE Data Collection (cont'd)** |  | 17d | 2007-04-04 A | 2007-04-26 A |  | 100% |  | 176h | 176h |
| 641 | 1.2.3.7.1.1.1 | Develop appropriate UML Artifacts |  | 5d | 2007-04-04 A | 2007-04-10 A | 584 | 100% | Rhett | 40h | 40h |
| 642 | 1.2.3.7.1.1.2 | Create Design Document |  | 5d | 2007-04-11 A | 2007-04-17 A | 641 | 100% | Rhett | 40h | 40h |
| 643 | 1.2.3.7.1.1.3 | Adopters/Collaborators Review |  | 5d | 2007-04-18 A | 2007-04-24 A | 642 | 100% | Mayo; WF | 80h | 80h |
| 644 | 1.2.3.7.1.1.4 | Developers Update |  | 2d | 2007-04-25 A | 2007-04-26 A | 643 | 100% | Rhett | 16h | 16h |
| 645 | 1.2.3.7.1.2 | **Candidate AE** |  | 1d | 2007-04-02 A | 2007-04-02 A |  | 100% |  | 24h | 24h |
| 646 | 1.2.3.7.1.2.1 | Develop appropriate UML Artifacts |  | 1d | 2007-04-02 A | 2007-04-02 A |  | 100% | Kulasekaran | 8h | 8h |
| 647 | 1.2.3.7.1.2.2 | Create Design Document |  | 1d | 2007-04-02 A | 2007-04-02 A |  | 100% | Kulasekaran | 8h | 8h |
| 648 | 1.2.3.7.1.2.3 | Adopters/Collaborators Review |  | 1d | 2007-04-02 A | 2007-04-02 A |  | 100% |  |  |  |
| 649 | 1.2.3.7.1.2.4 | Developers Update |  | 1d | 2007-04-02 A | 2007-04-02 A |  | 100% | Kulasekaran | 8h | 8h |
| 650 | 1.2.3.7.1.3 | **Solicited AE** |  | 1d | 2007-04-02 A | 2007-04-02 A |  | 100% |  | 24h | 24h |
| 651 | 1.2.3.7.1.3.1 | Develop appropriate UML Artifacts |  | 1d | 2007-04-02 A | 2007-04-02 A |  | 100% | Kulasekaran | 8h | 8h |
| 652 | 1.2.3.7.1.3.2 | Create Design Document |  | 1d | 2007-04-02 A | 2007-04-02 A |  | 100% | Kulasekaran | 8h | 8h |
| 653 | 1.2.3.7.1.3.3 | Adopters/Collaborators Review |  | 1d | 2007-04-02 A | 2007-04-02 A |  | 100% |  |  |  |
| 654 | 1.2.3.7.1.3.4 | Developers Update |  | 1d | 2007-04-02 A | 2007-04-02 A |  | 100% | Kulasekaran | 8h | 8h |
| 655 | 1.2.3.7.1.4 | **Triggers and Notifications (cont'd)** |  | 17d | 2007-04-02 A | 2007-04-24 A |  | 100% |  | 176h | 176h |
| 656 | 1.2.3.7.1.4.1 | Develop appropriate UML Artifacts |  | 5d | 2007-04-02 A | 2007-04-06 A |  | 100% | Sujith | 40h | 40h |
| 657 | 1.2.3.7.1.4.2 | Create Design Document |  | 5d | 2007-04-09 A | 2007-04-13 A | 656 | 100% | Sujith | 40h | 40h |
| 658 | 1.2.3.7.1.4.3 | Adopters/Collaborators Review |  | 5d | 2007-04-16 A | 2007-04-20 A | 657 | 100% | Mayo; WF | 80h | 80h |
| 659 | 1.2.3.7.1.4.4 | Developers Update |  | 2d | 2007-04-23 A | 2007-04-24 A | 658 | 100% | Sujith | 16h | 16h |

| ID | WBS | Task | Type | Duration | Start | Finish | Predecessors | Complete | Remaining | Baseline start | Baseline finish | Baseline duration | Total slack | Resources | Work | Actual work | Text1 | Text2 |
| --- | --- | --- | --- | --- | --- | --- | --- | --- | --- | --- | --- | --- | --- | --- | --- | --- | --- | --- |
| 660 | 1.2.3.7.1.5 | **Reports: Create Report Form** |  | 17d | 2007-04-02 A | 2007-04-24 A |  | 100% |  |  |  |  |  |  |  |  |  |  |
| 661 | 1.2.3.7.1.5.1 | Develop appropriate UML Artifacts |  | 5d | 2007-04-02 A | 2007-04-06 A |  | 100% |  |  |  |  |  |  |  |  |  |  |
| 662 | 1.2.3.7.1.5.2 | Create Design Document |  | 5d | 2007-04-09 A | 2007-04-13 A | 661 | 100% |  |  |  |  |  |  |  |  |  |  |
| 663 | 1.2.3.7.1.5.3 | Adopters/Collaborators Review |  | 5d | 2007-04-16 A | 2007-04-20 A | 662 | 100% |  |  |  |  |  |  |  |  |  |  |
| 664 | 1.2.3.7.1.5.4 | Developers Update |  | 2d | 2007-04-23 A | 2007-04-24 A | 663 | 100% |  |  |  |  |  |  |  |  |  |  |
| 665 | 1.2.3.7.1.6 | **Role Based Authorization (cont'd)** |  | 1d | 2007-04-02 A | 2007-04-02 A |  | 100% |  |  |  |  |  |  |  |  |  |  |
| 666 | 1.2.3.7.1.6.1 | Develop appropriate UML Artifacts |  | 1d | 2007-04-02 A | 2007-04-02 A |  | 100% |  |  |  |  |  |  |  |  |  |  |
| 667 | 1.2.3.7.1.6.2 | Create Design Document |  | 1d | 2007-04-02 A | 2007-04-02 A |  | 100% |  |  |  |  |  |  |  |  |  |  |
| 668 | 1.2.3.7.1.6.3 | Adopters/Collaborators Review |  | 1d | 2007-04-02 A | 2007-04-02 A |  | 100% |  |  |  |  |  |  |  |  |  |  |
| 669 | 1.2.3.7.1.6.4 | Developers Update |  | 1d | 2007-04-02 A | 2007-04-02 A |  | 100% |  |  |  |  |  |  |  |  |  |  |
| 670 | 1.2.3.7.1.7 | Deliver Design document to BAH (Task 3.4) | milestone | 0d | 2007-04-26 A | 2007-04-26 A | 644, 649, 659 | 100% |  |  |  |  |  |  |  |  | 3.4 |  |
| 671 | 1.2.3.7.1.8 | Deliver UML to BAH (Task 3.3) | milestone | 0d | 2007-04-26 A | 2007-04-26 A | 644, 649, 659 | 100% |  |  |  |  |  |  |  |  | 3.3 |  |
| 672 | 1.2.3.7.1.9 | Formal Review by BAH |  | 10d | 2007-04-27 A | 2007-05-10 A | 671 | 100% |  |  |  |  |  |  |  |  |  |  |
| 673 | 1.2.3.7.2 | **Modeling** |  | 5d | 2007-04-02 A | 2007-04-06 A |  | 100% |  |  |  |  |  |  | 96h | 96h |  | BRIDG |
| 674 | 1.2.3.7.2.1 | Update Implementation Model |  | 2d | 2007-04-04 A | 2007-04-05 A | 584 | 100% |  |  |  |  |  | Ram | 16h | 16h |  |  |
| 675 | 1.2.3.7.2.2 | Update Domain Analysis Model/BRIDG Harmonization |  | 5d | 2007-04-02 A | 2007-04-06 A |  | 100% |  |  |  |  |  | Sean | 40h | 40h |  |  |
| 676 | 1.2.3.7.2.3 | Create/Update Dynamic Models (BRIDG) |  | 5d | 2007-04-02 A | 2007-04-06 A |  | 100% |  |  |  |  |  | Sean | 40h | 40h |  |  |
| 677 | 1.2.3.7.3 | **Semantic Integration** |  | 6d | 2007-04-02 A | 2007-04-09 A |  | 100% |  | 2007-01-12 | 2007-01-26 | 11d |  |  | 72h | 72h |  | VCDE |
| 678 | 1.2.3.7.3.1 | CDE Gap Analysis/Report |  | 5d | 2007-04-02 A | 2007-04-06 A |  | 100% |  | 2007-01-12 | 2007-01-18 | 5d |  | Sean | 40h | 40h |  |  |
| 679 | 1.2.3.7.3.2 | Meeting with VCDE |  | 1d | 2007-04-09 A | 2007-04-09 A | 678 | 100% |  | 2007-01-26 | 2007-01-26 | 0d |  | Sean; Brian D; Lynne W; Brenda M | 32h | 32h |  |  |
| 680 | 1.2.3.8 | **Implementation (Iter-3)** |  | 19d | 2007-04-02 A | 2007-04-26 |  | 93% | 1.3d |  |  |  | 123d |  | 968h | 896h |  |  |
| 681 | 1.2.3.8.1 | **Web interface** |  | 5d | 2007-04-02 A | 2007-04-06 A |  | 100% |  |  |  |  |  |  | 40h | 40h |  |  |
| 682 | 1.2.3.8.1.1 | UI Refinement |  | 5d | 2007-04-02 A | 2007-04-06 A |  | 100% |  |  |  |  |  | Richard | 40h | 40h |  |  |
| 683 | 1.2.3.8.2 | **Bug Fixes** |  | 6d | 2007-04-02 A | 2007-04-09 A |  | 100% |  |  |  |  |  |  |  |  |  |  |
| 684 | 1.2.3.8.2.1 | Review and assignment of Bugs from prior iteration |  | 1d | 2007-04-02 A | 2007-04-02 A |  | 100% |  |  |  |  |  |  |  |  |  |  |
| 685 | 1.2.3.8.2.2 | Bug Fixes |  | 5d | 2007-04-03 A | 2007-04-09 A | 684 | 100% |  |  |  |  |  |  |  |  |  |  |

| ID | WBS | Task | Duration | Start | Finish | Predecessors | Complete | Remaining | Total slack | Resources | Work | Actual work | Text3 |
| --- | --- | --- | --- | --- | --- | --- | --- | --- | --- | --- | --- | --- | --- |
| 686 | 1.2.3.8.3 | **Implement Use Cases** | 17d | 2007-04-04 A | 2007-04-26 | 584 | 93% | 1.26d | 123d |  | 928h | 856h |  |
| 687 | 1.2.3.8.3.1 | **AE Data Collection (cont'd)** | 17d | 2007-04-04 A | 2007-04-26 |  | 86% | 2.39d | 123d |  | 512h | 440h |  |
| 688 | 1.2.3.8.3.1.1 | Complete Attribution Page | 3d | 2007-04-04 A | 2007-04-06 A |  | 100% |  |  | Rhett | 24h | 24h |  |
| 689 | 1.2.3.8.3.1.2 | Treatment | 2d | 2007-04-09 A | 2007-04-10 A | 688 | 100% |  |  | Rhett | 16h | 16h |  |
| 690 | 1.2.3.8.3.1.3 | Concomitant Medications | 2d | 2007-04-11 A | 2007-04-12 A | 689 | 100% |  |  | Rhett | 16h | 16h |  |
| 691 | 1.2.3.8.3.1.4 | Prior Therapies | 2d | 2007-04-13 A | 2007-04-16 A | 690 | 100% |  |  | Rhett | 16h | 16h |  |
| 692 | 1.2.3.8.3.1.5 | Other Contributing Causes | 2d | 2007-04-17 A | 2007-04-18 A | 691 | 100% |  |  | Rhett | 16h | 16h |  |
| 693 | 1.2.3.8.3.1.6 | Agents | 3d | 2007-04-19 A | 2007-04-23 A | 692 | 100% |  |  | Rhett | 24h | 24h |  |
| 694 | 1.2.3.8.3.1.7 | Pre-existing conditions | 2d | 2007-04-24 | 2007-04-25 | 693 |  |  | 124d | Rhett | 16h |  |  |
| 695 | 1.2.3.8.3.1.8 | Sites of Metastatic disease | 1d | 2007-04-26 A | 2007-04-26 A | 694 | 100% |  |  | Rhett | 8h | 8h |  |
| 696 | 1.2.3.8.3.1.9 | Reporter Information | 2d | 2007-04-04 A | 2007-04-05 A |  | 100% |  |  | Kulasekaran | 16h | 16h |  |
| 697 | 1.2.3.8.3.1.10 | Patient Information | 2d | 2007-04-04 A | 2007-04-05 A |  | 100% |  |  | Kulasekaran | 16h | 16h |  |
| 698 | 1.2.3.8.3.1.11 | Additional Information | 1d | 2007-04-04 A | 2007-04-04 A |  | 100% |  |  | Kulasekaran | 8h | 8h |  |
| 699 | 1.2.3.8.3.1.12 | Implement O/R mapping | 5d | 2007-04-04 A | 2007-04-10 A |  | 100% |  |  | Rhett | 40h | 40h |  |
| 700 | 1.2.3.8.3.1.13 | Develop DAO | 10d | 2007-04-06 A | 2007-04-19 A | 699SS+2d | 100% |  |  | Rhett | 80h | 80h |  |
| 701 | 1.2.3.8.3.1.14 | Develop Service | 10d | 2007-04-10 A | 2007-04-23 A | 700SS+2d | 100% |  |  | Rhett | 80h | 80h |  |
| 702 | 1.2.3.8.3.1.15 | Develop controller and command objects | 10d | 2007-04-12 A | 2007-04-25 A | 701SS+2d | 100% |  |  | Rhett | 80h | 80h |  |
| 703 | 1.2.3.8.3.1.16 | Develop JUnit test cases | 7d | 2007-04-16 | 2007-04-24 | 702SS+2d |  |  | 125d | Rhett | 56h |  |  |
| 704 | 1.2.3.8.3.2 | **Triggers and Notification (cont'd)** | 16d | 2007-04-04 A | 2007-04-25 A |  | 100% |  |  |  | 336h | 336h | Sponsor Level Rules |
| 705 | 1.2.3.8.3.2.1 | Implement O/R mapping | 5d | 2007-04-04 A | 2007-04-10 A |  | 100% |  |  | Sujith | 40h | 40h |  |
| 706 | 1.2.3.8.3.2.2 | Develop DAO | 10d | 2007-04-06 A | 2007-04-19 A | 705SS+2d | 100% |  |  | Sujith | 80h | 80h |  |
| 707 | 1.2.3.8.3.2.3 | Develop Service | 10d | 2007-04-10 A | 2007-04-23 A | 706SS+2d | 100% |  |  | Sujith | 80h | 80h |  |
| 708 | 1.2.3.8.3.2.4 | Develop controller and command objects | 10d | 2007-04-12 A | 2007-04-25 A | 707SS+2d | 100% |  |  | Sujith | 80h | 80h |  |
| 709 | 1.2.3.8.3.2.5 | Develop JUnit test cases | 7d | 2007-04-16 A | 2007-04-24 A | 708SS+2d | 100% |  |  | Sujith | 56h | 56h |  |

| ID | WBS | Task | Type | Duration | Start | Finish | Predecessors | Complete | Constraint | Resources | Work | Actual work | Text1 |
| --- | --- | --- | --- | --- | --- | --- | --- | --- | --- | --- | --- | --- | --- |
| 710 | 1.2.3.8.3.3 | **MedDRA 9.0** |  | 5d | 2007-04-11 A | 2007-04-17 A |  | 100% |  |  | 40h | 40h |  |
| 711 | 1.2.3.8.3.3.1 | Implement MedDRA 9.0 into Study Disease |  | 5d | 2007-04-11 A | 2007-04-17 A | 716 | 100% |  | Krikor | 40h | 40h |  |
| 712 | 1.2.3.8.3.4 | **Data Exchange: Import Study/Participant Data (cont'd)** |  | 5d | 2007-04-18 A | 2007-04-24 A |  | 100% |  |  |  |  |  |
| 713 | 1.2.3.8.3.4.1 | Add Diseases to XML import |  | 2d | 2007-04-18 A | 2007-04-19 A | 711 | 100% |  |  |  |  |  |
| 714 | 1.2.3.8.3.4.2 | Add XLS based import soltuion |  | 3d | 2007-04-20 A | 2007-04-24 A | 713 | 100% |  |  |  |  |  |
| 715 | 1.2.3.8.3.5 | **Bulk Routine AE Loading** |  | 5d | 2007-04-04 A | 2007-04-10 A |  | 100% |  |  | 40h | 40h |  |
| 716 | 1.2.3.8.3.5.1 | Create bulk routine AE solution |  | 5d | 2007-04-04 A | 2007-04-10 A |  | 100% |  | Krikor | 40h | 40h |  |
| 717 | 1.2.3.9 | **Testing (Iter-3)** |  | 39d | 2007-04-02 A | 2007-05-24 A |  | 100% |  |  | 400h | 400h |  |
| 718 | 1.2.3.9.1 | **Update Test Plan** |  | 20d | 2007-04-02 A | 2007-04-27 A |  | 100% |  |  | 160h | 160h |  |
| 719 | 1.2.3.9.1.1 | Update Test Plan Document (Task 3.6) |  | 10d | 2007-04-02 A | 2007-04-13 A |  | 100% |  | Ram | 80h | 80h |  |
| 720 | 1.2.3.9.1.2 | Submit to BAH | milestone | 0d | 2007-04-13 A | 2007-04-13 A | 719 | 100% |  | Edmond |  |  | 3.6 |
| 721 | 1.2.3.9.1.3 | Formal Review by BAH |  | 10d | 2007-04-16 A | 2007-04-27 A | 720 | 100% |  | BAH | 80h | 80h |  |
| 722 | 1.2.3.9.2 | **Run Tests** |  | 20d | 2007-04-27 A | 2007-05-24 A |  | 100% |  |  | 240h | 240h |  |
| 723 | 1.2.3.9.2.1 | Testing |  | 5d | 2007-04-27 A | 2007-05-03 A | 680 | 100% |  | Renee; David; Natasha | 120h | 120h |  |
| 724 | 1.2.3.9.2.2 | Submit Test Results Report (Task 3.8) | milestone | 0d | 2007-05-03 A | 2007-05-03 A | 723 | 100% |  | Edmond |  |  |  |
| 725 | 1.2.3.9.2.3 | Formal Review of Test results Report |  | 15d | 2007-05-04 A | 2007-05-24 A | 724 | 100% |  | BAH | 120h | 120h |  |
| 726 | 1.2.3.10 | **Documentation (Iter-3)** |  | 17d | 2007-04-16 A | 2007-05-08 A |  | 100% |  |  | 1024h | 1024h |  |
| 727 | 1.2.3.10.1 | **Installation Guide** |  | 13d | 2007-04-20 A | 2007-05-08 A |  | 100% |  |  | 368h | 368h |  |
| 728 | 1.2.3.10.1.1 | Update Installation Guide |  | 3d | 2007-04-20 A | 2007-04-24 A |  | 100% | start no earlier than 2007-04-20 | Rhett; Edmond | 48h | 48h |  |
| 729 | 1.2.3.10.1.2 | Submit to BAH/Adopters | milestone | 0d | 2007-04-24 A | 2007-04-24 A | 728 | 100% |  | Edmond |  |  |  |
| 730 | 1.2.3.10.1.3 | Review of Installation Guide |  | 10d | 2007-04-25 A | 2007-05-08 A | 729 | 100% |  | BAH; NCI; Mayo; WF | 320h | 320h |  |
| 731 | 1.2.3.10.2 | **Administrators Guide** |  | 17d | 2007-04-16 A | 2007-05-08 A |  | 100% |  |  | 320h | 320h |  |
| 732 | 1.2.3.10.2.1 | Update Administrators Guide |  | 7d | 2007-04-16 A | 2007-04-24 A |  | 100% | start no earlier than 2007-04-16 |  |  |  |  |
| 733 | 1.2.3.10.2.2 | Submit to BAH | milestone | 0d | 2007-04-24 A | 2007-04-24 A | 732 | 100% |  | Edmond |  |  |  |
| 734 | 1.2.3.10.2.3 | Review of Admin Guide |  | 10d | 2007-04-25 A | 2007-05-08 A | 733 | 100% |  | BAH; NCI; Mayo; WF | 320h | 320h |  |

| ID | WBS | Task | Type | Duration | Start | Finish | Predecessors | Complete | Remaining | Baseline start | Baseline finish | Baseline duration | Total slack | Constraint | Resources | Work | Actual work |
| --- | --- | --- | --- | --- | --- | --- | --- | --- | --- | --- | --- | --- | --- | --- | --- | --- | --- |
| 735 | 1.2.3.10.3 | **Release Notes** |  | 12d | 2007-04-23 A | 2007-05-08 A |  | 100% |  |  |  |  |  |  |  | 336h | 336h |
| 736 | 1.2.3.10.3.1 | Update Release Notes |  | 2d | 2007-04-23 A | 2007-04-24 A |  | 100% |  |  |  |  |  | start no earlier than 2007-04-23 | Edmond | 16h | 16h |
| 737 | 1.2.3.10.3.2 | Submit to BAH | milestone | 0d | 2007-04-24 A | 2007-04-24 A | 736 | 100% |  |  |  |  |  |  | Edmond |  |  |
| 738 | 1.2.3.10.3.3 | Review of Release Notes |  | 10d | 2007-04-25 A | 2007-05-08 A | 737 | 100% |  |  |  |  |  |  | BAH; NCI; Mayo; WF | 320h | 320h |
| 739 | 1.2.3.11 | **Deployment (Iter-3)** |  | 10d | 2007-05-03 A | 2007-05-17 A |  | 100% |  |  |  |  |  |  |  | 104h | 104h |
| 740 | 1.2.3.11.1 | Submit prototype code (Task 3.5) | milestone | 0d | 2007-05-03 A | 2007-05-03 A | 723 | 100% |  |  |  |  |  |  | Ram |  |  |
| 741 | 1.2.3.11.2 | Formal Review of Code by BAH |  | 10d | 2007-05-04 A | 2007-05-17 A | 740 | 100% |  |  |  |  |  |  | BAH | 80h | 80h |
| 742 | 1.2.3.11.3 | Deploy Prototype for Iteration 1 at Mayo and WF |  | 1d | 2007-05-04 A | 2007-05-04 A | 723 | 100% |  |  |  |  |  |  | Vinay; Mayo; WF | 24h | 24h |
| 743 | 1.2.3.12 | Finish Iteration 3 | milestone | 0d | 2007-05-04 A | 2007-05-04 A | 742 | 100% |  | 2007-03-29 | 2007-04-04 | 5d |  |  |  |  |  |
| 744 | 1.2.4 | **Construction Phase Iteration 4** |  | 33d | 2007-05-01 A | 2007-06-14 |  | 65% | 11.48d | 2007-05-07 | 2007-06-07 | 23d | 88d |  |  | 4288h | 2556h |
| 745 | 1.2.4.1 | Begin Iteration 4 | milestone | 0d | 2007-05-01 A | 2007-05-01 A |  | 100% |  | 2007-05-07 | 2007-05-07 | 0d |  | must start on 2007-05-01 |  |  |  |
| 746 | 1.2.4.2 | **Iteration Planning (Iter-4)** |  | 2d | 2007-05-01 A | 2007-05-02 A |  | 100% |  |  |  |  |  |  |  | 48h | 48h |
| 747 | 1.2.4.2.1 | Review and finalize Ucases and Work List for Iteration |  | 1d | 2007-05-01 A | 2007-05-01 A | 745 | 100% |  |  |  |  |  |  | Edmond; Ram; Vinay | 24h | 24h |
| 748 | 1.2.4.2.2 | Review and finalize assignments for Iteration |  | 1d | 2007-05-02 A | 2007-05-02 A | 747 | 100% |  |  |  |  |  |  | Edmond; Ram; Vinay | 24h | 24h |
| 749 | 1.2.4.3 | **Project Management (Iter-4)** |  | 21d | 2007-05-03 A | 2007-05-31 |  | 95% | 1.05d |  |  |  | 0d |  |  | 128h | 120h |
| 750 | 1.2.4.3.1 | Update Project Plan |  | 3d | 2007-05-03 A | 2007-05-07 A | 748 | 100% |  |  |  |  |  |  | Edmond | 24h | 24h |
| 751 | 1.2.4.3.2 | **CaAERS CCB (Task 2.10)** |  | 1d | 2007-05-07 | 2007-05-07 |  |  |  |  |  |  | 0d |  |  | 8h |  |
| 752 | 1.2.4.3.2.1 | CCB Meetings |  | 1d | 2007-05-07 | 2007-05-07 |  |  |  |  |  |  | 0d | must start on 2007-05-07 | Edmond | 8h |  |
| 753 | 1.2.4.3.3 | **Weekly Team Meeting** |  | 16d | 2007-05-07 A | 2007-05-28 A |  | 100% |  |  |  |  |  |  |  |  |  |
| 754 | 1.2.4.3.3.1 | Weekly Team Meeting 1 |  | 1d | 2007-05-07 A | 2007-05-07 A |  | 100% |  |  |  |  |  | start no earlier than 2007-05-07 |  |  |  |
| 755 | 1.2.4.3.3.2 | Weekly Team Meeting 2 |  | 1d | 2007-05-14 A | 2007-05-14 A |  | 100% |  |  |  |  |  | start no earlier than 2007-05-14 |  |  |  |
| 756 | 1.2.4.3.3.3 | Weekly Team Meeting 3 |  | 1d | 2007-05-21 A | 2007-05-21 A |  | 100% |  |  |  |  |  | start no earlier than 2007-05-21 |  |  |  |
| 757 | 1.2.4.3.3.4 | Weekly Team Meeting 4 |  | 1d | 2007-05-28 A | 2007-05-28 A |  | 100% |  |  |  |  |  | start no earlier than 2007-05-28 |  |  |  |
| 758 | 1.2.4.3.4 | **Status and Risk Reporting** |  | 20d | 2007-05-04 A | 2007-05-31 A |  | 100% |  |  |  |  |  |  |  | 64h | 64h |
| 759 | 1.2.4.3.4.1 | Bi-weekly Risk Update in caMP (Task 1.4) |  | 1d | 2007-05-04 A | 2007-05-04 A |  | 100% |  |  |  |  |  | start no earlier than 2007-05-04 | Edmond | 8h | 8h |
| 760 | 1.2.4.3.4.2 | Bi-weekly Risk Matrix Update Meeting |  | 1d | 2007-05-04 A | 2007-05-04 A |  | 100% |  |  |  |  |  | start no earlier than 2007-05-04 | Edmond | 8h | 8h |
| 761 | 1.2.4.3.4.3 | Bi-weekly Risk Update in caMP (Task 1.4) |  | 1d | 2007-05-18 A | 2007-05-18 A |  | 100% |  |  |  |  |  | start no earlier than 2007-05-18 | Edmond | 8h | 8h |
| 762 | 1.2.4.3.4.4 | Bi-weekly Risk Matrix Update Meeting |  | 1d | 2007-05-18 A | 2007-05-18 A |  | 100% |  |  |  |  |  | start no earlier than 2007-05-18 | Edmond | 8h | 8h |
| 763 | 1.2.4.3.4.5 | Bi-weekly Status Update Meeting with BAH/NCI |  | 1d | 2007-05-11 A | 2007-05-11 A |  | 100% |  |  |  |  |  | start no earlier than 2007-05-11 | Edmond | 8h | 8h |
| 764 | 1.2.4.3.4.6 | Bi-weekly Status Update Meeting with BAH/NCI |  | 1d | 2007-05-25 A | 2007-05-25 A |  | 100% |  |  |  |  |  | start no earlier than 2007-05-25 | Edmond | 8h | 8h |
| 765 | 1.2.4.3.4.7 | Monthly Status Report (Task 1.3) |  | 1d | 2007-05-31 A | 2007-05-31 A |  | 100% |  |  |  |  |  | must finish on 2007-05-31 | Edmond | 8h | 8h |
| 766 | 1.2.4.3.4.8 | Monthly Risk Matrix Update (Task 1.3) |  | 1d | 2007-05-31 A | 2007-05-31 A | 765SS | 100% |  |  |  |  |  |  | Edmond | 8h | 8h |

Notes:
- 740: Text1: 3.5
- 744: Text1: 1.1, 1.2, 1.3, 1.4, 1.7, 2.10, 3.1, 3.2, 3.3, 3.4, 3.5, 3.6, 3.8, 3.10, 3.13, 3.14 / Text3: F2F, AE Data Capture for DCP Trials, Batch AE Workflow, Triggers/Notifications, Import,Reports(Form Generator)
- 751: Text1: 2.10

| ID | WBS | Task | Type | Duration | Start | Finish | Predecessors | Complete | Remaining | Total slack | Free slack | Constraint | Resources | Work | Actual work |
| --- | --- | --- | --- | --- | --- | --- | --- | --- | --- | --- | --- | --- | --- | --- | --- |
| 767 | 1.2.4.3.5 | **Collaboration Management Activities** |  | 21d | 2007-05-03 A | 2007-05-31 A |  | 100% |  |  |  |  |  | 32h | 32h |
| 768 | 1.2.4.3.5.1 | Adopters Mtg |  | 1d | 2007-05-03 A | 2007-05-03 A |  | 100% |  |  |  | start no earlier than 2007-05-03 | Edmond | 8h | 8h |
| 769 | 1.2.4.3.5.2 | Bi-Weekly AE SIG Meeting |  | 1d | 2007-05-10 A | 2007-05-10 A |  | 100% |  |  |  | start no earlier than 2007-05-10 | Edmond | 8h | 8h |
| 770 | 1.2.4.3.5.3 | Adopters Mtg |  | 1d | 2007-05-18 A | 2007-05-18 A |  | 100% |  |  |  | start no earlier than 2007-05-18 | Edmond | 8h | 8h |
| 771 | 1.2.4.3.5.4 | Bi-Weekly AE SIG Meeting |  | 1d | 2007-05-25 A | 2007-05-25 A |  | 100% |  |  |  | start no earlier than 2007-05-25 | Edmond | 8h | 8h |
| 772 | 1.2.4.3.5.5 | Adopters Colloboration Report | milestone | 0d | 2007-05-31 A | 2007-05-31 A |  | 100% |  |  |  | must finish on 2007-05-31 |  |  |  |
| 773 | 1.2.4.4 | **Environment (Iter-4)** |  | 3d | 2007-05-03 A | 2007-05-07 A |  | 100% |  |  |  |  |  | 24h | 24h |
| 774 | 1.2.4.4.1 | Update Environment |  | 3d | 2007-05-03 A | 2007-05-07 A | 748 | 100% |  |  |  |  | Vinay | 24h | 24h |
| 775 | 1.2.4.5 | **SCM (Iter-4)** |  | 5d | 2007-05-03 A | 2007-05-09 A |  | 100% |  |  |  |  |  | 40h | 40h |
| 776 | 1.2.4.5.1 | Manage Repository |  | 5d | 2007-05-03 A | 2007-05-09 A | 748 | 100% |  |  |  |  | Rhett | 40h | 40h |
| 777 | 1.2.4.6 | **Requirements (Iter-4)** |  | 30d | 2007-05-03 A | 2007-06-13 | 748 | 18% | 24.46d | 89d |  |  |  | 896h | 216h |
| 778 | 1.2.4.6.1 | **Requirements Gathering and Elucidation** |  | 2d | 2007-05-03 A | 2007-05-04 A |  | 100% |  |  |  |  |  | 16h | 16h |
| 779 | 1.2.4.6.1.1 | 1st Construction Phase F2F Meeting |  | 2d | 2007-05-03 A | 2007-05-04 A |  | 100% |  |  |  | must start on 2007-05-03 | All | 16h | 16h |
| 780 | 1.2.4.6.2 | **Updated Use Case Specification and Realization** |  | 30d | 2007-05-03 | 2007-06-13 |  |  |  | 89d |  |  |  | 280h |  |
| 781 | 1.2.4.6.2.1 | Developer draft |  | 5d | 2007-05-03 | 2007-05-09 |  |  |  | 89d | 0d |  | Sean | 40h |  |
| 782 | 1.2.4.6.2.2 | Adopters/Collobators Review |  | 5d | 2007-05-10 | 2007-05-16 | 781 |  |  | 89d | 0d |  | Mayo; WF | 80h |  |
| 783 | 1.2.4.6.2.3 | Update Use Case Document |  | 5d | 2007-05-17 | 2007-05-23 | 782 |  |  | 89d | 0d |  | Sean | 40h |  |
| 784 | 1.2.4.6.2.4 | Submit Updated Use Case Document to BAH (Task 3.1) | milestone | 0d | 2007-05-23 | 2007-05-23 | 783 |  |  | 89d | 0d |  | Edmond |  |  |
| 785 | 1.2.4.6.2.5 | Formal Review of Updated Use Case Document |  | 15d | 2007-05-24 | 2007-06-13 | 784 |  |  | 89d |  |  | BAH | 120h |  |
| 786 | 1.2.4.6.3 | **Updated SRS Document** |  | 30d | 2007-05-03 | 2007-06-13 |  |  |  | 89d |  |  |  | 280h |  |
| 787 | 1.2.4.6.3.1 | Developer draft |  | 5d | 2007-05-03 | 2007-05-09 |  |  |  | 89d | 0d |  | Sean | 40h |  |
| 788 | 1.2.4.6.3.2 | Adopters/Collobators Review |  | 5d | 2007-05-10 | 2007-05-16 | 787 |  |  | 89d | 0d |  | Mayo; WF | 80h |  |
| 789 | 1.2.4.6.3.3 | Update SRS |  | 5d | 2007-05-17 | 2007-05-23 | 788 |  |  | 89d | 0d |  | Sean | 40h |  |
| 790 | 1.2.4.6.3.4 | Submit Updated SRS Document to BAH (Task 3.2) | milestone | 0d | 2007-05-23 | 2007-05-23 | 789 |  |  | 89d | 0d |  | Mayo; WF |  |  |
| 791 | 1.2.4.6.3.5 | Formal Review of Updated SRS |  | 15d | 2007-05-24 | 2007-06-13 | 790 |  |  | 89d |  |  | BAH | 120h |  |

| ID | WBS | Task | Type | Duration | Start | Finish | Predecessors | Complete | Remaining | Total slack | Free slack | Resources | Work | Actual work |
| --- | --- | --- | --- | --- | --- | --- | --- | --- | --- | --- | --- | --- | --- | --- |
| 792 | 1.2.4.6.4 | **Updated UML Static Class Diagram Model** |  | 30d | 2007-05-03 A | 2007-06-13 |  | 50% | 15d | 89d |  |  | 320h | 200h |
| 793 | 1.2.4.6.4.1 | Developer draft |  | 5d | 2007-05-03 A | 2007-05-09 A |  | 100% |  |  |  | Ram; Sean | 80h | 80h |
| 794 | 1.2.4.6.4.2 | Adopters/Collobators Review |  | 5d | 2007-05-10 A | 2007-05-16 A | 793 | 100% |  |  |  | Mayo; WF | 80h | 80h |
| 795 | 1.2.4.6.4.3 | Update UML |  | 5d | 2007-05-17 A | 2007-05-23 A | 794 | 100% |  |  |  | Sean | 40h | 40h |
| 796 | 1.2.4.6.4.4 | Submit UML to BAH (Task 3.3) | milestone | 0d | 2007-05-23 A | 2007-05-23 A | 795 | 100% |  |  |  | Edmond |  |  |
| 797 | 1.2.4.6.4.5 | Formal Review of UML |  | 15d | 2007-05-24 | 2007-06-13 | 796 |  |  | 89d |  | BAH | 120h |  |
| 798 | 1.2.4.7 | **Analysis and Design (Iter-4)** |  | 27d | 2007-05-07 A | 2007-06-12 | 778 | 84% | 4.27d | 90d |  |  | 776h | 676h |
| 799 | 1.2.4.7.1 | **Design Documents** |  | 27d | 2007-05-07 A | 2007-06-12 |  | 84% | 4.43d | 90d |  |  | 608h | 528h |
| 800 | 1.2.4.7.1.1 | **Routine AE** |  | 17d | 2007-05-07 A | 2007-05-29 A |  | 100% |  |  |  |  | 176h | 176h |
| 801 | 1.2.4.7.1.1.1 | Develop appropriate UML Artifacts |  | 5d | 2007-05-07 A | 2007-05-11 A |  | 100% |  |  |  | Krikor | 40h | 40h |
| 802 | 1.2.4.7.1.1.2 | Create Design Document |  | 5d | 2007-05-14 A | 2007-05-18 A | 801 | 100% |  |  |  | Krikor | 40h | 40h |
| 803 | 1.2.4.7.1.1.3 | Adopters/Collaborators Review |  | 5d | 2007-05-21 A | 2007-05-25 A | 802 | 100% |  |  |  | Mayo; WF | 80h | 80h |
| 804 | 1.2.4.7.1.1.4 | Developers Update |  | 2d | 2007-05-28 A | 2007-05-29 A | 803 | 100% |  |  |  | Krikor | 16h | 16h |
| 805 | 1.2.4.7.1.2 | **AE Data Collection (DCP)** |  | 17d | 2007-05-07 A | 2007-05-29 A |  | 100% |  |  |  |  | 176h | 176h |
| 806 | 1.2.4.7.1.2.1 | Develop appropriate UML Artifacts |  | 5d | 2007-05-07 A | 2007-05-11 A |  | 100% |  |  |  | Rhett | 40h | 40h |
| 807 | 1.2.4.7.1.2.2 | Create Design Document |  | 5d | 2007-05-14 A | 2007-05-18 A | 806 | 100% |  |  |  | Rhett | 40h | 40h |
| 808 | 1.2.4.7.1.2.3 | Adopters/Collaborators Review |  | 5d | 2007-05-21 A | 2007-05-25 A | 807 | 100% |  |  |  | Mayo; WF | 80h | 80h |
| 809 | 1.2.4.7.1.2.4 | Developers Update |  | 2d | 2007-05-28 A | 2007-05-29 A | 808 | 100% |  |  |  | Rhett | 16h | 16h |
| 810 | 1.2.4.7.1.3 | **AE Notification Trigger (cont'd)** |  | 17d | 2007-05-07 A | 2007-05-29 A |  | 100% |  |  |  |  | 176h | 176h |
| 811 | 1.2.4.7.1.3.1 | Develop appropriate UML Artifacts |  | 5d | 2007-05-07 A | 2007-05-11 A |  | 100% |  |  |  | Sujith | 40h | 40h |
| 812 | 1.2.4.7.1.3.2 | Create Design Document |  | 5d | 2007-05-14 A | 2007-05-18 A | 811 | 100% |  |  |  | Sujith | 40h | 40h |
| 813 | 1.2.4.7.1.3.3 | Adopters/Collaborators Review |  | 5d | 2007-05-21 A | 2007-05-25 A | 812 | 100% |  |  |  | Mayo; WF | 80h | 80h |
| 814 | 1.2.4.7.1.3.4 | Developers Update |  | 2d | 2007-05-28 A | 2007-05-29 A | 813 | 100% |  |  |  | Sujith | 16h | 16h |
| 815 | 1.2.4.7.1.4 | Deliver Design document to BAH (Task 3.4) | milestone | 0d | 2007-05-29 A | 2007-05-29 A | 804, 809, 814 | 100% |  |  |  | Edmond |  |  |
| 816 | 1.2.4.7.1.5 | Deliver UML to BAH (Task 3.3) | milestone | 0d | 2007-05-29 | 2007-05-29 | 804, 809, 814 |  |  | 90d | 0d | Edmond |  |  |
| 817 | 1.2.4.7.1.6 | Formal Review by BAH |  | 10d | 2007-05-30 | 2007-06-12 | 816 |  |  | 90d |  | BAH | 80h |  |

| ID | WBS | Task | Duration | Start | Finish | Predecessors | Complete | Remaining | Baseline start | Baseline finish | Baseline duration | Total slack | Resources | Work | Actual work | Text2 |
| --- | --- | --- | --- | --- | --- | --- | --- | --- | --- | --- | --- | --- | --- | --- | --- | --- |
| 818 | 1.2.4.7.2 | **Modeling** | 5d | 2007-05-07 A | 2007-05-11 A |  | 100% |  |  |  |  |  |  | 96h | 96h | BRIDG |
| 819 | 1.2.4.7.2.1 | Update Implementation Model | 2d | 2007-05-07 A | 2007-05-08 A |  | 100% |  |  |  |  |  | Ram | 16h | 16h |  |
| 820 | 1.2.4.7.2.2 | Update Domain Analysis Model/BRIDG Harmonization | 5d | 2007-05-07 A | 2007-05-11 A |  | 100% |  |  |  |  |  | Sean | 40h | 40h |  |
| 821 | 1.2.4.7.2.3 | Create/Update Dynamic Models (BRIDG) | 5d | 2007-05-07 A | 2007-05-11 A |  | 100% |  |  |  |  |  | Sean | 40h | 40h |  |
| 822 | 1.2.4.7.3 | **Semantic Interoperability** | 6d | 2007-05-07 A | 2007-05-14 |  | 58% | 2.5d | 2007-01-12 | 2007-01-26 | 11d | 111d |  | 72h | 52h | VCDE |
| 823 | 1.2.4.7.3.1 | CDE Gap Analysis/Report | 5d | 2007-05-07 A | 2007-05-11 |  | 50% | 2.5d | 2007-01-12 | 2007-01-18 | 5d | 112d | Sean | 40h | 20h |  |
| 824 | 1.2.4.7.3.2 | Meeting with VCDE | 1d | 2007-05-14 A | 2007-05-14 A | 823 | 100% |  | 2007-01-26 | 2007-01-26 | 0d |  | Sean; Brian D; Lynne W; Brenda M | 32h | 32h |  |
| 825 | 1.2.4.8 | **Implementation (Iter-4)** | 19d | 2007-05-07 A | 2007-05-31 A | 778 | 100% |  |  |  |  |  |  | 1152h | 1152h |  |
| 826 | 1.2.4.8.1 | **Web interface** | 5d | 2007-05-07 A | 2007-05-11 A |  | 100% |  |  |  |  |  |  | 40h | 40h |  |
| 827 | 1.2.4.8.1.1 | UI Refinement | 5d | 2007-05-07 A | 2007-05-11 A |  | 100% |  |  |  |  |  | Richard | 40h | 40h |  |
| 828 | 1.2.4.8.2 | **Bug Fixes** | 6d | 2007-05-07 A | 2007-05-14 A |  | 100% |  |  |  |  |  |  |  |  |  |
| 829 | 1.2.4.8.2.1 | Review and assignment of Bugs from prior iteration | 1d | 2007-05-07 A | 2007-05-07 A |  | 100% |  |  |  |  |  |  |  |  |  |
| 830 | 1.2.4.8.2.2 | Bug Fixes | 5d | 2007-05-08 A | 2007-05-14 A | 829 | 100% |  |  |  |  |  |  |  |  |  |
| 831 | 1.2.4.8.3 | **Implement Use Cases** | 19d | 2007-05-07 A | 2007-05-31 A |  | 100% |  |  |  |  |  |  | 1112h | 1112h |  |
| 832 | 1.2.4.8.3.1 | **Routine AE** | 16d | 2007-05-07 A | 2007-05-28 A |  | 100% |  |  |  |  |  |  | 336h | 336h |  |
| 833 | 1.2.4.8.3.1.1 | Implement O/R mapping | 5d | 2007-05-07 A | 2007-05-11 A |  | 100% |  |  |  |  |  | Krikor | 40h | 40h |  |
| 834 | 1.2.4.8.3.1.2 | Develop DAO | 10d | 2007-05-09 A | 2007-05-22 A | 833SS+2d | 100% |  |  |  |  |  | Krikor | 80h | 80h |  |
| 835 | 1.2.4.8.3.1.3 | Develop Service | 10d | 2007-05-11 A | 2007-05-24 A | 834SS+2d | 100% |  |  |  |  |  | Krikor | 80h | 80h |  |
| 836 | 1.2.4.8.3.1.4 | Develop controller and command objects | 10d | 2007-05-15 A | 2007-05-28 A | 835SS+2d | 100% |  |  |  |  |  | Krikor | 80h | 80h |  |
| 837 | 1.2.4.8.3.1.5 | Develop JUnit test cases | 7d | 2007-05-17 A | 2007-05-25 A | 836SS+2d | 100% |  |  |  |  |  | Krikor | 56h | 56h |  |
| 838 | 1.2.4.8.3.2 | **CTEP Expedited AE Data Capture Workflow (cont'd)** | 11d | 2007-05-07 A | 2007-05-21 A |  | 100% |  |  |  |  |  |  | 136h | 136h |  |
| 839 | 1.2.4.8.3.2.1 | Implement O/R mapping | 5d | 2007-05-07 A | 2007-05-11 A |  | 100% |  |  |  |  |  | Rhett | 40h | 40h |  |
| 840 | 1.2.4.8.3.2.2 | Develop DAO | 3d | 2007-05-09 A | 2007-05-11 A | 839SS+2d | 100% |  |  |  |  |  | Rhett | 24h | 24h |  |
| 841 | 1.2.4.8.3.2.3 | Develop Service | 3d | 2007-05-11 A | 2007-05-15 A | 840SS+2d | 100% |  |  |  |  |  | Rhett | 24h | 24h |  |
| 842 | 1.2.4.8.3.2.4 | Develop controller and command objects | 3d | 2007-05-15 A | 2007-05-17 A | 841SS+2d | 100% |  |  |  |  |  | Rhett | 24h | 24h |  |
| 843 | 1.2.4.8.3.2.5 | Develop JUnit test cases | 3d | 2007-05-17 A | 2007-05-21 A | 842SS+2d | 100% |  |  |  |  |  | Rhett | 24h | 24h |  |

| ID | WBS | Task | Type | Duration | Start | Finish | Predecessors | Complete | Remaining | Total slack | Constraint | Resources | Work | Actual work | Text1 |
| --- | --- | --- | --- | --- | --- | --- | --- | --- | --- | --- | --- | --- | --- | --- | --- |
| 844 | 1.2.4.8.3.3 | **Study Level Rules Authoring** |  | 16d | 2007-05-07 A | 2007-05-28 A |  | 100% |  |  |  |  | 336h | 336h |  |
| 845 | 1.2.4.8.3.3.1 | Implement O/R mapping |  | 5d | 2007-05-07 A | 2007-05-11 A |  | 100% |  |  |  | Sujith | 40h | 40h |  |
| 846 | 1.2.4.8.3.3.2 | Develop DAO |  | 10d | 2007-05-09 A | 2007-05-22 A | 845SS+2d | 100% |  |  |  | Sujith | 80h | 80h |  |
| 847 | 1.2.4.8.3.3.3 | Develop Service |  | 10d | 2007-05-11 A | 2007-05-24 A | 846SS+2d | 100% |  |  |  | Sujith | 80h | 80h |  |
| 848 | 1.2.4.8.3.3.4 | Develop controller and command objects |  | 10d | 2007-05-15 A | 2007-05-28 A | 847SS+2d | 100% |  |  |  | Sujith | 80h | 80h |  |
| 849 | 1.2.4.8.3.3.5 | Develop JUnit test cases |  | 7d | 2007-05-17 A | 2007-05-25 A | 848SS+2d | 100% |  |  |  | Sujith | 56h | 56h |  |
| 850 | 1.2.4.8.3.4 | **Report Calendar and Notifications** |  | 19d | 2007-05-07 A | 2007-05-31 A |  | 100% |  |  |  |  | 152h | 152h |  |
| 851 | 1.2.4.8.3.4.1 | Calendar and Email Notification Templates |  | 19d | 2007-05-07 A | 2007-05-31 A |  | 100% |  |  |  | Biju | 152h | 152h |  |
| 852 | 1.2.4.8.3.5 | Data Push to AdEERS |  | 19d | 2007-05-07 A | 2007-05-31 A |  | 100% |  |  |  | Srini | 152h | 152h |  |
| 853 | 1.2.4.9 | **Documentation (Iter-4)** |  | 25d | 2007-05-07 A | 2007-06-08 | 778 | 29% | 17.86d | 92d |  |  | 640h |  |  |
| 854 | 1.2.4.9.1 | **Installation Guide** |  | 15d | 2007-05-21 A | 2007-06-08 |  | 33% | 10d | 92d |  |  | 320h |  |  |
| 855 | 1.2.4.9.1.1 | Update Installation Guide |  | 5d | 2007-05-21 A | 2007-05-25 A |  | 100% |  |  | start no earlier than 2007-05-21 |  |  |  |  |
| 856 | 1.2.4.9.1.2 | Submit to BAH/Adopters | milestone | 0d | 2007-05-25 A | 2007-05-25 A | 855 | 100% |  |  |  | Edmond |  |  |  |
| 857 | 1.2.4.9.1.3 | Review of Installation Guide |  | 10d | 2007-05-28 | 2007-06-08 | 856 |  |  | 92d |  | BAH; NCI; Mayo; WF | 320h |  |  |
| 858 | 1.2.4.9.2 | **Administrators Guide** |  | 15d | 2007-05-07 A | 2007-05-25 |  | 33% | 10d | 102d |  |  | 320h |  |  |
| 859 | 1.2.4.9.2.1 | Update Administrators Guide |  | 5d | 2007-05-07 A | 2007-05-11 A |  | 100% |  |  |  |  |  |  |  |
| 860 | 1.2.4.9.2.2 | Submit to BAH | milestone | 0d | 2007-05-11 A | 2007-05-11 A | 859 | 100% |  |  |  | Edmond |  |  |  |
| 861 | 1.2.4.9.2.3 | Review of Admin Guide |  | 10d | 2007-05-14 | 2007-05-25 | 860 |  |  | 102d |  | BAH; NCI; Mayo; WF | 320h |  |  |
| 862 | 1.2.4.9.3 | **Release Notes** |  | 12d | 2007-05-07 A | 2007-05-22 |  | 17% | 10d | 105d |  |  |  |  |  |
| 863 | 1.2.4.9.3.1 | Update Release Notes |  | 2d | 2007-05-07 A | 2007-05-08 A |  | 100% |  |  |  |  |  |  |  |
| 864 | 1.2.4.9.3.2 | Submit to BAH | milestone | 0d | 2007-05-08 A | 2007-05-08 A | 863 | 100% |  |  |  |  |  |  |  |
| 865 | 1.2.4.9.3.3 | Review of Release Notes |  | 10d | 2007-05-09 | 2007-05-22 | 864 |  |  | 105d |  |  |  |  |  |
| 866 | 1.2.4.10 | **Testing (Iter-4)** |  | 20d | 2007-05-07 A | 2007-06-01 | 778 | 38% | 12.5d | 97d |  |  | 480h | 280h |  |
| 867 | 1.2.4.10.1 | **Test Plan** |  | 15d | 2007-05-07 A | 2007-05-25 |  | 33% | 10d | 102d |  |  | 120h | 40h |  |
| 868 | 1.2.4.10.1.1 | Update Test Plan Document (Task 3.6) |  | 5d | 2007-05-07 A | 2007-05-11 A |  | 100% |  |  |  | Ram | 40h | 40h |  |
| 869 | 1.2.4.10.1.2 | Submit to BAH | milestone | 0d | 2007-05-11 A | 2007-05-11 A | 868 | 100% |  |  |  | Edmond |  |  | 3.6 |
| 870 | 1.2.4.10.1.3 | Formal Review by BAH |  | 10d | 2007-05-14 | 2007-05-25 | 869 |  |  | 102d |  | BAH | 80h |  |  |

| ID | WBS | Task | Type | Duration | Start | Finish | Predecessors | Complete | Remaining | Baseline start | Baseline finish | Baseline duration | Total slack | Free slack | Constraint | Resources | Work | Actual work | Text2 | Text3 |
| --- | --- | --- | --- | --- | --- | --- | --- | --- | --- | --- | --- | --- | --- | --- | --- | --- | --- | --- | --- | --- |
| 871 | 1.2.4.10.2 | **RTM** |  | 5d | 2007-05-07 | 2007-05-11 |  |  |  |  |  |  | 112d |  |  |  | 40h |  |  |  |
| 872 | 1.2.4.10.2.1 | Create RTM |  | 5d | 2007-05-07 | 2007-05-11 |  |  |  |  |  |  | 112d |  |  | Sean | 40h |  |  |  |
| 873 | 1.2.4.10.3 | **Run Tests** |  | 20d | 2007-05-07 A | 2007-06-01 |  | 50% | 10d |  |  |  | 97d |  |  |  | 320h | 240h |  |  |
| 874 | 1.2.4.10.3.1 | Testing |  | 10d | 2007-05-07 A | 2007-05-18 A |  | 100% |  |  |  |  |  |  |  | Renee; David; Natasha | 240h | 240h |  |  |
| 875 | 1.2.4.10.3.2 | Submit Test Results Report (Task 3.7) | milestone | 0d | 2007-05-18 | 2007-05-18 | 874 |  |  |  |  |  | 97d | 0d |  | Edmond |  |  |  |  |
| 876 | 1.2.4.10.3.3 | Formal Review of Test results Report |  | 10d | 2007-05-21 | 2007-06-01 | 875 |  |  |  |  |  | 97d |  |  | BAH | 80h |  |  |  |
| 877 | 1.2.4.11 | **Deployment (Iter-4)** |  | 11d | 2007-05-30 A | 2007-06-14 | 825 |  | 11d |  |  |  | 88d |  |  |  | 104h |  |  |  |
| 878 | 1.2.4.11.1 | Submit prototype code (Task 3.5) | milestone | 0d | 2007-05-30 A | 2007-05-30 A |  | 100% |  |  |  |  |  |  |  | Ram |  |  |  |  |
| 879 | 1.2.4.11.2 | Formal Review of Code by BAH |  | 10d | 2007-06-01 | 2007-06-14 | 878 |  |  |  |  |  | 88d |  |  | BAH | 80h |  |  |  |
| 880 | 1.2.4.11.3 | Deploy Prototype for Iteration 1 at Mayo and WF |  | 1d | 2007-06-01 | 2007-06-01 |  |  |  |  |  |  | 97d |  |  | Vinay; Mayo; WF | 24h |  |  |  |
| 881 | 1.2.4.12 | Finish Iteration 4 | milestone | 0d | 2007-05-31 A | 2007-05-31 A |  | 100% |  | 2007-06-04 | 2007-06-04 | 0d |  |  | must finish on 2007-05-31 |  |  |  |  |  |
| 882 | 1.2.5 | **Construction Phase Iteration 5** |  | 31d? | 2007-06-01 A | 2007-07-13 |  | 2% | 30.41d? | 2007-06-07 | 2007-07-10 | 23d | 67d |  |  |  | 5240h | 90h | BRIDG Harmonization | Import,Export,BatchAE,Process Reports,SystemAdminModule |
| 883 | 1.2.5.1 | Begin Iteration 5 | milestone | 0d | 2007-06-01 | 2007-06-01 |  |  |  | 2007-05-07 | 2007-05-07 | 0d | 0d |  | must start on 2007-06-01 |  |  |  |  |  |
| 884 | 1.2.5.2 | **Iteration Planning (Iter-5)** |  | 2d | 2007-06-01 A | 2007-06-04 A |  | 100% |  |  |  |  |  |  |  |  | 48h | 48h |  |  |
| 885 | 1.2.5.2.1 | Review and finalize Ucases and Work List for Iteration |  | 1d | 2007-06-01 A | 2007-06-01 A | 883 | 100% |  |  |  |  |  |  |  | Edmond; Ram; Vinay | 24h | 24h |  |  |
| 886 | 1.2.5.2.2 | Review and finalize assignments for Iteration |  | 1d | 2007-06-04 A | 2007-06-04 A | 885 | 100% |  |  |  |  |  |  |  | Edmond; Ram; Vinay | 24h | 24h |  |  |
| 887 | 1.2.5.3 | **Project Management (Iter-5)** |  | 20d | 2007-06-04 A | 2007-06-29 |  | 18% | 16.5d |  |  |  | 77d |  |  |  | 128h | 20h |  |  |
| 888 | 1.2.5.3.1 | Update Project Plan |  | 3d | 2007-06-05 A | 2007-06-07 | 886 | 50% | 1.5d |  |  |  | 93d |  |  | Edmond | 24h | 12h |  |  |
| 889 | 1.2.5.3.2 | **CaAERS CCB (Task 2.10)** |  | 1d | 2007-06-04 | 2007-06-04 |  |  |  |  |  |  | 0d |  |  |  | 8h |  |  |  |
| 890 | 1.2.5.3.2.1 | CCB Meetings |  | 1d | 2007-06-04 | 2007-06-04 |  |  |  |  |  |  | 0d |  | must start on 2007-06-04 | Edmond | 8h |  |  |  |
| 891 | 1.2.5.3.3 | **Weekly Team Meeting** |  | 16d | 2007-06-04 A | 2007-06-25 |  | 25% | 12d |  |  |  | 81d |  |  |  |  |  |  |  |
| 892 | 1.2.5.3.3.1 | Weekly Team Meeting 1 |  | 1d | 2007-06-04 A | 2007-06-04 A |  | 100% |  |  |  |  |  |  | start no earlier than 2007-06-04 |  |  |  |  |  |
| 893 | 1.2.5.3.3.2 | Weekly Team Meeting 2 |  | 1d | 2007-06-11 | 2007-06-11 |  |  |  |  |  |  | 91d |  | start no earlier than 2007-06-11 |  |  |  |  |  |
| 894 | 1.2.5.3.3.3 | Weekly Team Meeting 3 |  | 1d | 2007-06-18 | 2007-06-18 |  |  |  |  |  |  | 86d |  | start no earlier than 2007-06-18 |  |  |  |  |  |
| 895 | 1.2.5.3.3.4 | Weekly Team Meeting 4 |  | 1d | 2007-06-25 | 2007-06-25 |  |  |  |  |  |  | 81d |  | start no earlier than 2007-06-25 |  |  |  |  |  |

Notes:
- 878: Text1: 3.5
- 882: Text1: 1.1, 1.2, 1.3, 1.4, 2.10, 3.1, 3.2, 3.3, 3.4, 3.5, 3.6, 3.8, 3.10, 3.13, 3.14
- 889: Text1: 2.10

| ID | WBS | Task | Duration | Start | Finish | Predecessors | Complete | Remaining | Total slack | Free slack | Constraint | Resources | Work | Actual work |
| --- | --- | --- | --- | --- | --- | --- | --- | --- | --- | --- | --- | --- | --- | --- |
| 896 | 1.2.5.3.4 | **Status and Risk Reporting** | 16d | 2007-06-08 A | 2007-06-29 |  | 13% | 14d | 77d |  |  |  | 64h | 8h |
| 897 | 1.2.5.3.4.1 | Bi-weekly Risk Update in caMP (Task 1.4) | 1d | 2007-06-08 A | 2007-06-08 A |  | 100% |  |  |  | start no earlier than 2007-06-08 | Edmond | 8h | 8h |
| 898 | 1.2.5.3.4.2 | Bi-weekly Risk Matrix Update Meeting | 1d | 2007-06-08 | 2007-06-08 |  |  |  | 92d |  | start no earlier than 2007-06-08 | Edmond | 8h |  |
| 899 | 1.2.5.3.4.3 | Bi-weekly Risk Update in caMP (Task 1.4) | 1d | 2007-06-22 | 2007-06-22 |  |  |  | 82d |  | start no earlier than 2007-06-22 | Edmond | 8h |  |
| 900 | 1.2.5.3.4.4 | Bi-weekly Risk Matrix Update Meeting | 1d | 2007-06-22 | 2007-06-22 |  |  |  | 82d |  | start no earlier than 2007-06-22 | Edmond | 8h |  |
| 901 | 1.2.5.3.4.5 | Bi-weekly Status Update Meeting with BAH/NCI | 1d | 2007-06-15 | 2007-06-15 |  |  |  | 87d |  | start no earlier than 2007-06-15 | Edmond | 8h |  |
| 902 | 1.2.5.3.4.6 | Bi-weekly Status Update Meeting with BAH/NCI | 1d | 2007-06-29 | 2007-06-29 |  |  |  | 77d |  | start no earlier than 2007-06-29 | Edmond | 8h |  |
| 903 | 1.2.5.3.4.7 | Monthly Status Report (Task 1.3) | 1d | 2007-06-29 | 2007-06-29 |  |  |  | 77d | 0d | start no earlier than 2007-06-29 | Edmond | 8h |  |
| 904 | 1.2.5.3.4.8 | Monthly Risk Matrix Update (Task 1.3) | 1d | 2007-06-29 | 2007-06-29 | 903SS |  |  | 77d |  | start no earlier than 2007-06-29 | Edmond | 8h |  |
| 905 | 1.2.5.3.5 | **Collaboration Management Activities** | 16d | 2007-06-07 | 2007-06-28 |  |  |  | 78d |  |  |  | 32h |  |
| 906 | 1.2.5.3.5.1 | Adopters Mtg | 1d | 2007-06-07 | 2007-06-07 |  |  |  | 93d |  | start no earlier than 2007-06-07 | Edmond | 8h |  |
| 907 | 1.2.5.3.5.2 | Bi-Weekly AE SIG Meeting | 1d | 2007-06-14 | 2007-06-14 |  |  |  | 88d |  | start no earlier than 2007-06-14 | Edmond | 8h |  |
| 908 | 1.2.5.3.5.3 | Adopters Mtg | 1d | 2007-06-21 | 2007-06-21 |  |  |  | 83d |  | start no earlier than 2007-06-21 | Edmond | 8h |  |
| 909 | 1.2.5.3.5.4 | Bi-Weekly AE SIG Meeting | 1d | 2007-06-28 | 2007-06-28 |  |  |  | 78d |  | start no earlier than 2007-06-28 | Edmond | 8h |  |
| 910 | 1.2.5.4 | **Environment (Iter-5)** | 3d | 2007-06-05 A | 2007-06-07 |  | 50% | 1.5d | 93d |  |  |  | 24h | 12h |
| 911 | 1.2.5.4.1 | Update Environment | 3d | 2007-06-05 A | 2007-06-07 | 886 | 50% | 1.5d | 93d |  |  | Vinay | 24h | 12h |
| 912 | 1.2.5.5 | **SCM (Iter-5)** | 5d | 2007-06-05 A | 2007-06-11 |  | 25% | 3.75d | 91d |  |  |  | 40h | 10h |
| 913 | 1.2.5.5.1 | Manage Repository | 5d | 2007-06-05 A | 2007-06-11 | 886 | 25% | 3.75d | 91d |  |  | Rhett | 40h | 10h |
| 914 | 1.2.5.6 | **Requirements (Iter-5)** | 21d? | 2007-06-05 | 2007-07-03 | 886 |  |  | 75d |  |  |  | 672h |  |
| 915 | 1.2.5.6.1 | **Requirements Gathering and Elucidation** | 2d? | 2007-06-05 | 2007-06-06 |  |  |  | 94d |  |  |  | 48h |  |
| 916 | 1.2.5.6.1.1 | DCP Reqts (Continued) | 1d | 2007-06-05 | 2007-06-05 |  |  |  | 95d |  |  |  |  |  |
| 917 | 1.2.5.6.1.2 | Roles | 1d? | 2007-06-05 | 2007-06-05 |  |  |  | 95d |  |  | Sean | 8h |  |
| 918 | 1.2.5.6.1.3 | Solicited AE's | 2d | 2007-06-05 | 2007-06-06 |  |  |  | 94d |  |  | Sean | 16h |  |
| 919 | 1.2.5.6.1.4 | 2d | 1d | 2007-06-05 | 2007-06-05 |  |  |  | 95d |  |  | Sean; Krikor; Edmond | 24h |  |

| ID | WBS | Task | Type | Duration | Start | Finish | Predecessors | Total slack | Free slack | Resources | Work |
| --- | --- | --- | --- | --- | --- | --- | --- | --- | --- | --- | --- |
| 920 | 1.2.5.6.2 | **Updated Use Case Specification and Realization** |  | 21d | 2007-06-05 | 2007-07-03 |  | 75d |  |  | 208h |
| 921 | 1.2.5.6.2.1 | Developer draft |  | 4d | 2007-06-05 | 2007-06-08 |  | 75d | 0d | Sean | 32h |
| 922 | 1.2.5.6.2.2 | Adopters/Collobators Review |  | 5d | 2007-06-11 | 2007-06-15 | 921 | 75d | 0d | Mayo; WF | 80h |
| 923 | 1.2.5.6.2.3 | Update Use Case Document |  | 2d | 2007-06-18 | 2007-06-19 | 922 | 75d | 0d | Sean | 16h |
| 924 | 1.2.5.6.2.4 | Submit Updated Use Case Document to BAH (Task 3.1) | milestone | 0d | 2007-06-19 | 2007-06-19 | 923 | 75d | 0d | Edmond |  |
| 925 | 1.2.5.6.2.5 | Formal Review of Updated Use Case Document |  | 10d | 2007-06-20 | 2007-07-03 | 924 | 75d |  | BAH | 80h |
| 926 | 1.2.5.6.3 | **Updated SRS Document** |  | 21d | 2007-06-05 | 2007-07-03 |  | 75d |  |  | 208h |
| 927 | 1.2.5.6.3.1 | Developer draft |  | 4d | 2007-06-05 | 2007-06-08 |  | 75d | 0d | Sean | 32h |
| 928 | 1.2.5.6.3.2 | Adopters/Collobators Review |  | 5d | 2007-06-11 | 2007-06-15 | 927 | 75d | 0d | Mayo; WF | 80h |
| 929 | 1.2.5.6.3.3 | Update SRS |  | 2d | 2007-06-18 | 2007-06-19 | 928 | 75d | 0d | Sean | 16h |
| 930 | 1.2.5.6.3.4 | Submit Updated SRS Document to BAH (Task 3.2) | milestone | 0d | 2007-06-19 | 2007-06-19 | 929 | 75d | 0d | Mayo; WF |  |
| 931 | 1.2.5.6.3.5 | Formal Review of Updated SRS |  | 10d | 2007-06-20 | 2007-07-03 | 930 | 75d |  | BAH | 80h |
| 932 | 1.2.5.6.4 | **Updated UML Static Class Diagram Model** |  | 19d | 2007-06-05 | 2007-06-29 |  | 77d |  |  | 208h |
| 933 | 1.2.5.6.4.1 | Developer draft |  | 2d | 2007-06-05 | 2007-06-06 |  | 77d | 0d | Ram; Sean | 32h |
| 934 | 1.2.5.6.4.2 | Adopters/Collobators Review |  | 5d | 2007-06-07 | 2007-06-13 | 933 | 77d | 0d | Mayo; WF | 80h |
| 935 | 1.2.5.6.4.3 | Update UML |  | 2d | 2007-06-14 | 2007-06-15 | 934 | 77d | 0d | Sean | 16h |
| 936 | 1.2.5.6.4.4 | Submit UML to BAH (Task 3.3) | milestone | 0d | 2007-06-15 | 2007-06-15 | 935 | 77d | 0d | Edmond |  |
| 937 | 1.2.5.6.4.5 | Formal Review of UML |  | 10d | 2007-06-18 | 2007-06-29 | 936 | 77d |  | BAH | 80h |
| 938 | 1.2.5.7 | **Analysis and Design (Iter-5)** |  | 22d? | 2007-06-05 | 2007-07-04 | 886 | 74d |  |  | 1400h |
| 939 | 1.2.5.7.1 | **Design Documents** |  | 22d? | 2007-06-05 | 2007-07-04 |  | 74d |  |  | 1264h |
| 940 | 1.2.5.7.1.1 | Study Organizations (model refactoring) |  | 2d | 2007-06-05 | 2007-06-06 |  | 94d |  | Biju | 16h |
| 941 | 1.2.5.7.1.2 | Study Identifiers (model refactoring) |  | 1d? | 2007-06-05 | 2007-06-05 |  | 95d |  | Biju | 8h |
| 942 | 1.2.5.7.1.3 | **Exporting Data** |  | 9d | 2007-06-05 | 2007-06-15 |  | 77d |  |  | 96h |
| 943 | 1.2.5.7.1.3.1 | Develop appropriate UML Artifacts |  | 3d | 2007-06-05 | 2007-06-07 | 886 | 77d | 0d | Krikor | 24h |
| 944 | 1.2.5.7.1.3.2 | Create Design Document |  | 2d | 2007-06-08 | 2007-06-11 | 943 | 77d | 0d | Krikor | 16h |
| 945 | 1.2.5.7.1.3.3 | Adopters/Collaborators Review |  | 3d | 2007-06-12 | 2007-06-14 | 944 | 77d | 0d | Mayo; WF | 48h |
| 946 | 1.2.5.7.1.3.4 | Developers Update |  | 1d | 2007-06-15 | 2007-06-15 | 945 | 77d | 3d | Krikor | 8h |

| ID | WBS | Task | Type | Duration | Start | Finish | Predecessors | Total slack | Free slack | Resources | Work |
| --- | --- | --- | --- | --- | --- | --- | --- | --- | --- | --- | --- |
| 947 | 1.2.5.7.1.4 | **Candidate AE** |  | 16d | 2007-06-05 | 2007-06-26 |  | 80d |  |  | 336h |
| 948 | 1.2.5.7.1.4.1 | Implement O/R mapping |  | 5d | 2007-06-05 | 2007-06-11 |  | 80d | 0d | Krikor | 40h |
| 949 | 1.2.5.7.1.4.2 | Develop DAO |  | 10d | 2007-06-07 | 2007-06-20 | 948SS+2d | 80d | 0d | Krikor | 80h |
| 950 | 1.2.5.7.1.4.3 | Develop Service |  | 10d | 2007-06-11 | 2007-06-22 | 949SS+2d | 80d | 0d | Krikor | 80h |
| 951 | 1.2.5.7.1.4.4 | Develop controller and command objects |  | 10d | 2007-06-13 | 2007-06-26 | 950SS+2d | 80d | 0d | Krikor | 80h |
| 952 | 1.2.5.7.1.4.5 | Develop JUnit test cases |  | 7d | 2007-06-15 | 2007-06-25 | 951SS+2d | 81d |  | Krikor | 56h |
| 953 | 1.2.5.7.1.5 | **Solicted AE** |  | 16d | 2007-06-05 | 2007-06-26 |  | 80d |  |  | 336h |
| 954 | 1.2.5.7.1.5.1 | Implement O/R mapping |  | 5d | 2007-06-05 | 2007-06-11 |  | 80d | 0d | Krikor | 40h |
| 955 | 1.2.5.7.1.5.2 | Develop DAO |  | 10d | 2007-06-07 | 2007-06-20 | 954SS+2d | 80d | 0d | Krikor | 80h |
| 956 | 1.2.5.7.1.5.3 | Develop Service |  | 10d | 2007-06-11 | 2007-06-22 | 955SS+2d | 80d | 0d | Krikor | 80h |
| 957 | 1.2.5.7.1.5.4 | Develop controller and command objects |  | 10d | 2007-06-13 | 2007-06-26 | 956SS+2d | 80d | 0d | Krikor | 80h |
| 958 | 1.2.5.7.1.5.5 | Develop JUnit test cases |  | 7d | 2007-06-15 | 2007-06-25 | 957SS+2d | 81d |  | Krikor | 56h |
| 959 | 1.2.5.7.1.6 | **Reports (cont'd)** |  | 9d | 2007-06-05 | 2007-06-15 |  | 77d |  |  | 96h |
| 960 | 1.2.5.7.1.6.1 | Develop appropriate UML Artifacts |  | 3d | 2007-06-05 | 2007-06-07 | 886 | 77d | 0d | Krikor | 24h |
| 961 | 1.2.5.7.1.6.2 | Create Design Document |  | 2d | 2007-06-08 | 2007-06-11 | 960 | 77d | 0d | Krikor | 16h |
| 962 | 1.2.5.7.1.6.3 | Adopters/Collaborators Review |  | 3d | 2007-06-12 | 2007-06-14 | 961 | 77d | 0d | Mayo; WF | 48h |
| 963 | 1.2.5.7.1.6.4 | Developers Update |  | 1d | 2007-06-15 | 2007-06-15 | 962 | 77d | 3d | Krikor | 8h |
| 964 | 1.2.5.7.1.7 | **Institution AE Notification Trigger** |  | 12d | 2007-06-05 | 2007-06-20 |  | 74d |  |  | 136h |
| 965 | 1.2.5.7.1.7.1 | Develop appropriate UML Artifacts |  | 4d | 2007-06-05 | 2007-06-08 | 886 | 74d | 0d | Visu | 32h |
| 966 | 1.2.5.7.1.7.2 | Create Design Document |  | 2d | 2007-06-11 | 2007-06-12 | 965 | 74d | 0d | Visu | 16h |
| 967 | 1.2.5.7.1.7.3 | Adopters/Collaborators Review |  | 5d | 2007-06-13 | 2007-06-19 | 966 | 74d | 0d | Mayo; WF | 80h |
| 968 | 1.2.5.7.1.7.4 | Developers Update |  | 1d | 2007-06-20 | 2007-06-20 | 967 | 74d | 0d | Visu | 8h |
| 969 | 1.2.5.7.1.8 | Deliver Design document to BAH (Task 3.4) | milestone | 0d | 2007-06-20 | 2007-06-20 | 946, 963, 968 | 84d |  | Edmond |  |
| 970 | 1.2.5.7.1.9 | Deliver UML to BAH (Task 3.3) | milestone | 0d | 2007-06-20 | 2007-06-20 | 946, 963, 968 | 74d | 0d | Edmond |  |
| 971 | 1.2.5.7.1.10 | Formal Review by BAH |  | 10d | 2007-06-21 | 2007-07-04 | 970 | 74d |  | BAH; Mayo; WF | 240h |

| ID | WBS | Task | Duration | Start | Finish | Predecessors | Baseline start | Baseline finish | Baseline duration | Total slack | Free slack | Resources | Work | Text2 |
| --- | --- | --- | --- | --- | --- | --- | --- | --- | --- | --- | --- | --- | --- | --- |
| 972 | 1.2.5.7.2 | **Modeling/BRIDG** | 3d | 2007-06-05 | 2007-06-07 |  |  |  |  | 88d | 0d |  | 64h | BRIDG |
| 973 | 1.2.5.7.2.1 | Update Implementation Model | 2d | 2007-06-05 | 2007-06-06 |  |  |  |  | 89d |  | Ram | 16h |  |
| 974 | 1.2.5.7.2.2 | Update Domain Analysis Model/BRIDG Harmonization | 3d | 2007-06-05 | 2007-06-07 |  |  |  |  | 88d |  | Sean | 24h |  |
| 975 | 1.2.5.7.2.3 | Update Dynamic Models (BRIDG) | 3d | 2007-06-05 | 2007-06-07 |  |  |  |  | 88d |  | Sean | 24h |  |
| 976 | 1.2.5.7.3 | **Semantic Integration** | 6d | 2007-06-05 | 2007-06-12 |  | 2007-01-12 | 2007-01-26 | 11d | 90d |  |  | 72h | VCDE |
| 977 | 1.2.5.7.3.1 | CDE Gap Analysis/Report | 5d | 2007-06-05 | 2007-06-11 |  | 2007-01-12 | 2007-01-18 | 5d | 90d | 0d | Sean | 40h |  |
| 978 | 1.2.5.7.3.2 | Meeting with VCDE | 1d | 2007-06-12 | 2007-06-12 | 977 | 2007-01-26 | 2007-01-26 | 0d | 90d |  | Sean; Brian D; Lynne W; Brenda M | 32h |  |
| 979 | 1.2.5.8 | **Implementation (Iter-5)** | 19d? | 2007-06-05 | 2007-06-29 | 886 |  |  |  | 67d |  |  | 912h |  |
| 980 | 1.2.5.8.1 | **Web interface** | 5d | 2007-06-05 | 2007-06-11 |  |  |  |  | 91d |  |  | 40h |  |
| 981 | 1.2.5.8.1.1 | UI Refinement | 5d | 2007-06-05 | 2007-06-11 |  |  |  |  | 91d |  | Richard | 40h |  |
| 982 | 1.2.5.8.2 | **Bug Fixes** | 6d | 2007-06-05 | 2007-06-12 |  |  |  |  | 90d |  |  |  |  |
| 983 | 1.2.5.8.2.1 | Review and assignment of Bugs from prior iteration | 1d | 2007-06-05 | 2007-06-05 |  |  |  |  | 90d | 0d |  |  |  |
| 984 | 1.2.5.8.2.2 | Bug Fixes | 5d | 2007-06-06 | 2007-06-12 | 983 |  |  |  | 90d |  |  |  |  |
| 985 | 1.2.5.8.3 | **Implement Use Cases** | 19d? | 2007-06-05 | 2007-06-29 |  |  |  |  | 67d | 0d |  | 872h |  |
| 986 | 1.2.5.8.3.1 | Study Model Refactoring | 2d | 2007-06-05 | 2007-06-06 |  |  |  |  | 82d | 0d | Biju | 16h |  |
| 987 | 1.2.5.8.3.2 | Study Identifiers Refactoring | 2d | 2007-06-07 | 2007-06-08 | 986 |  |  |  | 82d |  | Biju | 16h |  |
| 988 | 1.2.5.8.3.3 | Solicited AE's | 5d | 2007-06-19 | 2007-06-25 | 990 |  |  |  | 71d |  | Krikor | 40h |  |
| 989 | 1.2.5.8.3.4 | Import (cont'd) | 2d | 2007-06-14 | 2007-06-15 | 986, 993 |  |  |  | 77d |  | Krikor | 16h |  |
| 990 | 1.2.5.8.3.5 | Export Data to Local CTMS | 3d | 2007-06-14 | 2007-06-18 | 993 |  |  |  | 71d | 0d | Krikor | 24h |  |
| 991 | 1.2.5.8.3.6 | Pushing data to AdEERS (cont'd) | 15d | 2007-06-05 | 2007-06-25 |  |  |  |  | 71d |  | Srini | 120h |  |
| 992 | 1.2.5.8.3.7 | Complete AE Expedited Report Flow | 15d | 2007-06-05 | 2007-06-25 |  |  |  |  | 71d |  | Rhett | 120h |  |
| 993 | 1.2.5.8.3.8 | Searching/Views/Analysis | 7d | 2007-06-05 | 2007-06-13 |  |  |  |  | 71d | 0d | Krikor | 56h |  |
| 994 | 1.2.5.8.3.9 | Rules Engine Integration | 19d | 2007-06-05 | 2007-06-29 |  |  |  |  | 67d |  | Vinay; Visu; Biju | 456h |  |
| 995 | 1.2.5.8.3.10 | Online Help | 1d? | 2007-06-05 | 2007-06-05 |  |  |  |  | 85d |  | Jason | 8h |  |

| ID | WBS | Task | Type | Duration | Start | Finish | Predecessors | Baseline start | Baseline finish | Baseline duration | Total slack | Free slack | Constraint | Resources | Work | Text1 |
| --- | --- | --- | --- | --- | --- | --- | --- | --- | --- | --- | --- | --- | --- | --- | --- | --- |
| 996 | 1.2.5.9 | **Documentation (Iter-5)** |  | 26d | 2007-06-05 | 2007-07-10 | 886 |  |  |  | 70d |  |  |  | 1176h |  |
| 997 | 1.2.5.9.1 | **Installation Guide** |  | 15d | 2007-06-20 | 2007-07-10 |  |  |  |  | 70d |  |  |  | 360h |  |
| 998 | 1.2.5.9.1.1 | Update Installation Guide |  | 5d | 2007-06-20 | 2007-06-26 |  |  |  |  | 70d | 0d | start no earlier than 2007-06-20 | Jason | 40h |  |
| 999 | 1.2.5.9.1.2 | Submit to BAH/Adopters | milestone | 0d | 2007-06-26 | 2007-06-26 | 998 |  |  |  | 70d | 0d |  | Edmond |  |  |
| 1000 | 1.2.5.9.1.3 | Review of Installation Guide |  | 10d | 2007-06-27 | 2007-07-10 | 999 |  |  |  | 70d |  |  | BAH; NCI; Mayo; WF | 320h |  |
| 1001 | 1.2.5.9.2 | **Administrators Guide** |  | 15d | 2007-06-05 | 2007-06-25 |  |  |  |  | 81d |  |  |  | 360h |  |
| 1002 | 1.2.5.9.2.1 | Update Administrators Guide |  | 5d | 2007-06-05 | 2007-06-11 |  |  |  |  | 81d | 0d |  | Jason | 40h |  |
| 1003 | 1.2.5.9.2.2 | Submit to BAH | milestone | 0d | 2007-06-11 | 2007-06-11 | 1002 |  |  |  | 81d | 0d |  | Edmond |  |  |
| 1004 | 1.2.5.9.2.3 | Review of Admin Guide |  | 10d | 2007-06-12 | 2007-06-25 | 1003 |  |  |  | 81d |  |  | BAH; NCI; Mayo; WF | 320h |  |
| 1005 | 1.2.5.9.3 | **Release Notes** |  | 12d | 2007-06-25 | 2007-07-10 |  |  |  |  | 70d |  |  |  | 336h |  |
| 1006 | 1.2.5.9.3.1 | Update Release Notes |  | 2d | 2007-06-25 | 2007-06-26 |  |  |  |  | 70d | 0d | start no earlier than 2007-06-25 | Edmond | 16h |  |
| 1007 | 1.2.5.9.3.2 | Submit to BAH | milestone | 0d | 2007-06-26 | 2007-06-26 | 1006 |  |  |  | 70d | 0d |  | Edmond |  |  |
| 1008 | 1.2.5.9.3.3 | Review of Release Notes |  | 10d | 2007-06-27 | 2007-07-10 | 1007 |  |  |  | 70d |  |  | BAH; NCI; Mayo; WF | 320h |  |
| 1009 | 1.2.5.9.4 | **End User Guide Draft** |  | 15d | 2007-06-05 | 2007-06-25 |  | 2007-05-29 | 2007-06-04 | 5d | 81d |  |  |  | 120h |  |
| 1010 | 1.2.5.9.4.1 | Create Draft of End User Guide |  | 15d | 2007-06-05 | 2007-06-25 |  |  |  |  | 81d |  |  | Jason | 120h |  |
| 1011 | 1.2.5.10 | **Testing (Iter-5)** |  | 20d | 2007-06-05 | 2007-07-02 | 886 |  |  |  | 76d |  |  |  | 720h |  |
| 1012 | 1.2.5.10.1 | **Test Plan** |  | 15d | 2007-06-05 | 2007-06-25 |  |  |  |  | 81d |  |  |  | 360h |  |
| 1013 | 1.2.5.10.1.1 | Update Test Plan Document (Task 3.6) |  | 5d | 2007-06-05 | 2007-06-11 |  |  |  |  | 81d | 0d |  | Ram | 40h |  |
| 1014 | 1.2.5.10.1.2 | Submit to BAH | milestone | 0d | 2007-06-11 | 2007-06-11 | 1013 |  |  |  | 81d | 0d |  | Edmond |  | 3.6 |
| 1015 | 1.2.5.10.1.3 | Formal Review by BAH |  | 10d | 2007-06-12 | 2007-06-25 | 1014 |  |  |  | 81d |  |  | BAH; NCI; Mayo; WF | 320h |  |
| 1016 | 1.2.5.10.2 | **RTM** |  | 5d | 2007-06-05 | 2007-06-11 |  |  |  |  | 91d |  |  |  | 40h |  |
| 1017 | 1.2.5.10.2.1 | Update RTM |  | 5d | 2007-06-05 | 2007-06-11 |  |  |  |  | 91d |  |  | Sean | 40h |  |
| 1018 | 1.2.5.10.3 | **Testing** |  | 20d | 2007-06-05 | 2007-07-02 |  |  |  |  | 76d |  |  |  | 320h |  |
| 1019 | 1.2.5.10.3.1 | Testing |  | 10d | 2007-06-05 | 2007-06-18 |  |  |  |  | 76d | 0d |  | Renee; David; Natasha | 240h |  |
| 1020 | 1.2.5.10.3.2 | Submit Test Results Report (Task 3.8) | milestone | 0d | 2007-06-18 | 2007-06-18 | 1019 |  |  |  | 76d | 0d |  | Edmond |  |  |
| 1021 | 1.2.5.10.3.3 | Formal Review of Test results Report |  | 10d | 2007-06-19 | 2007-07-02 | 1020 |  |  |  | 76d |  |  | BAH | 80h |  |

| ID | WBS | Task | Type | Duration | Start | Finish | Predecessors | Baseline start | Baseline finish | Baseline duration | Total slack | Free slack | Constraint | Resources | Work | Text2 | Text3 |
| --- | --- | --- | --- | --- | --- | --- | --- | --- | --- | --- | --- | --- | --- | --- | --- | --- | --- |
| 1022 | 1.2.5.11 | **BRIDG Review (Begin)** |  | 5d | 2007-06-08 | 2007-06-14 | 972 |  |  |  | 88d |  |  |  | 40h |  |  |
| 1023 | 1.2.5.11.1 | Harmonization with BRIDG Model (Review) |  | 5d | 2007-06-08 | 2007-06-14 |  |  |  |  | 88d |  |  | Sean | 40h |  |  |
| 1024 | 1.2.5.12 | **Deployment (Iter-5)** |  | 10d | 2007-06-29 | 2007-07-13 | 886 |  |  |  | 67d |  |  |  | 80h |  |  |
| 1025 | 1.2.5.12.1 | Submit prototype code (Task 3.5) | milestone | 0d | 2007-06-29 | 2007-06-29 | 985 |  |  |  | 67d | 0d |  | Ram |  |  |  |
| 1026 | 1.2.5.12.2 | Deploy Prototype for Iteration 1 at Mayo and WF | milestone | 0d | 2007-06-29 | 2007-06-29 | 985, 1025 |  |  |  | 67d | 0d |  | Vinay; Mayo; WF |  |  |  |
| 1027 | 1.2.5.12.3 | Formal Review of Code by BAH |  | 10d | 2007-07-02 | 2007-07-13 | 1026 |  |  |  | 67d |  |  | BAH | 80h |  |  |
| 1028 | 1.2.5.13 | Finish Iteration 5 | milestone | 0d | 2007-06-30 | 2007-06-30 |  | 2007-06-04 | 2007-06-04 | 0d | 0d |  | must finish on 2007-06-30 |  |  |  |  |
| 1029 | 1.2.6 | **Construction Phase Iteration 6** |  | 27d | 2007-07-02 | 2007-08-07 |  | 2007-07-10 | 2007-08-10 | 23d | 0d |  |  |  | 3968h | BRIDG, Silver Review | Export,SystemAdmin,Triggers,Reports |
| 1030 | 1.2.6.1 | Begin Iteration 6 | milestone | 0d | 2007-07-02 | 2007-07-02 |  | 2007-05-07 | 2007-05-07 | 0d | 0d |  | must start on 2007-07-02 |  |  |  |  |
| 1031 | 1.2.6.2 | **Iteration Planning (Iter-6)** |  | 2d | 2007-07-02 | 2007-07-03 |  |  |  |  | 3d |  |  |  | 48h |  |  |
| 1032 | 1.2.6.2.1 | Review and finalize Ucases and Work List for Iteration |  | 1d | 2007-07-02 | 2007-07-02 | 1030 |  |  |  | 3d | 0d |  | Edmond; Ram; Vinay | 24h |  |  |
| 1033 | 1.2.6.2.2 | Review and finalize assignments for Iteration |  | 1d | 2007-07-03 | 2007-07-03 | 1032 |  |  |  | 3d | 0d |  | Edmond; Ram; Vinay | 24h |  |  |
| 1034 | 1.2.6.3 | **Project Management (Iter-6)** |  | 22d | 2007-07-02 | 2007-07-31 |  |  |  |  | 55d |  |  |  | 128h |  |  |
| 1035 | 1.2.6.3.1 | Update Project Plan |  | 3d | 2007-07-03 | 2007-07-05 | 1032 |  |  |  | 73d |  |  | Edmond | 24h |  |  |
| 1036 | 1.2.6.3.2 | **CaAERS CCB (Task 2.10)** |  | 1d | 2007-07-02 | 2007-07-02 |  |  |  |  | 76d |  |  |  | 8h |  |  |
| 1037 | 1.2.6.3.2.1 | CCB Meetings |  | 1d | 2007-07-02 | 2007-07-02 |  |  |  |  | 76d |  | start no earlier than 2007-07-02 | Edmond | 8h |  |  |
| 1038 | 1.2.6.3.3 | **Weekly Team Meeting** |  | 16d | 2007-07-02 | 2007-07-23 |  |  |  |  | 61d |  |  |  |  |  |  |
| 1039 | 1.2.6.3.3.1 | Weekly Team Meeting 1 |  | 1d | 2007-07-02 | 2007-07-02 |  |  |  |  | 76d |  | start no earlier than 2007-07-02 |  |  |  |  |
| 1040 | 1.2.6.3.3.2 | Weekly Team Meeting 2 |  | 1d | 2007-07-09 | 2007-07-09 |  |  |  |  | 71d |  | start no earlier than 2007-07-09 |  |  |  |  |
| 1041 | 1.2.6.3.3.3 | Weekly Team Meeting 3 |  | 1d | 2007-07-16 | 2007-07-16 |  |  |  |  | 66d |  | start no earlier than 2007-07-16 |  |  |  |  |
| 1042 | 1.2.6.3.3.4 | Weekly Team Meeting 4 |  | 1d | 2007-07-23 | 2007-07-23 |  |  |  |  | 61d |  | start no earlier than 2007-07-23 |  |  |  |  |
| 1043 | 1.2.6.3.4 | **Status and Risk Reporting** |  | 18d | 2007-07-06 | 2007-07-31 |  |  |  |  | 55d |  |  |  | 64h |  |  |
| 1044 | 1.2.6.3.4.1 | Bi-weekly Risk Update in caMP (Task 1.4) |  | 1d | 2007-07-06 | 2007-07-06 |  |  |  |  | 72d |  | start no earlier than 2007-07-06 | Edmond | 8h |  |  |
| 1045 | 1.2.6.3.4.2 | Bi-weekly Risk Matrix Update Meeting |  | 1d | 2007-07-06 | 2007-07-06 |  |  |  |  | 72d |  | start no earlier than 2007-07-06 | Edmond | 8h |  |  |
| 1046 | 1.2.6.3.4.3 | Bi-weekly Risk Update in caMP (Task 1.4) |  | 1d | 2007-07-20 | 2007-07-20 |  |  |  |  | 62d |  | start no earlier than 2007-07-20 | Edmond | 8h |  |  |
| 1047 | 1.2.6.3.4.4 | Bi-weekly Risk Matrix Update Meeting |  | 1d | 2007-07-20 | 2007-07-20 |  |  |  |  | 62d |  | start no earlier than 2007-07-20 | Edmond | 8h |  |  |
| 1048 | 1.2.6.3.4.5 | Bi-weekly Status Update Meeting with BAH/NCI |  | 1d | 2007-07-13 | 2007-07-13 |  |  |  |  | 67d |  | start no earlier than 2007-07-13 | Edmond | 8h |  |  |
| 1049 | 1.2.6.3.4.6 | Bi-weekly Status Update Meeting with BAH/NCI |  | 1d | 2007-07-13 | 2007-07-13 |  |  |  |  | 67d |  | start no earlier than 2007-07-13 | Edmond | 8h |  |  |
| 1050 | 1.2.6.3.4.7 | Monthly Status Report (Task 1.3) |  | 1d | 2007-07-31 | 2007-07-31 |  |  |  |  | 55d | 0d | start no earlier than 2007-07-31 | Edmond | 8h |  |  |
| 1051 | 1.2.6.3.4.8 | Monthly Risk Matrix Update (Task 1.3) |  | 1d | 2007-07-31 | 2007-07-31 | 1050SS |  |  |  | 55d |  |  | Edmond | 8h |  |  |

Notes:
- 1025: Text1: 3.5
- 1029: Text1: 1.1, 1.2, 1.3, 1.4, 2.10, 3.1, 3.2, 3.3, 3.4, 3.5, 3.6, 3.8, 3.10, 3.13, 3.14, 3.15.1
- 1036: Text1: 2.10

| ID | WBS | Task | Type | Duration | Start | Finish | Predecessors | Total slack | Free slack | Constraint | Resources | Work |
| --- | --- | --- | --- | --- | --- | --- | --- | --- | --- | --- | --- | --- |
| 1052 | 1.2.6.3.5 | **Collaboration Management Activities** |  | 16d | 2007-07-05 | 2007-07-26 |  | 58d |  |  |  | 32h |
| 1053 | 1.2.6.3.5.1 | Adopters Mtg |  | 1d | 2007-07-05 | 2007-07-05 |  | 73d |  | start no earlier than 2007-07-05 | Edmond | 8h |
| 1054 | 1.2.6.3.5.2 | Bi-Weekly AE SIG Meeting |  | 1d | 2007-07-12 | 2007-07-12 |  | 68d |  | start no earlier than 2007-07-12 | Edmond | 8h |
| 1055 | 1.2.6.3.5.3 | Adopters Mtg |  | 1d | 2007-07-19 | 2007-07-19 |  | 63d |  | start no earlier than 2007-07-19 | Edmond | 8h |
| 1056 | 1.2.6.3.5.4 | Bi-Weekly AE SIG Meeting |  | 1d | 2007-07-26 | 2007-07-26 |  | 58d |  | start no earlier than 2007-07-26 | Edmond | 8h |
| 1057 | 1.2.6.4 | **Environment (Iter-6)** |  | 3d | 2007-07-03 | 2007-07-05 |  | 73d |  |  |  | 24h |
| 1058 | 1.2.6.4.1 | Update Environment |  | 3d | 2007-07-03 | 2007-07-05 | 1032 | 73d |  |  | Vinay | 24h |
| 1059 | 1.2.6.5 | **SCM (Iter-6)** |  | 5d | 2007-07-02 | 2007-07-06 |  | 72d |  |  |  | 40h |
| 1060 | 1.2.6.5.1 | Manage Repository |  | 5d | 2007-07-02 | 2007-07-06 | 1030 | 72d |  |  | Rhett | 40h |
| 1061 | 1.2.6.6 | **Requirements (Iter-6)** |  | 18d | 2007-07-02 | 2007-07-25 |  | 59d |  |  |  | 512h |
| 1062 | 1.2.6.6.1 | **Requirements Gathering and Elucidation** |  | 5d | 2007-07-02 | 2007-07-06 |  | 72d |  |  |  | 40h |
| 1063 | 1.2.6.6.1.1 | Requirements gathering/research for iteration |  | 5d | 2007-07-02 | 2007-07-06 | 1030 | 72d |  |  | Sean | 40h |
| 1064 | 1.2.6.6.2 | **Updated Use Case Specification and Realization** |  | 16d | 2007-07-04 | 2007-07-25 |  | 59d |  |  |  | 152h |
| 1065 | 1.2.6.6.2.1 | Developer draft |  | 2d | 2007-07-04 | 2007-07-05 | 1033 | 59d | 0d |  | Sean | 16h |
| 1066 | 1.2.6.6.2.2 | Adopters/Collobators Review |  | 3d | 2007-07-06 | 2007-07-10 | 1065 | 59d | 0d |  | Mayo; WF | 48h |
| 1067 | 1.2.6.6.2.3 | Update Use Case Document |  | 1d | 2007-07-11 | 2007-07-11 | 1066 | 59d | 0d |  | Sean | 8h |
| 1068 | 1.2.6.6.2.4 | Submit Updated Use Case Document to BAH (Task 3.1) | milestone | 0d | 2007-07-11 | 2007-07-11 | 1067 | 59d | 0d |  | Edmond |  |
| 1069 | 1.2.6.6.2.5 | Formal Review of Updated Use Case Document |  | 10d | 2007-07-12 | 2007-07-25 | 1068 | 59d |  |  | BAH | 80h |
| 1070 | 1.2.6.6.3 | **Updated SRS Document** |  | 16d | 2007-07-04 | 2007-07-25 |  | 59d |  |  |  | 152h |
| 1071 | 1.2.6.6.3.1 | Developer draft |  | 2d | 2007-07-04 | 2007-07-05 | 1033 | 59d | 0d |  | Sean | 16h |
| 1072 | 1.2.6.6.3.2 | Adopters/Collobators Review |  | 3d | 2007-07-06 | 2007-07-10 | 1071 | 59d | 0d |  | Mayo; WF | 48h |
| 1073 | 1.2.6.6.3.3 | Update SRS |  | 1d | 2007-07-11 | 2007-07-11 | 1072 | 59d | 0d |  | Sean | 8h |
| 1074 | 1.2.6.6.3.4 | Submit Updated SRS Document to BAH (Task 3.2) | milestone | 0d | 2007-07-11 | 2007-07-11 | 1073 | 59d | 0d |  | Mayo; WF |  |
| 1075 | 1.2.6.6.3.5 | Formal Review of Updated SRS |  | 10d | 2007-07-12 | 2007-07-25 | 1074 | 59d |  |  | BAH | 80h |

| ID | WBS | Task | Type | Duration | Start | Finish | Predecessors | Total slack | Free slack | Resources | Work |
| --- | --- | --- | --- | --- | --- | --- | --- | --- | --- | --- | --- |
| 1076 | 1.2.6.6.4 | **Updated UML Static Class Diagram Model** |  | 16d | 2007-07-04 | 2007-07-25 |  | 59d |  |  | 168h |
| 1077 | 1.2.6.6.4.1 | Developer draft |  | 2d | 2007-07-04 | 2007-07-05 | 1033 | 59d | 0d | Ram; Sean | 32h |
| 1078 | 1.2.6.6.4.2 | Adopters/Collobators Review |  | 3d | 2007-07-06 | 2007-07-10 | 1077 | 59d | 0d | Mayo; WF | 48h |
| 1079 | 1.2.6.6.4.3 | Update UML |  | 1d | 2007-07-11 | 2007-07-11 | 1078 | 59d | 0d | Sean | 8h |
| 1080 | 1.2.6.6.4.4 | Submit UML to BAH (Task 3.3) | milestone | 0d | 2007-07-11 | 2007-07-11 | 1079 | 59d | 0d | Edmond |  |
| 1081 | 1.2.6.6.4.5 | Formal Review of UML |  | 10d | 2007-07-12 | 2007-07-25 | 1080 | 59d |  | BAH | 80h |
| 1082 | 1.2.6.7 | **Analysis and Design (Iter-6)** |  | 21d | 2007-07-04 | 2007-08-01 | 1033 | 54d |  |  | 824h |
| 1083 | 1.2.6.7.1 | **Design Documents** |  | 21d | 2007-07-04 | 2007-08-01 |  | 54d |  |  | 656h |
| 1084 | 1.2.6.7.1.1 | **DCP AE Data Capture Workflow (cont'd)** |  | 11d | 2007-07-04 | 2007-07-18 |  | 64d |  |  | 136h |
| 1085 | 1.2.6.7.1.1.1 | Implement O/R mapping |  | 5d | 2007-07-04 | 2007-07-10 |  | 64d | 0d | Rhett | 40h |
| 1086 | 1.2.6.7.1.1.2 | Develop DAO |  | 3d | 2007-07-06 | 2007-07-10 | 1085SS+2d | 64d | 0d | Rhett | 24h |
| 1087 | 1.2.6.7.1.1.3 | Develop Service |  | 3d | 2007-07-10 | 2007-07-12 | 1086SS+2d | 64d | 0d | Rhett | 24h |
| 1088 | 1.2.6.7.1.1.4 | Develop controller and command objects |  | 3d | 2007-07-12 | 2007-07-16 | 1087SS+2d | 64d | 0d | Rhett | 24h |
| 1089 | 1.2.6.7.1.1.5 | Develop JUnit test cases |  | 3d | 2007-07-16 | 2007-07-18 | 1088SS+2d | 64d |  | Rhett | 24h |
| 1090 | 1.2.6.7.1.2 | **Export/Import (Con't)** |  | 11d | 2007-07-04 | 2007-07-18 |  | 54d |  |  | 112h |
| 1091 | 1.2.6.7.1.2.1 | Develop appropriate UML Artifacts |  | 3d | 2007-07-04 | 2007-07-06 | 1033 | 54d | 0d | Krikor | 24h |
| 1092 | 1.2.6.7.1.2.2 | Create Design Document |  | 3d | 2007-07-09 | 2007-07-11 | 1091 | 54d | 0d | Krikor | 24h |
| 1093 | 1.2.6.7.1.2.3 | Adopters/Collaborators Review |  | 3d | 2007-07-12 | 2007-07-16 | 1092 | 54d | 0d | Mayo; WF | 48h |
| 1094 | 1.2.6.7.1.2.4 | Developers Update |  | 2d | 2007-07-17 | 2007-07-18 | 1093 | 54d | 0d | Krikor | 16h |
| 1095 | 1.2.6.7.1.3 | **Rules Engine/Triggers (cont'd)** |  | 11d | 2007-07-04 | 2007-07-18 |  | 54d |  |  | 112h |
| 1096 | 1.2.6.7.1.3.1 | Develop appropriate UML Artifacts |  | 3d | 2007-07-04 | 2007-07-06 | 1033 | 54d | 0d | Rhett | 24h |
| 1097 | 1.2.6.7.1.3.2 | Create Design Document |  | 3d | 2007-07-09 | 2007-07-11 | 1096 | 54d | 0d | Rhett | 24h |
| 1098 | 1.2.6.7.1.3.3 | Adopters/Collaborators Review |  | 3d | 2007-07-12 | 2007-07-16 | 1097 | 54d | 0d | Mayo; WF | 48h |
| 1099 | 1.2.6.7.1.3.4 | Developers Update |  | 2d | 2007-07-17 | 2007-07-18 | 1098 | 54d | 0d | Rhett | 16h |

| ID | WBS | Task | Type | Duration | Start | Finish | Predecessors | Baseline start | Baseline finish | Baseline duration | Total slack | Free slack | Resources | Work | Text2 |
| --- | --- | --- | --- | --- | --- | --- | --- | --- | --- | --- | --- | --- | --- | --- | --- |
| 1100 | 1.2.6.7.1.4 | **System Admin Module (cont'd)** |  | 9d | 2007-07-04 | 2007-07-16 |  |  |  |  | 56d |  |  | 56h |  |
| 1101 | 1.2.6.7.1.4.1 | Develop appropriate UML Artifacts |  | 3d | 2007-07-04 | 2007-07-06 | 1033 |  |  |  | 56d | 0d | Kulasekaran | 24h |  |
| 1102 | 1.2.6.7.1.4.2 | Create Design Document |  | 2d | 2007-07-09 | 2007-07-10 | 1101 |  |  |  | 56d | 0d | Kulasekaran | 16h |  |
| 1103 | 1.2.6.7.1.4.3 | Adopters/Collaborators Review |  | 2d | 2007-07-11 | 2007-07-12 | 1102 |  |  |  | 56d | 0d |  |  |  |
| 1104 | 1.2.6.7.1.4.4 | Developers Update |  | 2d | 2007-07-13 | 2007-07-16 | 1103 |  |  |  | 56d | 2d | Kulasekaran | 16h |  |
| 1105 | 1.2.6.7.1.5 | Deliver Design document to BAH (Task 3.4) | milestone | 0d | 2007-07-18 | 2007-07-18 | 1094, 1099, 1104 |  |  |  | 64d |  | Edmond |  |  |
| 1106 | 1.2.6.7.1.6 | Deliver UML to BAH (Task 3.3) | milestone | 0d | 2007-07-18 | 2007-07-18 | 1094, 1099, 1104 |  |  |  | 54d | 0d | Edmond |  |  |
| 1107 | 1.2.6.7.1.7 | Formal Review by BAH |  | 10d | 2007-07-19 | 2007-08-01 | 1106 |  |  |  | 54d |  | BAH; Mayo; WF | 240h |  |
| 1108 | 1.2.6.7.2 | **Modeling** |  | 5d | 2007-07-04 | 2007-07-10 |  |  |  |  | 65d | 0d |  | 96h |  |
| 1109 | 1.2.6.7.2.1 | Update Implementation Model |  | 2d | 2007-07-04 | 2007-07-05 |  |  |  |  | 68d |  | Ram | 16h |  |
| 1110 | 1.2.6.7.2.2 | Update Domain Analysis Model/BRIDG Harmonization |  | 5d | 2007-07-04 | 2007-07-10 |  |  |  |  | 65d |  | Sean | 40h | BRIDG |
| 1111 | 1.2.6.7.2.3 | Create/Update Dynamic Models (BRIDG) |  | 5d | 2007-07-04 | 2007-07-10 |  |  |  |  | 65d |  | Sean | 40h | BRIDG |
| 1112 | 1.2.6.7.3 | **Semantic Integration with caDSR** |  | 6d | 2007-07-04 | 2007-07-11 |  | 2007-01-12 | 2007-01-26 | 11d | 69d | 2d |  | 72h |  |
| 1113 | 1.2.6.7.3.1 | CDE Use Report |  | 5d | 2007-07-04 | 2007-07-10 | 1033 | 2007-01-12 | 2007-01-18 | 5d | 69d | 0d | Sean | 40h |  |
| 1114 | 1.2.6.7.3.2 | Meeting with VCDE |  | 1d | 2007-07-11 | 2007-07-11 | 1113 | 2007-01-26 | 2007-01-26 | 0d | 69d |  | Sean; Brian D; Lynne W; Brenda M | 32h | VCDE |
| 1115 | 1.2.6.8 | **Implementation (Iter-6)** |  | 20d | 2007-07-04 | 2007-07-31 |  |  |  |  | 55d |  |  | 336h |  |
| 1116 | 1.2.6.8.1 | **Web interface** |  | 5d | 2007-07-04 | 2007-07-10 | 1033 |  |  |  | 70d |  |  | 40h |  |
| 1117 | 1.2.6.8.1.1 | UI Refinement |  | 5d | 2007-07-04 | 2007-07-10 |  |  |  |  | 70d |  | Richard | 40h |  |
| 1118 | 1.2.6.8.2 | **Bug Fixes** |  | 6d | 2007-07-04 | 2007-07-11 | 1033 |  |  |  | 69d |  |  |  |  |
| 1119 | 1.2.6.8.2.1 | Review and assignment of Bugs from prior iteration |  | 1d | 2007-07-04 | 2007-07-04 |  |  |  |  | 69d | 0d |  |  |  |
| 1120 | 1.2.6.8.2.2 | Bug Fixes |  | 5d | 2007-07-05 | 2007-07-11 | 1119 |  |  |  | 69d |  |  |  |  |
| 1121 | 1.2.6.8.3 | **Impementation** |  | 20d | 2007-07-04 | 2007-07-31 | 1033 |  |  |  | 55d |  |  | 296h |  |
| 1122 | 1.2.6.8.3.1 | TAC Code (for Treatment Tab) |  | 3d | 2007-07-04 | 2007-07-06 |  |  |  |  | 72d |  | Rhett | 24h |  |
| 1123 | 1.2.6.8.3.2 | Submission Mechanisms (cont'd) |  | 15d | 2007-07-04 | 2007-07-24 |  |  |  |  | 60d |  |  |  |  |
| 1124 | 1.2.6.8.3.3 | Report Definition Templates |  | 15d | 2007-07-04 | 2007-07-24 |  |  |  |  | 60d |  | Biju | 120h |  |
| 1125 | 1.2.6.8.3.4 | Expedited Report States (Pending, Submitted, etc.) |  | 4d | 2007-07-04 | 2007-07-09 |  |  |  |  | 71d |  | Rhett | 32h |  |
| 1126 | 1.2.6.8.3.5 | Implement DCP Expedited Report Data Capture flow |  | 15d | 2007-07-04 | 2007-07-24 |  |  |  |  | 60d |  |  |  |  |
| 1127 | 1.2.6.8.3.6 | Duplicate AE Checking/Validation |  | 3d | 2007-07-04 | 2007-07-06 |  |  |  |  | 72d |  |  |  |  |
| 1128 | 1.2.6.8.3.7 | Duplicate Studies Checking/Validation |  | 2d | 2007-07-04 | 2007-07-05 |  |  |  |  | 73d |  |  |  |  |
| 1129 | 1.2.6.8.3.8 | Export (cont'd) |  | 5d | 2007-07-04 | 2007-07-10 |  |  |  |  | 70d |  |  |  |  |
| 1130 | 1.2.6.8.3.9 | Validations |  | 5d | 2007-07-04 | 2007-07-10 |  |  |  |  | 70d |  |  |  |  |
| 1131 | 1.2.6.8.3.10 | Error Messages |  | 3d | 2007-07-04 | 2007-07-06 |  |  |  |  | 72d |  |  |  |  |
| 1132 | 1.2.6.8.3.11 | LOV Maintenance Screens/Functionality |  | 5d | 2007-07-04 | 2007-07-10 |  |  |  |  | 70d |  |  |  |  |
| 1133 | 1.2.6.8.3.12 | System Admin (cont'd) |  | 5d | 2007-07-04 | 2007-07-10 |  |  |  |  | 70d |  | Visu; Biju; Vinay | 120h |  |
| 1134 | 1.2.6.8.3.13 | Triggers/Notification (cont'd) |  | 20d | 2007-07-04 | 2007-07-31 |  |  |  |  | 55d |  |  |  |  |

| ID | WBS | Task | Type | Duration | Start | Finish | Predecessors | Baseline start | Baseline finish | Baseline duration | Total slack | Free slack | Constraint | Resources | Work | Text1 |
| --- | --- | --- | --- | --- | --- | --- | --- | --- | --- | --- | --- | --- | --- | --- | --- | --- |
| 1135 | 1.2.6.9 | **Documentation (Iter-6)** |  | 25d | 2007-07-04 | 2007-08-07 | 1033 |  |  |  | 3d |  |  |  | 960h |  |
| 1136 | 1.2.6.9.1 | **Installation Guide** |  | 15d | 2007-07-18 | 2007-08-07 |  |  |  |  | 50d |  |  |  | 240h |  |
| 1137 | 1.2.6.9.1.1 | Update Installation Guide |  | 5d | 2007-07-18 | 2007-07-24 |  |  |  |  | 50d | 0d | start no earlier than 2007-07-18 |  |  |  |
| 1138 | 1.2.6.9.1.2 | Submit to BAH/Adopters | milestone | 0d | 2007-07-24 | 2007-07-24 | 1137 |  |  |  | 50d | 0d |  | Edmond |  |  |
| 1139 | 1.2.6.9.1.3 | Review of Installation Guide |  | 10d | 2007-07-25 | 2007-08-07 | 1138 |  |  |  | 50d |  |  | BAH; Mayo; WF | 240h |  |
| 1140 | 1.2.6.9.2 | **Administrators Guide** |  | 25d | 2007-07-04 | 2007-08-07 |  |  |  |  | 50d |  |  |  | 240h |  |
| 1141 | 1.2.6.9.2.1 | Update Administrators Guide |  | 15d | 2007-07-04 | 2007-07-24 |  |  |  |  | 50d | 0d |  |  |  |  |
| 1142 | 1.2.6.9.2.2 | Submit to BAH | milestone | 0d | 2007-07-24 | 2007-07-24 | 1141 |  |  |  | 50d | 0d |  | Edmond |  |  |
| 1143 | 1.2.6.9.2.3 | Review of Admin Guide |  | 10d | 2007-07-25 | 2007-08-07 | 1142 |  |  |  | 50d |  |  | BAH; Mayo; WF | 240h |  |
| 1144 | 1.2.6.9.3 | **Release Notes** |  | 12d | 2007-07-23 | 2007-08-07 |  |  |  |  | 50d |  |  |  | 240h |  |
| 1145 | 1.2.6.9.3.1 | Update Release Notes |  | 2d | 2007-07-23 | 2007-07-24 |  |  |  |  | 50d | 0d | start no earlier than 2007-07-23 |  |  |  |
| 1146 | 1.2.6.9.3.2 | Submit to BAH | milestone | 0d | 2007-07-24 | 2007-07-24 | 1145 |  |  |  | 50d | 0d |  | Edmond |  |  |
| 1147 | 1.2.6.9.3.3 | Review of Release Notes |  | 10d | 2007-07-25 | 2007-08-07 | 1146 |  |  |  | 50d |  |  | BAH; Mayo; WF | 240h |  |
| 1148 | 1.2.6.9.4 | **End User Guide Draft** |  | 25d | 2007-07-04 | 2007-08-07 |  | 2007-05-29 | 2007-06-04 | 5d | 3d |  |  |  | 240h |  |
| 1149 | 1.2.6.9.4.1 | Create Draft of End User Guide |  | 15d | 2007-07-04 | 2007-07-24 |  |  |  |  | 3d | 0d |  |  |  |  |
| 1150 | 1.2.6.9.4.2 | Submit to BAH (Task 13.15.1) | milestone | 0d | 2007-07-24 | 2007-07-24 | 1149 |  |  |  | 3d | 0d |  | Edmond |  | 13.15.1 |
| 1151 | 1.2.6.9.4.3 | Review of End User Guide Draft |  | 10d | 2007-07-25 | 2007-08-07 | 1150 |  |  |  | 3d | 0d |  | BAH; Mayo; WF | 240h |  |
| 1152 | 1.2.6.10 | **Testing (Iter-6)** |  | 25d | 2007-07-04 | 2007-08-07 | 1033 |  |  |  | 30d |  |  |  | 976h |  |
| 1153 | 1.2.6.10.1 | **Test Plan** |  | 12d | 2007-07-04 | 2007-07-19 |  |  |  |  | 63d |  |  |  | 96h |  |
| 1154 | 1.2.6.10.1.1 | Update Test Plan Document (Task 3.6) |  | 2d | 2007-07-04 | 2007-07-05 |  |  |  |  | 63d | 0d |  | Ram | 16h |  |
| 1155 | 1.2.6.10.1.2 | Submit to BAH | milestone | 0d | 2007-07-05 | 2007-07-05 | 1154 |  |  |  | 63d | 0d |  | Edmond |  | 3.6 |
| 1156 | 1.2.6.10.1.3 | Formal Review by BAH |  | 10d | 2007-07-06 | 2007-07-19 | 1155 |  |  |  | 63d |  |  | BAH | 80h |  |
| 1157 | 1.2.6.10.2 | **RTM** |  | 5d | 2007-07-04 | 2007-07-10 |  |  |  |  | 70d |  |  |  | 40h |  |
| 1158 | 1.2.6.10.2.1 | Update RTM |  | 5d | 2007-07-04 | 2007-07-10 |  |  |  |  | 70d |  |  | Sean | 40h |  |

| ID | WBS | Task | Type | Duration | Start | Finish | Predecessors | Baseline start | Baseline finish | Baseline duration | Total slack | Free slack | Constraint | Resources | Work | Text2 | Text3 |
| --- | --- | --- | --- | --- | --- | --- | --- | --- | --- | --- | --- | --- | --- | --- | --- | --- | --- |
| 1159 | 1.2.6.10.3 | **Test Data** |  | 20d | 2007-07-04 | 2007-07-31 |  |  |  |  | 55d |  |  |  | 400h |  |  |
| 1160 | 1.2.6.10.3.1 | Create test data set (Task 3.7) |  | 10d | 2007-07-04 | 2007-07-17 |  |  |  |  | 55d | 0d |  | Renee; David | 160h |  |  |
| 1161 | 1.2.6.10.3.2 | Submit for Review | milestone | 0d | 2007-07-17 | 2007-07-17 | 1160 |  |  |  | 55d | 0d |  | Edmond |  |  |  |
| 1162 | 1.2.6.10.3.3 | Review |  | 10d | 2007-07-18 | 2007-07-31 | 1161 |  |  |  | 55d |  |  | BAH; Mayo; WF | 240h |  |  |
| 1163 | 1.2.6.10.4 | **Testing** |  | 25d | 2007-07-04 | 2007-08-07 |  |  |  |  | 30d |  |  |  | 440h |  |  |
| 1164 | 1.2.6.10.4.1 | Testing |  | 15d | 2007-07-04 | 2007-07-24 |  |  |  |  | 30d | 0d |  | Renee; David; Natasha | 360h |  |  |
| 1165 | 1.2.6.10.4.2 | Submit Test Results Report (Task 3.8) | milestone | 0d | 2007-07-24 | 2007-07-24 | 1164 |  |  |  | 30d | 0d |  | Edmond |  |  |  |
| 1166 | 1.2.6.10.4.3 | Formal Review of Test results Report |  | 10d | 2007-07-25 | 2007-08-07 | 1165 |  |  |  | 30d | 0d |  | BAH | 80h |  |  |
| 1167 | 1.2.6.11 | **BRIDG Review (Cont'd)** |  | 5d | 2007-07-11 | 2007-07-17 |  |  |  |  | 65d |  |  |  | 40h |  |  |
| 1168 | 1.2.6.11.1 | Harmonization with BRIDG Model (Final Review) |  | 5d | 2007-07-11 | 2007-07-17 | 1108 |  |  |  | 65d |  |  | Sean | 40h |  |  |
| 1169 | 1.2.6.12 | **Silver Review (Begin)** |  | 0d | 2007-07-16 | 2007-07-16 | 1112 |  |  |  | 67d |  |  |  |  |  |  |
| 1170 | 1.2.6.12.1 | Submit Draft Semantically annotated XMI file (Task 3.11.1) | milestone | 0d | 2007-07-16 | 2007-07-16 |  |  |  |  | 67d | 0d | start no earlier than 2007-07-16 |  |  |  |  |
| 1171 | 1.2.6.12.2 | Submit Draft Full CDE Use Report (Task 3.11.2) | milestone | 0d | 2007-07-16 | 2007-07-16 | 1170 |  |  |  | 67d | 0d |  |  |  |  |  |
| 1172 | 1.2.6.12.3 | Submit Draft Compatibility Review Submission Packaged (Task 3.12) | milestone | 0d | 2007-07-16 | 2007-07-16 | 1171 |  |  |  | 67d |  |  |  |  |  |  |
| 1173 | 1.2.6.13 | **Deployment (Iter-6)** |  | 10d | 2007-07-25 | 2007-08-07 |  |  |  |  | 50d |  |  |  | 80h |  |  |
| 1174 | 1.2.6.13.1 | Submit prototype code (Task 3.5) | milestone | 0d | 2007-07-25 | 2007-07-25 |  |  |  |  | 50d | 0d | start no earlier than 2007-07-25 | Ram |  |  |  |
| 1175 | 1.2.6.13.2 | Deploy Prototype for Iteration 1 at Mayo and WF | milestone | 0d | 2007-07-25 | 2007-07-25 | 1174 |  |  |  | 50d | 0d |  | Vinay; Mayo; WF |  |  |  |
| 1176 | 1.2.6.13.3 | Formal Review of Code by BAH |  | 10d | 2007-07-25 | 2007-08-07 | 1175 |  |  |  | 50d |  |  | BAH | 80h |  |  |
| 1177 | 1.2.6.14 | Finish Iteration 6 | milestone | 0d | 2007-07-31 | 2007-07-31 |  | 2007-08-07 | 2007-08-07 | 0d | 0d |  | must finish on 2007-07-31 |  |  |  |  |
| 1178 | 1.2.7 | **Construction Phase Iteration 7** |  | 32d? | 2007-08-01 | 2007-09-13 |  | 2007-08-10 | 2007-09-12 | 23d | 0d |  |  |  | 2064h | Silver Review | Reports,Export,SystemAdmin,Triggers |
| 1179 | 1.2.7.1 | Begin Iteration 7 | milestone | 0d | 2007-08-01 | 2007-08-01 |  | 2007-08-10 | 2007-08-10 | 0d | 0d |  | must start on 2007-08-01 |  |  |  |  |
| 1180 | 1.2.7.2 | **Iteration Planning (Iter-7)** |  | 2d | 2007-08-01 | 2007-08-02 |  |  |  |  | 6d |  |  |  | 48h |  |  |
| 1181 | 1.2.7.2.1 | Review and finalize Ucases and Work List for Iteration |  | 1d | 2007-08-01 | 2007-08-01 | 1179 |  |  |  | 6d | 0d |  | Edmond; Ram; Vinay | 24h |  |  |
| 1182 | 1.2.7.2.2 | Review and finalize assignments for Iteration |  | 1d | 2007-08-02 | 2007-08-02 | 1181 |  |  |  | 6d | 0d |  | Edmond; Ram; Vinay | 24h |  |  |

Notes:
- 1174: Text1: 3.5
- 1178: Text1: 1.1, 1.2, 1.3, 1.4, 1.7, 2.10, 3.1, 3.2, 3.3, 3.4, 3.5, 3.6, 3.7, 3.8, 3.9, 3.10, 3.11, 3.12, 3.13, 3.14, 3.15.2, 3.16, 5.2

| ID | WBS | Task | Type | Duration | Start | Finish | Predecessors | Total slack | Free slack | Constraint | Resources | Work | Text1 |
| --- | --- | --- | --- | --- | --- | --- | --- | --- | --- | --- | --- | --- | --- |
| 1183 | 1.2.7.3 | **Project Management (Iter-7)** |  | 21d | 2007-08-03 | 2007-08-31 |  | 1d |  |  |  | 528h |  |
| 1184 | 1.2.7.3.1 | Update Project Plan |  | 3d | 2007-08-03 | 2007-08-07 | 1182 | 50d |  |  | Edmond | 24h |  |
| 1185 | 1.2.7.3.2 | **Detailed Transition Phase Plan (Task 3.16)** |  | 20d | 2007-08-03 | 2007-08-30 |  | 33d |  |  |  | 400h | 3.16 |
| 1186 | 1.2.7.3.2.1 | Draft Final Transition Phase Plan (3.16) |  | 5d | 2007-08-03 | 2007-08-09 | 1182 | 33d | 0d |  | Edmond | 40h |  |
| 1187 | 1.2.7.3.2.2 | Review |  | 10d | 2007-08-10 | 2007-08-23 | 1186 | 33d | 0d |  | BAH; NCI; Mayo; WF | 320h |  |
| 1188 | 1.2.7.3.2.3 | Update |  | 5d | 2007-08-24 | 2007-08-30 | 1187 | 33d | 0d |  | Edmond | 40h |  |
| 1189 | 1.2.7.3.2.4 | Submit Final Version of Transition Phase Plan | milestone | 0d | 2007-08-30 | 2007-08-30 | 1188 | 33d |  |  | Edmond |  |  |
| 1190 | 1.2.7.3.3 | **CaAERS CCB (Task 2.10)** |  | 1d | 2007-08-06 | 2007-08-06 |  | 0d |  |  |  | 8h | 2.10 |
| 1191 | 1.2.7.3.3.1 | CCB Meetings |  | 1d | 2007-08-06 | 2007-08-06 |  | 0d |  | must start on 2007-08-06 | Edmond | 8h |  |
| 1192 | 1.2.7.3.4 | **Weekly Team Meeting** |  | 16d | 2007-08-06 | 2007-08-27 |  | 36d |  |  |  |  |  |
| 1193 | 1.2.7.3.4.1 | Weekly Team Meeting 1 |  | 1d | 2007-08-06 | 2007-08-06 |  | 51d |  | start no earlier than 2007-08-06 |  |  |  |
| 1194 | 1.2.7.3.4.2 | Weekly Team Meeting 2 |  | 1d | 2007-08-13 | 2007-08-13 |  | 46d |  | start no earlier than 2007-08-13 |  |  |  |
| 1195 | 1.2.7.3.4.3 | Weekly Team Meeting 3 |  | 1d | 2007-08-20 | 2007-08-20 |  | 41d |  | start no earlier than 2007-08-20 |  |  |  |
| 1196 | 1.2.7.3.4.4 | Weekly Team Meeting 4 |  | 1d | 2007-08-27 | 2007-08-27 |  | 36d |  | start no earlier than 2007-08-27 |  |  |  |
| 1197 | 1.2.7.3.5 | **Status and Risk Reporting** |  | 21d | 2007-08-03 | 2007-08-31 |  | 32d |  |  |  | 64h |  |
| 1198 | 1.2.7.3.5.1 | Bi-weekly Risk Update in caMP (Task 1.4) |  | 1d | 2007-08-03 | 2007-08-03 |  | 52d |  | start no earlier than 2007-08-03 | Edmond | 8h |  |
| 1199 | 1.2.7.3.5.2 | Bi-weekly Risk Matrix Update Meeting |  | 1d | 2007-08-03 | 2007-08-03 |  | 52d |  | start no earlier than 2007-08-03 | Edmond | 8h |  |
| 1200 | 1.2.7.3.5.3 | Bi-weekly Risk Update in caMP (Task 1.4) |  | 1d | 2007-08-17 | 2007-08-17 |  | 42d |  | start no earlier than 2007-08-17 | Edmond | 8h |  |
| 1201 | 1.2.7.3.5.4 | Bi-weekly Risk Matrix Update Meeting |  | 1d | 2007-08-17 | 2007-08-17 |  | 42d |  | start no earlier than 2007-08-17 | Edmond | 8h |  |
| 1202 | 1.2.7.3.5.5 | Bi-weekly Status Update Meeting with BAH/NCI |  | 1d | 2007-08-10 | 2007-08-10 |  | 47d |  | start no earlier than 2007-08-10 | Edmond | 8h |  |
| 1203 | 1.2.7.3.5.6 | Bi-weekly Status Update Meeting with BAH/NCI |  | 1d | 2007-08-24 | 2007-08-24 |  | 37d |  | start no earlier than 2007-08-24 | Edmond | 8h |  |
| 1204 | 1.2.7.3.5.7 | Monthly Status Report (Task 1.3) |  | 1d | 2007-08-31 | 2007-08-31 |  | 32d | 0d | start no earlier than 2007-08-31 | Edmond | 8h |  |
| 1205 | 1.2.7.3.5.8 | Monthly Risk Matrix Update (Task 1.3) |  | 1d | 2007-08-31 | 2007-08-31 | 1204SS | 32d |  |  | Edmond | 8h |  |
| 1206 | 1.2.7.3.6 | **Collaboration Management Activities** |  | 16d | 2007-08-09 | 2007-08-30 |  | 33d |  |  |  | 32h |  |
| 1207 | 1.2.7.3.6.1 | Adopters Mtg |  | 1d | 2007-08-09 | 2007-08-09 |  | 48d |  | start no earlier than 2007-08-09 | Edmond | 8h |  |
| 1208 | 1.2.7.3.6.2 | Bi-Weekly AE SIG Meeting |  | 1d | 2007-08-16 | 2007-08-16 |  | 43d |  | start no earlier than 2007-08-16 | Edmond | 8h |  |
| 1209 | 1.2.7.3.6.3 | Adopters Mtg |  | 1d | 2007-08-23 | 2007-08-23 |  | 38d |  | start no earlier than 2007-08-23 | Edmond | 8h |  |
| 1210 | 1.2.7.3.6.4 | Bi-Weekly AE SIG Meeting |  | 1d | 2007-08-30 | 2007-08-30 |  | 33d |  | start no earlier than 2007-08-30 | Edmond | 8h |  |

| ID | WBS | Task | Type | Duration | Start | Finish | Predecessors | Total slack | Free slack | Resources | Work |
| --- | --- | --- | --- | --- | --- | --- | --- | --- | --- | --- | --- |
| 1211 | 1.2.7.4 | **Environment (Iter-7)** |  | 3d | 2007-08-03 | 2007-08-07 |  | 50d |  |  | 24h |
| 1212 | 1.2.7.4.1 | Update Environment |  | 3d | 2007-08-03 | 2007-08-07 | 1182 | 50d |  | Vinay | 24h |
| 1213 | 1.2.7.5 | **SCM (Iter-7)** |  | 5d | 2007-08-03 | 2007-08-09 |  | 48d |  |  | 40h |
| 1214 | 1.2.7.5.1 | Manage Repository |  | 5d | 2007-08-03 | 2007-08-09 | 1182 | 48d |  | Rhett | 40h |
| 1215 | 1.2.7.6 | **Requirements (Iter-7)** |  | 8d | 2007-08-03 | 2007-08-14 |  | 35d |  |  | 64h |
| 1216 | 1.2.7.6.1 | Req'ts Gathering for Iteration |  | 3d | 2007-08-03 | 2007-08-07 | 1182 | 35d | 0d | Sean | 24h |
| 1217 | 1.2.7.6.2 | Update UC and SRS Documents |  | 5d | 2007-08-08 | 2007-08-14 | 1216 | 45d | 0d | Sean | 40h |
| 1218 | 1.2.7.6.3 | Submit Final Versions of UC and SRS documents (3.1, 3.2, 3.3) | milestone | 0d | 2007-08-14 | 2007-08-14 | 1217 | 45d |  | Edmond |  |
| 1219 | 1.2.7.7 | **Analysis and Design (Iter-7)** |  | 15d | 2007-08-08 | 2007-08-28 |  | 35d |  |  | 80h |
| 1220 | 1.2.7.7.1 | **Design Documents** |  | 15d | 2007-08-08 | 2007-08-28 |  | 35d |  |  | 80h |
| 1221 | 1.2.7.7.1.1 | Update Design Documents |  | 5d | 2007-08-08 | 2007-08-14 | 1216 | 35d | 0d |  |  |
| 1222 | 1.2.7.7.1.2 | Deliver Final Design document to BAH (Task 3.4) | milestone | 0d | 2007-08-14 | 2007-08-14 | 1221 | 45d |  | Edmond |  |
| 1223 | 1.2.7.7.1.3 | Deliver Final UML to BAH (Task 3.3) | milestone | 0d | 2007-08-14 | 2007-08-14 | 1221 | 35d | 0d | Edmond |  |
| 1224 | 1.2.7.7.1.4 | Formal Review by BAH |  | 10d | 2007-08-15 | 2007-08-28 | 1223 | 35d |  | BAH | 80h |
| 1225 | 1.2.7.8 | **Implementation (Iter-7)** |  | 20d? | 2007-08-03 | 2007-08-30 |  | 23d | 0d |  | 40h |
| 1226 | 1.2.7.8.1 | **Web interface** |  | 5d | 2007-08-03 | 2007-08-09 |  | 38d |  |  | 40h |
| 1227 | 1.2.7.8.1.1 | UI Refinement |  | 5d | 2007-08-03 | 2007-08-09 | 1182 | 38d |  | Richard | 40h |
| 1228 | 1.2.7.8.2 | **Bug Fixes** |  | 6d | 2007-08-03 | 2007-08-10 |  | 37d |  |  |  |
| 1229 | 1.2.7.8.2.1 | Review and assignment of Bugs from prior iteration |  | 1d | 2007-08-03 | 2007-08-03 | 1182 | 37d | 0d |  |  |
| 1230 | 1.2.7.8.2.2 | Bug Fixes |  | 5d | 2007-08-06 | 2007-08-10 | 1229 | 37d |  |  |  |
| 1231 | 1.2.7.8.3 | **Implement Use Cases** |  | 20d? | 2007-08-03 | 2007-08-30 | 1182 | 23d |  |  |  |
| 1232 | 1.2.7.8.3.1 | Data Push to AdEERS (cont'd) |  | 15d | 2007-08-03 | 2007-08-23 |  | 28d |  |  |  |
| 1233 | 1.2.7.8.3.2 | System Admin (cont'd) |  | 15d | 2007-08-03 | 2007-08-23 |  | 28d |  |  |  |
| 1234 | 1.2.7.8.3.3 | New Version of Study |  | 15d | 2007-08-03 | 2007-08-23 |  | 28d |  |  |  |
| 1235 | 1.2.7.8.3.4 | Validations |  | 1d? | 2007-08-03 | 2007-08-03 |  | 42d |  |  |  |
| 1236 | 1.2.7.8.3.5 | Error Messages |  | 1d? | 2007-08-03 | 2007-08-03 |  | 42d |  |  |  |
| 1237 | 1.2.7.8.3.6 | System Admin (cont'd) |  | 20d | 2007-08-03 | 2007-08-30 |  | 23d |  |  |  |

| ID | WBS | Task | Type | Duration | Start | Finish | Predecessors | Baseline start | Baseline finish | Baseline duration | Total slack | Free slack | Constraint | Resources | Work | Text1 |
| --- | --- | --- | --- | --- | --- | --- | --- | --- | --- | --- | --- | --- | --- | --- | --- | --- |
| 1238 | 1.2.7.9 | **Testing (Iter-7)** |  | 30d | 2007-08-03 | 2007-09-13 |  |  |  |  | 23d |  |  |  | 1096h |  |
| 1239 | 1.2.7.9.1 | **Test Plan** |  | 12d | 2007-08-03 | 2007-08-20 |  |  |  |  | 41d |  |  |  | 96h |  |
| 1240 | 1.2.7.9.1.1 | Update Test Plan Document (Task 3.6) |  | 2d | 2007-08-03 | 2007-08-06 | 1182 |  |  |  | 41d | 0d |  | Ram | 16h |  |
| 1241 | 1.2.7.9.1.2 | Submit to BAH | milestone | 0d | 2007-08-06 | 2007-08-06 | 1240 |  |  |  | 41d | 0d |  | Edmond |  | 3.6 |
| 1242 | 1.2.7.9.1.3 | Formal Review by BAH |  | 10d | 2007-08-07 | 2007-08-20 | 1241 |  |  |  | 41d |  |  | BAH | 80h |  |
| 1243 | 1.2.7.9.2 | **RTM** |  | 5d | 2007-08-03 | 2007-08-09 |  |  |  |  | 48d |  |  |  | 40h |  |
| 1244 | 1.2.7.9.2.1 | Update RTM |  | 5d | 2007-08-03 | 2007-08-09 | 1182 |  |  |  | 48d |  |  | Sean | 40h |  |
| 1245 | 1.2.7.9.3 | **Test Data** |  | 20d | 2007-08-08 | 2007-09-04 |  |  |  |  | 30d |  |  |  | 400h |  |
| 1246 | 1.2.7.9.3.1 | Update test data set (Task 3.7) |  | 10d | 2007-08-08 | 2007-08-21 | 1166 |  |  |  | 30d | 0d |  | Renee; David | 160h |  |
| 1247 | 1.2.7.9.3.2 | Submit for Review | milestone | 0d | 2007-08-21 | 2007-08-21 | 1246 |  |  |  | 30d | 0d |  | Edmond |  |  |
| 1248 | 1.2.7.9.3.3 | Review |  | 10d | 2007-08-22 | 2007-09-04 | 1247 |  |  |  | 30d |  |  | BAH; Mayo; WF | 240h |  |
| 1249 | 1.2.7.9.4 | **Run Tests** |  | 30d | 2007-08-03 | 2007-09-13 |  |  |  |  | 23d |  |  |  | 560h |  |
| 1250 | 1.2.7.9.4.1 | Testing |  | 20d | 2007-08-03 | 2007-08-30 | 1182 |  |  |  | 23d | 0d |  | Renee; David; Natasha | 480h |  |
| 1251 | 1.2.7.9.4.2 | Submit Final Test Results Report (Task 3.8) | milestone | 0d | 2007-08-30 | 2007-08-30 | 1250 |  |  |  | 23d | 0d |  | Edmond |  | 3.8 |
| 1252 | 1.2.7.9.4.3 | Formal Review of Test results Report |  | 10d | 2007-08-31 | 2007-09-13 | 1251 |  |  |  | 23d |  |  | BAH | 80h |  |
| 1253 | 1.2.7.10 | **BRIDG Review (Final)** |  | 5d | 2007-08-01 | 2007-08-07 |  |  |  |  | 50d |  |  |  | 40h |  |
| 1254 | 1.2.7.10.1 | Harmonization with BRIDG Model (Review) |  | 5d | 2007-08-01 | 2007-08-07 | 1179 |  |  |  | 50d |  |  | Sean | 40h |  |
| 1255 | 1.2.7.11 | **Silver Review (Final)** |  | 0d | 2007-08-27 | 2007-08-27 |  |  |  |  | 37d |  |  |  |  |  |
| 1256 | 1.2.7.11.1 | Complete Semantically annotated XMI file (Task 3.11.1) | milestone | 0d | 2007-08-27 | 2007-08-27 |  |  |  |  | 37d |  | start no earlier than 2007-08-27 |  |  | 3.11.1 |
| 1257 | 1.2.7.11.2 | Full CDE Use Report (Task 3.11.2) | milestone | 0d | 2007-08-27 | 2007-08-27 |  |  |  |  | 37d |  | start no earlier than 2007-08-27 |  |  | 3.11.2 |
| 1258 | 1.2.7.11.3 | Compatibility Review Submission Packaged (Task 3.12) | milestone | 0d | 2007-08-27 | 2007-08-27 |  |  |  |  | 37d |  | start no earlier than 2007-08-27 |  |  | 3.12 |
| 1259 | 1.2.7.12 | **Documentation (Iter-7)** |  | 21d | 2007-08-03 | 2007-08-31 |  |  |  |  | 0d |  |  |  |  |  |
| 1260 | 1.2.7.12.1 | Update End Users Guide |  | 15d | 2007-08-08 | 2007-08-28 | 1151 |  |  |  | 3d |  |  |  |  |  |
| 1261 | 1.2.7.12.2 | Submit Final End Users Guide (Task 3.15.2) | milestone | 0d | 2007-08-31 | 2007-08-31 | 1260 | 2007-09-03 | 2007-09-07 | 5d | 0d |  | must finish on 2007-08-31 |  |  |  |
| 1262 | 1.2.7.12.3 | Update Final Versions of Other Project Documents |  | 15d | 2007-08-03 | 2007-08-23 | 1182 |  |  |  | 6d |  |  |  |  |  |
| 1263 | 1.2.7.12.4 | Submit Final Administrators Guide (Task 3.13) | milestone | 0d | 2007-08-31 | 2007-08-31 | 1262 | 2007-09-03 | 2007-09-07 | 5d | 0d |  | must finish on 2007-08-31 |  |  |  |
| 1264 | 1.2.7.12.5 | Submit Final Installation Guide (Task 3.10) | milestone | 0d | 2007-08-31 | 2007-08-31 | 1262 | 2007-09-03 | 2007-09-07 | 5d | 0d |  | must finish on 2007-08-31 |  |  |  |
| 1265 | 1.2.7.12.6 | Submit Final Release Notes (Task 3.14) | milestone | 0d | 2007-08-31 | 2007-08-31 | 1262 | 2007-09-03 | 2007-09-07 | 5d | 0d |  | must finish on 2007-08-31 |  |  |  |

| ID | WBS | Task | Type | Duration | Start | Finish | Predecessors | Baseline start | Baseline finish | Baseline duration | Total slack | Free slack | Constraint | Resources | Work | Text1 |
| --- | --- | --- | --- | --- | --- | --- | --- | --- | --- | --- | --- | --- | --- | --- | --- | --- |
| 1266 | 1.2.7.13 | **Deployment (Iter-7)** |  | 10d | 2007-08-30 | 2007-09-13 |  |  |  |  | 23d |  |  |  | 104h |  |
| 1267 | 1.2.7.13.1 | Submit Final Code Base (Task 3.5) | milestone | 0d | 2007-08-30 | 2007-08-30 | 1225 |  |  |  | 23d | 0d |  | Ram |  | 3.5 |
| 1268 | 1.2.7.13.2 | Formal Review of Code by BAH |  | 10d | 2007-08-31 | 2007-09-13 | 1267 |  |  |  | 23d |  |  | BAH | 80h |  |
| 1269 | 1.2.7.13.3 | Deploy Prototype for Iteration 1 at Mayo and WF |  | 1d | 2007-08-31 | 2007-08-31 | 1267 |  |  |  | 32d |  |  | Vinay; Mayo; WF | 24h |  |
| 1270 | 1.2.7.14 | Finish Iteration 7 | milestone | 0d | 2007-08-31 | 2007-08-31 |  | 2007-09-07 | 2007-09-07 | 0d | 0d |  | must finish on 2007-08-31 |  |  |  |
| 1271 | 1.2.8 | Finish Construction Phase | milestone | 0d | 2007-08-31 | 2007-08-31 | 1270 | 2007-09-12 | 2007-09-12 | 0d | 0d |  |  |  |  |  |
| 1272 | 1.3 | **Transition Phase** |  | 32d | 2007-09-03 | 2007-10-16 | 1271 | 2007-09-13 | 2007-09-26 | 10d | 0d |  |  |  |  | 4.1, 4.2, 4.3 |
| 1273 | 1.3.1 | Deployment Plan (Task 4.1) |  | 2d | 2007-09-03 | 2007-09-04 |  | 2007-09-13 | 2007-09-14 | 2d | 0d |  |  |  |  |  |
| 1274 | 1.3.2 | Deployment |  | 10d | 2007-09-05 | 2007-09-18 | 1273 | 2007-09-17 | 2007-09-21 | 5d | 0d |  |  |  |  |  |
| 1275 | 1.3.3 | Deployment Report (Task 4.2) |  | 1d | 2007-09-03 | 2007-09-03 |  | 2007-09-13 | 2007-09-13 | 1d | 31d |  |  |  |  |  |
| 1276 | 1.3.4 | Code Release Updates (if needed) (Task 4.3) |  | 20d | 2007-09-19 | 2007-10-16 | 1274 | 2007-09-13 | 2007-09-26 | 10d | 0d |  |  |  |  |  |
| 1277 | 1.3.5 | Guide Updates (if needed) |  | 10d | 2007-09-03 | 2007-09-14 |  | 2007-09-13 | 2007-09-26 | 10d | 22d |  |  |  |  |  |
| 1278 | 1.3.6 | **Project Closing Activities** |  | 10d | 2007-09-03 | 2007-09-14 |  | 2007-09-13 | 2007-09-26 | 10d | 22d |  |  |  |  |  |
| 1279 | 1.3.6.1 | Lessons Learned (Task 1.6) |  | 10d | 2007-09-03 | 2007-09-14 |  | 2007-09-13 | 2007-09-26 | 10d | 22d |  |  |  |  |  |
| 1280 | 1.3.6.2 | Archiving |  | 10d | 2007-09-03 | 2007-09-14 |  | 2007-09-13 | 2007-09-26 | 10d | 22d |  |  |  |  |  |
| 1281 | 1.3.6.3 | Contract Closeout |  | 10d | 2007-09-03 | 2007-09-14 |  | 2007-09-13 | 2007-09-26 | 10d | 22d |  |  |  |  |  |
